# 初稿0.0.1

How a schedule from MS Project changed from version to version. A marks actual dates.

## Version 1 (saved 2018-09-30)

Note of the change: add

| ID | Task | Duration | Start | Finish |
| --- | --- | --- | --- | --- |
| 1 | 项目准备 | 9d | 2018-09-19 | 2018-10-01 |
| 2 | 小组第一周例会 | 1d | 2018-09-18 | 2018-09-18 |
| 3 | 人员召集 | 1d | 2018-09-18 | 2018-09-18 |
| 4 | 项目准备会议 | 1d | 2018-09-18 | 2018-09-18 |
| 5 | 课题选定 | 1d | 2018-09-18 | 2018-09-18 |
| 6 | 资源申请与完善 | 1d | 2018-09-18 | 2018-09-18 |
| 7 | 软硬件环境落实 | 1d | 2018-09-18 | 2018-09-18 |
| 8 | 项目起订 | 1d | 2018-09-18 | 2018-09-18 |
| 9 | 小组第二周例会 | 1d | 2018-09-29 | 2018-09-29 |
| 10 | 软件需求工程项目计划 | 7d | 2018-09-21 | 2018-09-30 |
| 11 | 项目可行性报告 | 7d | 2018-09-28 A | 2018-10-07 |
| 12 | 小组第四周例会 | 1d | 2018-10-09 | 2018-10-09 |
| 13 | UML概述翻转PPT | 7d | 2018-10-05 | 2018-10-14 |
| 14 | 项目章程 | 7d | 2018-10-05 | 2018-10-14 |
| 15 | 项目总体性计划 | 7d | 2018-10-05 | 2018-10-14 |
| 16 | 软件工程计划-初步 | 7d | 2018-10-05 | 2018-10-14 |
| 17 | 小组第五周例会 | 7d | 2018-10-08 | 2018-10-16 |
| 18 | Rational Rose反转课堂 | 7d | 2018-10-12 | 2018-10-21 |
| 19 | QA计划 | 7d | 2018-10-12 | 2018-10-21 |
| 20 | 小组第六周例会 | 1d | 2018-10-23 | 2018-10-23 |
| 21 | 软件工程计划修改以及评审 | 6d | 2018-10-21 | 2018-10-26 |
| 22 | 软件工程需求规格说明书 | 7d | 2018-10-17 | 2018-10-25 |
| 23 | UML基础I 翻转课堂 | 7d | 2018-10-19 | 2018-10-28 |
| 24 | 软件需求规格说明书修改及评审 | 7d | 2018-10-25 | 2018-11-02 |
| 25 | 小组第七周例会 | 1d | 2018-10-30 | 2018-10-30 |
| 26 | UML II翻转课堂 | 7d | 2018-10-26 | 2018-11-04 |
| 27 | 小组第八周例会 | 1d | 2018-11-06 | 2018-11-06 |
| 28 | 小组第九周例会 | 1d | 2018-11-13 | 2018-11-13 |
| 29 | 小组第十周例会 | 1d | 2018-11-20 | 2018-11-20 |
| 30 | 小组第十一周例会 | 1d | 2018-11-27 | 2018-11-27 |
| 31 | SRS需求规格说明 | 7d | 2018-11-23 | 2018-12-02 |
| 32 | 小组第十二周例会 | 1d | 2018-12-04 | 2018-12-04 |
| 33 | UML 基础III翻转课堂 | 7d | 2018-11-30 | 2018-12-09 |
| 34 | 软件需求变更文档 | 7d | 2018-11-30 | 2018-12-09 |
| 35 | 小组第十三周例会 | 1d | 2018-12-11 | 2018-12-11 |
| 36 | UML基础IIII 翻转课堂 | 7d | 2018-12-07 | 2018-12-16 |
| 37 | 软件需求变更文档修改和评审 | 7d | 2018-12-07 | 2018-12-16 |
| 38 | 小组第十四周例会 | 1d | 2018-12-18 | 2018-12-18 |
| 39 | 软件需求变更文档 | 7d | 2018-12-14 | 2018-12-23 |
| 40 | 系统设计与实现计划 | 7d | 2018-12-14 | 2018-12-23 |
| 41 | 小组第十五周例会 | 1d | 2018-12-25 | 2018-12-25 |
| 42 | 文档改进 | 7d | 2018-12-21 | 2018-12-30 |
| 43 | 小组第十六周例会 | 1d | 2019-01-08 | 2019-01-08 |
| 44 | 软件概要说明设计 | 7d | 2018-12-28 | 2019-01-06 |
| 45 | 测试计划 | 7d | 2018-12-28 | 2019-01-06 |
| 46 | 安装部署计划 | 7d | 2018-12-28 | 2019-01-06 |
| 47 | 培训计划 | 7d | 2018-12-28 | 2019-01-06 |
| 48 | 系统维护计划 | 7d | 2018-12-28 | 2019-01-06 |
| 49 | 小组第十七周例会 | 1d | 2019-01-08 | 2019-01-08 |
| 50 | 项目总结报告 | 7d | 2019-01-04 | 2019-01-13 |

## Version 2 (saved 2018-10-10)

Last finish stays 2019-01-13.

Removed: 2 小组第一周例会

Changed:

| ID | Task | Start | Finish | Duration | Other |
| --- | --- | --- | --- | --- | --- |
| 8 | 小组第一次例会 |  |  |  | was named 小组第二周例会 |
| 10 | 项目可行性报告 | 2018-09-28 A → 2018-10-07 A (+9d) | 2018-10-07 → 2018-10-15 (+8d) |  |  |
| 11 | 小组第二次例会 |  |  |  | was named 小组第四周例会 |
| 12 | UML概述翻转PPT | 2018-10-05 → 2018-10-09 (+4d) | 2018-10-14 → 2018-10-15 (+1d) | 7d → 5d |  |
| 16 | 小组第三次例会 | 2018-10-08 → 2018-10-16 (+8d) |  | 7d → 1d | was named 小组第五周例会 |
| 19 | 小组第四次例会 |  |  |  | was named 小组第六周例会 |
| 24 | 小组第五次例会 |  |  |  | was named 小组第七周例会 |
| 26 | 小组第六次例会 |  |  |  | was named 小组第八周例会 |
| 27 | 小组第七次例会 |  |  |  | was named 小组第九周例会 |
| 28 | 小组第八次例会 |  |  |  | was named 小组第十周例会 |

## Version 3 (saved 2018-10-20)

Last finish 2019-01-13 → 2019-01-11 (-2d).

Added:

| ID | Task | Duration | Start | Finish | Predecessors | Resources |
| --- | --- | --- | --- | --- | --- | --- |
| 9 | 寻找模板 | 1h | 2018-09-24 | 2018-09-24 |  | 骆佳俊 |
| 10 | **计划攥写-初步** | 3d | 2018-09-28 | 2018-09-30 | 7 | 骆佳俊 [20%]; 沈启航 [20%]; 徐哲远 [20%]; 杨以恒 [20%]; 叶柏成 [20%] |
| 11 | 人力资源管理计划&采购管理计划 | 1h | 2018-09-28 | 2018-09-28 |  | 沈启航 |
| 12 | 项目概述&风险管理计划 | 1h | 2018-09-28 | 2018-09-28 |  | 杨以恒 |
| 13 | 引言&沟通管理手册 | 1h | 2018-09-28 | 2018-09-28 |  | 叶柏成 |
| 14 | 实施计划&配置管理系统 | 1h | 2018-09-28 | 2018-09-28 |  | 骆佳俊 |
| 15 | 支持条件&成本管理计划 | 1h | 2018-09-28 | 2018-09-28 |  | 徐哲远 |
| 16 | **计划更新修改** | 0.25d | 2018-09-28 | 2018-09-28 |  | 骆佳俊 [20%]; 沈启航 [20%]; 徐哲远 [20%]; 杨以恒 [20%]; 叶柏成 [20%] |
| 17 | 人力资源管理计划&采购管理计划 | 2h | 2018-09-28 | 2018-09-28 |  | 沈启航 |
| 18 | 项目概述&风险管理计划 | 2h | 2018-09-28 | 2018-09-28 |  | 杨以恒 |
| 19 | 引言&沟通管理手册 | 2h | 2018-09-28 | 2018-09-28 |  | 叶柏成 |
| 20 | 实施计划&配置管理系统 | 2h | 2018-09-28 | 2018-09-28 |  | 骆佳俊 |
| 21 | 支持条件&成本管理计划 | 2h | 2018-09-28 | 2018-09-28 |  | 徐哲远 |
| 23 | 收集资料 | 1h | 2018-10-10 | 2018-10-10 |  | 骆佳俊; 沈启航; 徐哲远; 杨以恒; 叶柏成 |
| 24 | 市场调研 | 2h | 2018-10-11 | 2018-10-11 |  | 沈启航 |
| 25 | **撰写可行性报告** | 7d | 2018-10-01 | 2018-10-07 | 23 | 骆佳俊; 沈启航; 徐哲远; 杨以恒; 叶柏成 |
| 26 | 引言 | 1h | 2018-10-01 | 2018-10-01 |  | 骆佳俊 |
| 27 | 可行性研究的前提 | 1h | 2018-10-01 | 2018-10-01 |  | 沈启航 |
| 28 | 技术可行性 | 1h | 2018-10-01 | 2018-10-01 |  | 徐哲远 |
| 29 | 法律可行性 | 1h | 2018-10-01 | 2018-10-01 |  | 杨以恒 |
| 30 | 用户操作可行性 | 1h | 2018-10-01 | 2018-10-01 |  | 叶柏成 |
| 31 | 项目干系人 | 1h | 2018-10-01 | 2018-10-01 |  | 徐哲远 |
| 32 | 项目风险 | 1h | 2018-10-01 | 2018-10-01 |  | 骆佳俊 |
| 33 | **补充完善可行性计划** | 8d | 2018-10-07 | 2018-10-14 | 25 | 骆佳俊; 沈启航; 徐哲远; 杨以恒; 叶柏成 |
| 34 | 引言 | 1d | 2018-10-10 | 2018-10-10 |  | 骆佳俊 |
| 35 | 可行性研究的前提 | 1d | 2018-10-10 | 2018-10-10 |  | 沈启航 |
| 36 | 技术可行性 | 1d | 2018-10-10 | 2018-10-10 |  | 徐哲远 |
| 37 | 法律可行性 | 1d | 2018-10-10 | 2018-10-10 |  | 杨以恒 |
| 38 | 用户操作可行性 | 1d | 2018-10-10 | 2018-10-10 |  | 叶柏成 |
| 39 | 项目干系人 | 1d | 2018-10-10 | 2018-10-10 |  | 徐哲远 |
| 40 | 项目风险 | 1d | 2018-10-10 | 2018-10-10 |  | 骆佳俊 |
| 43 | 收集资料 | 4d | 2018-10-09 | 2018-10-12 |  | 骆佳俊; 沈启航; 徐哲远; 杨以恒; 叶柏成 |
| 44 | **PPT的制作** | 4d | 2018-10-10 | 2018-10-13 |  | 骆佳俊; 沈启航; 徐哲远; 杨以恒; 叶柏成 |
| 45 | UML概念 | 4d | 2018-10-10 | 2018-10-13 |  | 徐哲远 |
| 46 | UML诞生历史、特点 | 4d | 2018-10-10 | 2018-10-13 |  | 杨以恒 |
| 47 | UML结构、及PPT整理 | 4d | 2018-10-10 | 2018-10-13 |  | 沈启航 |
| 48 | UML视图 | 4d | 2018-10-10 | 2018-10-13 |  | 叶柏成 |
| 49 | UML图 | 4d | 2018-10-10 | 2018-10-13 |  | 骆佳俊 |
| 50 | **PPT的更新** | 3d | 2018-10-17 | 2018-10-19 |  |  |
| 51 | 修改视图、增加类图 | 3d | 2018-10-17 | 2018-10-19 |  | 骆佳俊 |
| 52 | 修改文本 | 3d | 2018-10-17 | 2018-10-19 |  | 沈启航 |
| 55 | 收集资料 | 2d | 2018-10-17 | 2018-10-18 |  | 徐哲远 |
| 56 | 项目章程的撰写 | 4d | 2018-10-18 | 2018-10-21 |  | 徐哲远 |
| 58 | 收集资料 | 2d | 2018-10-17 | 2018-10-18 |  | 骆佳俊; 沈启航; 徐哲远; 杨以恒; 叶柏成 |
| 59 | **项目总体性计划的攥写** | 5d | 2018-10-17 | 2018-10-21 |  | 骆佳俊; 沈启航; 徐哲远; 杨以恒; 叶柏成 |
| 60 | 引言 | 1d | 2018-10-20 | 2018-10-20 |  | 杨以恒 |
| 61 | 项目概述 | 1d | 2018-10-20 | 2018-10-20 |  | 骆佳俊 |
| 62 | 实施计划 | 1d | 2018-10-20 | 2018-10-20 |  | 沈启航 |
| 63 | 支持条件 | 1d | 2018-10-20 | 2018-10-20 |  | 徐哲远 |
| 64 | 专辑要点计划 | 1d | 2018-10-20 | 2018-10-20 |  | 叶柏成 |
| 66 | 收集资料 | 2d | 2018-10-17 | 2018-10-18 |  | 骆佳俊; 沈启航; 徐哲远; 杨以恒; 叶柏成 |
| 67 | 攥写计划 | 3d | 2018-10-19 | 2018-10-21 |  | 骆佳俊; 沈启航; 徐哲远; 杨以恒; 叶柏成 |
| 69 | 收集资料、约定模板字体 | 1d | 2018-10-17 | 2018-10-17 |  | 杨以恒 |
| 70 | **制作PPT** | 2d | 2018-10-19 | 2018-10-21 |  | 骆佳俊; 沈启航; 徐哲远; 杨以恒; 叶柏成 |
| 71 | 任务1 | 3d | 2018-10-19 | 2018-10-21 |  | 骆佳俊 |
| 72 | 任务2 | 3d | 2018-10-19 | 2018-10-21 |  | 沈启航 |
| 73 | 任务3 | 3d | 2018-10-19 | 2018-10-21 |  | 徐哲远 |
| 74 | 任务4 | 3d | 2018-10-19 | 2018-10-21 |  | 杨以恒 |
| 75 | 任务5 | 3d | 2018-10-19 | 2018-10-21 |  | 叶柏成 |
| 76 | **修改更新PPT** | 2d | 2018-10-25 | 2018-10-26 |  |  |
| 77 | 任务1 | 1d? | 2018-10-25 | 2018-10-26 |  |  |
| 78 | 任务2 | 1d? | 2018-10-25 | 2018-10-26 |  |  |
| 80 | 收集资料 | 1d? | 2018-10-24 | 2018-10-24 |  |  |
| 81 | 攥写计划 | 1d? | 2018-10-24 | 2018-10-24 |  |  |
| 84 | 修改 | 1d? | 2018-11-01 | 2018-11-01 |  |  |
| 86 | 收集资料 | 1d? | 2018-11-28 | 2018-11-28 |  |  |
| 89 | 修改 | 1d? | 2018-12-06 | 2018-12-06 |  |  |
| 103 | 小组第十二次例会 | 1d | 2018-12-18 | 2018-12-18 |  |  |
| 106 | 收集资料 | 1d | 2018-12-27 | 2018-12-27 |  |  |
| 107 | 小组第十三次例会 | 1d | 2018-12-25 | 2018-12-25 |  |  |
| 111 | 收集资料 | 1d? | 2018-12-31 | 2018-12-31 |  |  |
| 113 | 收集资料 | 1d? | 2019-01-04 | 2019-01-04 |  |  |
| 115 | 收集资料 | 1d? | 2019-01-04 | 2019-01-04 |  |  |
| 117 | 收集资料 | 1d? | 2019-01-04 | 2019-01-04 |  |  |
| 119 | 收集资料 | 1d? | 2019-01-04 | 2019-01-04 |  |  |

Removed: 3 项目准备会议; 42 小组第十六周例会; 48 小组第十七周例会

Changed:

| ID | Task | Start | Finish | Duration | Total float | Predecessors | Other |
| --- | --- | --- | --- | --- | --- | --- | --- |
| 1 | **项目准备** | 2018-09-19 → 2018-09-18 (-1d) | 2018-10-01 → 2018-10-07 (+6d) | 9d → 20d | none → 0d |  |  |
| 2 | 人员召集 |  |  | 1d → 1h |  |  | resources none → 骆佳俊; 沈启航; 徐哲远; 杨以恒; 叶柏成 |
| 3 | 课题选定 | 2018-09-18 → 2018-09-23 (+5d) | 2018-09-18 → 2018-09-23 (+5d) | 1d → 1h |  |  | resources none → 沈启航 |
| 4 | 资源申请与完善 |  |  | 1d → 2h |  |  | resources none → 叶柏成 |
| 5 | 软硬件环境落实 | 2018-09-18 → 2018-09-23 (+5d) | 2018-09-18 → 2018-10-07 (+19d) | 1d → 15d |  |  | resources none → 叶柏成 |
| 6 | 项目起订 | 2018-09-18 → 2018-09-23 (+5d) | 2018-09-18 → 2018-09-23 (+5d) | 1d → 1h |  |  | resources none → 沈启航 |
| 7 | 小组第一次例会 | 2018-09-29 → 2018-09-28 (-1d) | 2018-09-29 → 2018-09-28 (-1d) | 1d → 1h |  |  | resources none → 骆佳俊; 沈启航; 徐哲远; 杨以恒; 叶柏成 |
| 8 | **软件项目工程计划** | 2018-09-21 → 2018-09-24 (+3d) |  |  |  | none → 1 | was named 软件需求工程项目计划 |
| 22 | **项目可行性报告** | 2018-10-07 A → 2018-10-01 (-6d) | 2018-10-15 → 2018-10-14 (-1d) | 7d → 14d | none → 0d |  | resources none → 骆佳俊 [20%]; 沈启航 [20%]; 徐哲远 [20%]; 杨以恒 [20%]; 叶柏成 [20%] |
| 41 | 小组第二次会议 |  |  |  |  | none → 7 | was named 小组第二次例会; resources none → 骆佳俊; 沈启航; 徐哲远; 杨以恒; 叶柏成 |
| 42 | **UML概述翻转PPT** |  | 2018-10-15 → 2018-10-19 (+4d) | 5d → 11d | none → 0d |  | resources none → 骆佳俊 [10%]; 沈启航 [60%]; 徐哲远 [10%]; 杨以恒 [10%]; 叶柏成 [10%] |
| 53 | 小组第三次会议 |  |  |  |  | none → 41 | was named 小组第三次例会; resources none → 骆佳俊; 沈启航; 徐哲远; 杨以恒; 叶柏成 |
| 54 | **项目章程** | 2018-10-05 → 2018-10-17 (+12d) | 2018-10-14 → 2018-10-21 (+7d) | 7d → 5d |  | none → 22 | resources none → 徐哲远 |
| 57 | **项目总体性计划** | 2018-10-05 → 2018-10-17 (+12d) | 2018-10-14 → 2018-10-21 (+7d) | 7d → 5d |  | none → 22 | resources none → 骆佳俊 [20%]; 沈启航 [20%]; 徐哲远 [20%]; 杨以恒 [20%]; 叶柏成 [20%] |
| 65 | **需求工程计划-初步** | 2018-10-05 → 2018-10-17 (+12d) | 2018-10-14 → 2018-10-21 (+7d) | 7d → 5d |  | none → 22 | was named 软件工程计划-初步; resources none → 骆佳俊 [20%]; 沈启航 [20%]; 徐哲远 [20%]; 杨以恒 [20%]; 叶柏成 [20%] |
| 68 | **Rational Software Architect翻转课堂** | 2018-10-12 → 2018-10-17 (+5d) | 2018-10-21 → 2018-10-26 (+5d) | 7d → 10d | none → 0d | none → 42 | was named Rational Rose反转课堂; resources none → 骆佳俊 [20%]; 沈启航 [20%]; 徐哲远 [20%]; 杨以恒 [20%]; 叶柏成 [20%] |
| 79 | **QA计划** | 2018-10-12 → 2018-10-24 (+12d) | 2018-10-21 → 2018-10-28 (+7d) | 7d → 5d |  | none → 54, 57, 65 |  |
| 82 | 小组第四次会议 |  |  |  |  |  | was named 小组第四次例会 |
| 83 | **软件工程计划修改以及评审** | 2018-10-21 → 2018-11-01 (+11d) | 2018-10-26 → 2018-11-04 (+9d) | 6d → 4d |  | none → 79 |  |
| 85 | **软件工程需求规格说明书** | 2018-10-17 → 2018-11-28 (+42d) | 2018-10-25 → 2018-12-02 (+38d) | 7d → 5d |  | none → 83 |  |
| 87 | UML基础I 翻转课堂 | 2018-10-19 → 2018-10-22 (+3d) | 2018-10-28 → 2018-10-26 (-2d) | 7d → 5d |  | none → 68 |  |
| 88 | **软件需求规格说明书修改及评审** | 2018-10-25 → 2018-12-06 (+42d) | 2018-11-02 → 2018-12-09 (+37d) | 7d → 4d |  | none → 85 |  |
| 91 | UML II翻转课堂：界面原型 | 2018-10-26 → 2018-10-27 (+1d) | 2018-11-04 → 2018-11-02 (-2d) |  |  | none → 87 | was named UML II翻转课堂 |
| 95 | 小组第九次例会 |  |  |  |  |  | was named 小组第十一周例会 |
| 96 | SRS需求规格说明 |  | 2018-12-02 → 2018-11-29 (-3d) |  |  |  |  |
| 97 | 小组第十次例会 |  |  |  |  |  | was named 小组第十二周例会 |
| 98 | UML 基础III翻转课堂 | 2018-11-30 → 2018-11-03 (-27d) | 2018-12-09 → 2018-11-07 (-32d) | 7d → 5d |  | none → 91 |  |
| 99 | 软件需求变更文档 |  | 2018-12-09 → 2018-12-06 (-3d) |  |  |  |  |
| 100 | 小组第十一次例会 |  |  |  |  |  | was named 小组第十三周例会 |
| 101 | UML基础IIII 翻转课堂 | 2018-12-07 → 2018-11-08 (-29d) | 2018-12-16 → 2018-11-14 (-32d) |  |  | none → 98 |  |
| 102 | 软件需求变更文档修改和评审 |  | 2018-12-16 → 2018-12-13 (-3d) |  |  |  |  |
| 104 | 软件需求变更文档 |  | 2018-12-23 → 2018-12-20 (-3d) |  |  |  |  |
| 105 | **系统设计与实现计划** | 2018-12-14 → 2018-12-27 (+13d) | 2018-12-23 → 2018-12-30 (+7d) | 7d → 4d |  | none → 88 |  |
| 108 | 文档改进 |  | 2018-12-30 → 2018-12-27 (-3d) |  |  |  |  |
| 109 | 小组第十四周例会 | 2018-12-18 → 2019-01-08 (+21d) | 2018-12-18 → 2019-01-08 (+21d) |  |  |  |  |
| 110 | **软件概要说明设计** | 2018-12-28 → 2018-12-31 (+3d) | 2019-01-06 → 2019-01-03 (-3d) | 7d → 4d |  | none → 105 |  |
| 112 | **测试计划** | 2018-12-28 → 2019-01-04 (+7d) | 2019-01-06 → 2019-01-07 (+1d) | 7d → 4d |  | none → 110 |  |
| 114 | **安装部署计划** | 2018-12-28 → 2019-01-04 (+7d) | 2019-01-06 → 2019-01-07 (+1d) | 7d → 4d |  | none → 110 |  |
| 116 | **培训计划** | 2018-12-28 → 2019-01-04 (+7d) | 2019-01-06 → 2019-01-07 (+1d) | 7d → 4d |  | none → 110 |  |
| 118 | **系统维护计划** | 2018-12-28 → 2019-01-04 (+7d) | 2019-01-06 → 2019-01-07 (+1d) | 7d → 4d |  | none → 110 |  |
| 120 | 小组第十五周例会 | 2018-12-25 → 2019-01-08 (+14d) | 2018-12-25 → 2019-01-08 (+14d) |  |  |  |  |
| 121 | 项目总结报告 | 2019-01-04 → 2019-01-08 (+4d) | 2019-01-13 → 2019-01-11 (-2d) | 7d → 4d |  | none → 112, 114, 116, 118 |  |

## Version 4 (saved 2018-10-30)

Note of the change: update 甘特图 2018-10-30

Last finish 2019-01-11 → 2019-01-10 (-1d).

Added:

| ID | Task | Duration | Start | Finish | Predecessors | Resources |
| --- | --- | --- | --- | --- | --- | --- |
| 1 | **软件工程系列课程教学辅助网站系统-项目** | 177d | 2018-09-17 | 2019-01-10 |  |  |
| 5 | 小组成员组成 | 0d | 2018-09-19 | 2018-09-19 | 4 | 沈启航 |
| 6 | 资料申请与完善 | 2d | 2018-09-20 | 2018-09-21 |  | 骆佳俊; 沈启航; 徐哲远; 杨以恒; 叶柏成 |
| 8 | **项目计划** | 169d | 2018-09-22 | 2019-01-06 |  |  |
| 10 | **需求获取** | 34.5d | 2018-09-25 | 2018-10-21 |  |  |
| 15 | 举办需求访谈 | 0.5h | 2018-09-25 | 2018-09-25 | 7 | 骆佳俊; 沈启航; 徐哲远; 杨以恒; 叶柏成 |
| 50 | 汇总文档 | 0d? | 2018-09-22 | 2018-09-22 |  |  |
| 51 | 概要设计 | 0d? | 2018-09-22 | 2018-09-22 |  |  |
| 52 | 详细设计 | 0d? | 2018-09-22 | 2018-09-22 |  |  |
| 53 | 项目执行 | 0d? | 2018-09-17 | 2018-09-17 |  |  |
| 61 | 第四次正式会议 | 1h | 2018-10-23 | 2018-10-23 |  | 骆佳俊; 沈启航; 徐哲远; 杨以恒; 叶柏成 |

Removed: 7 小组第一次例会; 9 寻找模板; 10 计划攥写-初步; 16 计划更新修改; 17 人力资源管理计划&采购管理计划; 18 项目概述&风险管理计划; 19 引言&沟通管理手册; 20 实施计划&配置管理系统; 21 支持条件&成本管理计划; 22 项目可行性报告; 24 市场调研; 26 引言; 27 可行性研究的前提; 28 技术可行性; 29 法律可行性; 30 用户操作可行性; 31 项目干系人; 32 项目风险; 33 补充完善可行性计划; 34 引言; 35 可行性研究的前提; 36 技术可行性; 37 法律可行性; 38 用户操作可行性; 39 项目干系人; 40 项目风险; 44 PPT的制作; 45 UML概念; 46 UML诞生历史、特点; 47 UML结构、及PPT整理; 48 UML视图; 49 UML图; 50 PPT的更新; 51 修改视图、增加类图; 52 修改文本; 54 项目章程; 57 项目总体性计划; 60 引言; 61 项目概述; 62 实施计划; 63 支持条件; 64 专辑要点计划; 69 收集资料、约定模板字体; 71 任务1; 72 任务2; 73 任务3; 74 任务4; 75 任务5; 76 修改更新PPT; 77 任务1; 78 任务2; 84 修改; 85 软件工程需求规格说明书; 86 收集资料; 89 修改; 93 小组第七次例会; 98 UML 基础III翻转课堂; 105 系统设计与实现计划; 106 收集资料; 110 软件概要说明设计; 111 收集资料; 112 测试计划; 113 收集资料; 115 收集资料; 117 收集资料; 119 收集资料

Changed:

| ID | Task | Start | Finish | Duration | Total float | Predecessors | Other |
| --- | --- | --- | --- | --- | --- | --- | --- |
| 2 | **项目启动** | 2018-09-18 → 2018-09-17 (-1d) | 2018-10-07 → 2018-09-22 (-15d) | 20d → 6h | 0d → none |  | was named 项目准备 |
| 3 | 人员召集 | 2018-09-18 → 2018-09-17 (-1d) |  | 1h → 2d |  |  | resources 骆佳俊; 沈启航; 徐哲远; 杨以恒; 叶柏成 → 骆佳俊; 徐哲远; 杨以恒; 叶柏成 |
| 4 | 课题选定 | 2018-09-23 → 2018-09-19 (-4d) | 2018-09-23 → 2018-09-19 (-4d) | 1h → 1d |  |  | resources 沈启航 → 骆佳俊; 沈启航; 徐哲远; 杨以恒; 叶柏成 |
| 7 | 项目起订 | 2018-09-23 → 2018-09-22 (-1d) | 2018-09-23 → 2018-09-22 (-1d) | 1h → 1d |  |  | resources 沈启航 → 骆佳俊; 沈启航; 徐哲远; 杨以恒; 叶柏成 |
| 9 | **需求过程** | 2018-10-17 → 2018-09-22 (-25d) | 2018-10-21 → 2018-11-09 (+19d) | 5d → 65d |  | 项目可行性报告 → none | was named 需求工程计划-初步; resources 骆佳俊 [20%]; 沈启航 [20%]; 徐哲远 [20%]; 杨以恒 [20%]; 叶柏成 [20%] → none |
| 11 | 定义产品愿景和项目范围 | 2019-01-04 → 2018-09-25 (-101d) | 2019-01-07 → 2018-09-25 (-104d) | 4d → 1h |  | 软件概要说明设计 → 7 | was named 安装部署计划; resources none → 骆佳俊; 沈启航; 徐哲远; 杨以恒; 叶柏成 |
| 12 | 识别用户类型及其特征 | 2019-01-04 → 2018-09-26 (-100d) | 2019-01-07 → 2018-09-26 (-103d) | 4d → 1h |  | 软件概要说明设计 → 11 | was named 培训计划; resources none → 骆佳俊; 沈启航; 徐哲远; 杨以恒; 叶柏成 |
| 13 | 为每类用户选出用户代表 | 2019-01-04 → 2018-09-27 (-99d) | 2019-01-07 → 2018-09-27 (-102d) | 4d → 1h |  | 软件概要说明设计 → 12 | was named 系统维护计划; resources none → 骆佳俊; 沈启航; 徐哲远; 杨以恒; 叶柏成 |
| 14 | 识别系统事件和反应 | 2019-01-08 → 2018-09-28 (-102d) | 2019-01-11 → 2018-09-28 (-105d) | 4d → 1h |  | 测试计划, 11, 12, 13 → 13 | was named 项目总结报告; resources none → 骆佳俊; 沈启航; 徐哲远; 杨以恒; 叶柏成 |
| 16 | 检查现有系统在需求方面的报告 | 2018-10-09 → 2018-09-25 (-14d) | 2018-10-09 → 2018-09-26 (-13d) | 1d → 1h |  | 小组第一次例会 → 15 | was named 小组第二次会议 |
| 17 | 重用现有需求 | 2018-10-16 → 2018-09-26 (-20d) | 2018-10-16 → 2018-09-27 (-19d) |  |  |  | was named 小组第三次会议 |
| 18 | 《需求项目工程计划》 | 2018-10-17 → 2018-09-25 (-22d) | 2018-10-18 → 2018-09-25 (-23d) | 2d → 0d |  | none → 6 | was named 收集资料 |
| 19 | 《愿景与范围》文档 | 2018-10-10 → 2018-10-21 (+11d) | 2018-10-10 → 2018-10-21 (+11d) | 1h → 0d |  | none → 15, 11, 12, 13, 14, 16, 17 | was named 收集资料 |
| 20 | **需求分析** | 2018-10-24 → 2018-10-01 (-23d) | 2018-10-28 → 2018-10-14 (-14d) | 5d → 10d? | none → 0d | 项目章程, 项目总体性计划, 9 → none | was named QA计划 |
| 21 | 分析需求可实现性 | 2018-10-30 → 2018-10-01 (-29d) | 2018-10-30 → 2018-10-13 (-17d) | 1d → 9h |  |  | was named 小组第五次例会; resources none → 骆佳俊; 沈启航; 徐哲远; 杨以恒; 叶柏成 |
| 22 | 《可行性分析报告》 | 2018-10-01 → 2018-10-14 (+13d) | 2018-10-07 → 2018-10-14 (+7d) | 7d → 0d |  | 19 → 21 | was named 撰写可行性报告 |
| 23 | 创建用户界面以及技术原型 | 2018-10-23 → 2018-10-01 (-22d) | 2018-10-23 → 2018-10-01 (-22d) | 1d → 0d? |  |  | was named 小组第四次会议 |
| 24 | 需求按优先级排序 | 2018-11-06 → 2018-10-01 (-36d) | 2018-11-06 → 2018-10-01 (-36d) | 1d → 0d? |  |  | was named 小组第六次例会 |
| 25 | 建立数据字典 | 2018-11-20 → 2018-10-01 (-50d) | 2018-11-20 → 2018-10-01 (-50d) | 1d → 0d? |  |  | was named 小组第八次例会 |
| 26 | 为需求建模 | 2018-11-27 → 2018-10-01 (-57d) | 2018-11-27 → 2018-10-01 (-57d) | 1d → 0d? |  |  | was named 小组第九次例会 |
| 27 | 分析系统与外部世界之间的联系 | 2018-12-04 → 2018-10-01 (-64d) | 2018-12-04 → 2018-10-01 (-64d) | 1d → 0d? |  |  | was named 小组第十次例会 |
| 28 | 《项目章程》 | 2018-10-18 → 2018-10-21 (+3d) |  | 4d → 0d |  | none → 22 | was named 项目章程的撰写; resources 徐哲远 → 杨以恒 |
| 29 | 《项目总体计划》 | 2018-10-17 → 2018-10-21 (+4d) | 2018-10-18 → 2018-10-21 (+3d) | 2d → 0d |  | none → 22 | was named 收集资料; resources 徐哲远 → 骆佳俊; 沈启航; 徐哲远; 杨以恒; 叶柏成 |
| 30 | **需求规范说明** | 2018-11-01 → 2018-09-22 (-40d) | 2018-11-04 → 2018-09-22 (-43d) | 4d → 0d? | none → 0d | 20 → none | was named 软件工程计划修改以及评审 |
| 31 | 使用需求文档模板 | 2018-12-11 → 2018-09-22 (-80d) | 2018-12-11 → 2018-09-22 (-80d) | 1d → 0d? |  |  | was named 小组第十一次例会 |
| 32 | 明确需求来源 | 2018-12-18 → 2018-09-22 (-87d) | 2018-12-18 → 2018-09-22 (-87d) | 1d → 0d? |  |  | was named 小组第十二次例会 |
| 33 | 记录业务规则 | 2018-12-25 → 2018-09-22 (-94d) | 2018-12-25 → 2018-09-22 (-94d) | 1d → 0d? |  |  | was named 小组第十三次例会 |
| 34 | 记录非功能需求 | 2019-01-08 → 2018-09-22 (-108d) | 2019-01-08 → 2018-09-22 (-108d) | 1d → 0d? |  |  | was named 小组第十四周例会 |
| 35 | **需求验证** | 2018-12-06 → 2018-09-22 (-75d) | 2018-12-09 → 2018-09-22 (-78d) | 4d → 0d? | none → 0d | 软件工程需求规格说明书 → none | was named 软件需求规格说明书修改及评审 |
| 36 | 需求评审 | 2019-01-08 → 2018-09-22 (-108d) | 2019-01-08 → 2018-09-22 (-108d) | 1d → 0d? |  |  | was named 小组第十五周例会 |
| 37 | 测试需求 | 2018-09-24 → 2018-09-22 (-2d) | 2018-09-30 → 2018-09-22 (-8d) | 7d → 0d? |  | 2 → none | was named 软件项目工程计划 |
| 38 | 定义验收标准 | 2018-10-09 → 2018-09-22 (-17d) | 2018-10-19 → 2018-09-22 (-27d) | 11d → 0d? | 0d → none |  | was named UML概述翻转PPT; resources 骆佳俊 [10%]; 沈启航 [60%]; 徐哲远 [10%]; 杨以恒 [10%]; 叶柏成 [10%] → none |
| 39 | 《质量保证计划》 | 2018-10-17 → 2018-09-25 (-22d) | 2018-10-21 → 2018-09-25 (-26d) | 5d → 0d |  | none → 35 | was named 项目总体性计划的攥写 |
| 40 | 《需求项目工程计划》修改及评审 | 2018-10-09 → 2018-09-22 (-17d) | 2018-10-12 → 2018-09-22 (-20d) | 4d → 1h |  |  | was named 收集资料; resources 骆佳俊; 沈启航; 徐哲远; 杨以恒; 叶柏成 → none |
| 41 | **需求管理** | 2018-11-30 → 2018-09-22 (-69d) | 2018-12-06 → 2018-09-22 (-75d) | 7d → 0d? | none → 0d |  | was named 软件需求变更文档 |
| 42 | 建立一个需求变更控制流程 | 2018-10-17 → 2018-09-22 (-25d) | 2018-10-26 → 2018-09-22 (-34d) | 10d → 0d? | 0d → none | 38 → none | was named Rational Software Architect翻转课堂; resources 骆佳俊 [20%]; 沈启航 [20%]; 徐哲远 [20%]; 杨以恒 [20%]; 叶柏成 [20%] → none |
| 43 | 对需求变更进行影响分析 | 2018-10-22 → 2018-09-22 (-30d) | 2018-10-26 → 2018-09-22 (-34d) | 5d → 0d? |  | 42 → none | was named UML基础I 翻转课堂 |
| 44 | 建立基线并控制需求集合版本 | 2018-10-27 → 2018-09-22 (-35d) | 2018-11-02 → 2018-09-22 (-41d) | 7d → 0d? |  | 43 → none | was named UML II翻转课堂：界面原型 |
| 45 | 维护需求变更的历史记录 | 2018-11-23 → 2018-09-22 (-62d) | 2018-11-29 → 2018-09-22 (-68d) | 7d → 0d? |  |  | was named SRS需求规格说明 |
| 46 | 跟踪每个需求的状态 | 2018-11-08 → 2018-09-22 (-47d) | 2018-11-14 → 2018-09-22 (-53d) | 7d → 0d? |  | UML 基础III翻转课堂 → none | was named UML基础IIII 翻转课堂 |
| 47 | 维护一个需求可跟踪矩阵 | 2018-12-14 → 2018-09-22 (-83d) | 2018-12-20 → 2018-09-22 (-89d) | 7d → 0d? |  |  | was named 软件需求变更文档 |
| 48 | 使用需求管理工具 | 2018-12-21 → 2018-09-22 (-90d) | 2018-12-27 → 2018-09-22 (-96d) | 7d → 0d? |  |  | was named 文档改进 |
| 49 | **需求阶段收尾** | 2018-12-07 → 2018-09-22 (-76d) | 2018-12-13 → 2018-09-22 (-82d) | 7d → 0d? | none → 0d |  | was named 软件需求变更文档修改和评审 |
| 54 | 项目监控 | 2018-09-18 → 2018-09-17 (-1d) | 2018-09-18 → 2018-09-17 (-1d) | 2h → 0d? |  |  | was named 资源申请与完善; resources 叶柏成 → none |
| 55 | 项目收尾 | 2018-09-23 → 2018-09-17 (-6d) | 2018-10-07 → 2018-09-17 (-20d) | 15d → 0d? |  |  | was named 软硬件环境落实; resources 叶柏成 → none |
| 56 | **小组会议** | 2018-10-17 → 2018-09-17 (-30d) | 2018-10-18 → 2019-01-10 (+84d) | 2d → 176d |  |  | was named 收集资料; resources 骆佳俊; 沈启航; 徐哲远; 杨以恒; 叶柏成 → none |
| 57 | 第一次正式会议 | 2018-10-19 → 2018-09-28 (-21d) | 2018-10-21 → 2018-09-28 (-23d) | 3d → 1h |  |  | was named 攥写计划 |
| 58 | 第二次正式会议 | 2018-10-24 → 2018-10-09 (-15d) | 2018-10-24 → 2018-10-09 (-15d) | 1d? → 1h |  |  | was named 收集资料; resources none → 骆佳俊; 沈启航; 徐哲远; 杨以恒; 叶柏成 |
| 59 | 第三次正式会议 | 2018-10-24 → 2018-10-16 (-8d) | 2018-10-24 → 2018-10-16 (-8d) | 1d? → 1h |  |  | was named 攥写计划; resources none → 骆佳俊; 沈启航; 徐哲远; 杨以恒; 叶柏成 |
| 60 | 访谈后临时会议 | 2018-09-28 → 2018-10-21 (+23d) | 2018-09-28 → 2018-10-21 (+23d) |  |  |  | was named 人力资源管理计划&采购管理计划; resources 沈启航 → 骆佳俊; 沈启航; 徐哲远; 杨以恒; 叶柏成 |
| 62 | 第五次正式会议 | 2018-10-19 → 2018-10-30 (+11d) | 2018-10-21 → 2018-10-30 (+9d) | 2d → 1h | 0d → none |  | was named 制作PPT |
| 63 | **课程作业（除项目文档外）** | 2018-09-28 → 2018-09-17 (-11d) | 2018-09-28 → 2019-01-10 (+104d) | 1h → 176d |  |  | was named 项目概述&风险管理计划; resources 杨以恒 → none |
| 64 | 翻转课堂UML概述PPT | 2018-09-28 → 2018-10-10 (+12d) | 2018-09-28 → 2018-10-14 (+16d) | 1h → 11d |  |  | was named 引言&沟通管理手册; resources 叶柏成 → 骆佳俊; 沈启航; 徐哲远; 杨以恒; 叶柏成 |
| 65 | 翻转课堂UML工具PPT | 2018-09-28 → 2018-10-17 (+19d) | 2018-09-28 → 2018-10-21 (+23d) | 1h → 11d |  |  | was named 实施计划&配置管理系统; resources 骆佳俊 → 骆佳俊; 沈启航; 徐哲远; 杨以恒; 叶柏成 |
| 66 | 翻转课堂UML的图PPT | 2018-09-28 → 2018-10-24 (+26d) | 2018-09-28 → 2018-10-28 (+30d) | 1h → 11d |  |  | was named 支持条件&成本管理计划; resources 徐哲远 → 骆佳俊; 沈启航; 徐哲远; 杨以恒; 叶柏成 |

## Version 5 (data date 2018-11-27, saved 2018-11-28)

Note of the change: Update PRD2018-G03-甘特图.mpp

Last finish 2019-01-10 → 2019-01-20 (+10d). Complete tasks 0 → 49.

Added:

| ID | Task | Duration | Start | Finish | Predecessors | Constraint | Resources |
| --- | --- | --- | --- | --- | --- | --- | --- |
| 5 | 《项目章程》起草 | 1h | 2018-10-20 19:00 A | 2018-10-20 20:00 A | 4 | finish no earlier than 2018-10-20 20:00 | 沈启航 [30%] |
| 7 | Project的学习 | 5h | 2018-10-01 20:00 A | 2018-10-05 21:00 A | 6 | start no earlier than 2018-10-01 19:00 | 骆佳俊 |
| 8 | Git的学习 | 1h | 2018-10-01 20:00 A | 2018-10-01 21:00 A | 6 | start no earlier than 2018-10-01 19:00 | 沈启航 |
| 11 | **UML学习** | 84d | 2018-10-09 20:00 A | 2018-11-03 18:00 A | 10 |  |  |
| 14 | 翻转课堂UML工具PPT制作 | 29h | 2018-10-17 19:00 A | 2018-10-21 20:00 A | 13 |  | 沈启航 [50%]; 骆佳俊 [50%]; 徐哲远 [50%]; 叶柏成 [50%]; 杨以恒 [50%] |
| 16 | 翻转课堂UML基础IPPT制作 | 15h | 2018-10-24 19:00 A | 2018-10-28 22:00 A | 15 | start no earlier than 2018-10-24 19:00 | 骆佳俊 [40%]; 沈启航 [40%]; 杨以恒 [40%]; 徐哲远 [40%]; 叶柏成 [40%] |
| 18 | 翻转课堂UML基础IIPPT制作 | 16h | 2018-10-31 20:00 A | 2018-11-03 18:00 A | 17 | start no earlier than 2018-10-31 19:00 | 沈启航; 骆佳俊; 徐哲远; 叶柏成; 杨以恒 |
| 21 | 软硬件环境落实 | 4d | 2018-10-06 17:00 A | 2018-10-07 19:00 A | 20 | finish no earlier than 2018-10-07 20:00 | 叶柏成 |
| 22 | 识别项目干系人 | 1h | 2018-09-19 20:00 A | 2018-09-19 21:00 A | 4 |  | 骆佳俊 |
| 23 | 找ISO&GB模板和PPT模板 | 3h | 2018-09-20 20:00 A | 2018-09-22 18:00 A | 22 |  | 骆佳俊; 杨以恒 |
| 25 | 《项目章程》修改v0.1.1 | 1.67h | 2018-10-21 17:00 A | 2018-10-21 18:40 A | 5 |  | 沈启航 [10%]; 杨以恒 [30%] |
| 26 | 《项目章程》修改v0.1.2 | 1h | 2018-10-21 18:40 A | 2018-10-21 19:40 A | 25 |  | 沈启航 [50%] |
| 27 | 《项目章程》发布 | 0h | 2018-10-21 19:40 A | 2018-10-21 19:40 A | 26 |  | 骆佳俊; 沈启航; 徐哲远; 杨以恒; 叶柏成 |
| 30 | 《需求工程项目计划》修订v0.1.1 | 4h | 2018-09-29 17:00 A | 2018-09-30 19:00 A | 29 |  | 叶柏成; 骆佳俊; 沈启航; 徐哲远; 杨以恒 |
| 31 | 《需求工程项目计划》修订v0.1.2 | 15h | 2018-10-17 19:00 A | 2018-10-19 20:00 A | 30 |  | 骆佳俊 [50%]; 沈启航 [50%]; 徐哲远 [50%]; 杨以恒 [50%]; 叶柏成 [50%] |
| 32 | 《需求工程项目计划》修订v0.1.3 | 7d | 2018-10-26 19:00 A | 2018-10-28 20:00 A | 31 |  | 骆佳俊 [40%]; 沈启航 [60%]; 徐哲远 [60%]; 杨以恒 [60%]; 叶柏成 [60%] |
| 33 | 《需求工程项目计划》修订v0.2.0 | 1h | 2018-10-30 19:00 A | 2018-10-30 20:00 A | 32 |  | 沈启航 [90%] |
| 34 | 《需求工程项目计划》修订v0.2.1 | 1h | 2018-11-04 19:00 A | 2018-11-04 20:00 A | 33 |  | 沈启航 |
| 35 | 起草《项目范围管理计划》 | 3h | 2018-11-10 19:00 A | 2018-11-10 22:00 A | 29 |  | 骆佳俊 |
| 38 | 起草《项目质量管理计划》 | 3h | 2018-11-10 19:00 A | 2018-11-10 22:00 A | 29 |  | 骆佳俊 |
| 39 | 起草《人力资源管理计划》 | 3h | 2018-11-10 19:00 A | 2018-11-10 22:00 A | 29 |  | 叶柏成 |
| 42 | 起草《采购管理子计划》 | 2h | 2018-11-10 19:00 A | 2018-11-10 21:00 A | 29 |  | 叶柏成 |
| 43 | 起草《配置管理子计划》 | 2h | 2018-11-10 19:00 A | 2018-11-10 21:00 A | 29 | start no earlier than 2018-11-10 19:00 | 叶柏成 |
| 44 | 《需求工程项目计划》修订v0.3.0 | 2h | 2018-11-11 19:00 A | 2018-11-11 21:00 A | 34, 35, 36, 37, 38, 39, 40, 41, 42, 43 |  | 叶柏成 |
| 45 | 《需求工程项目计划》修订v0.3.1 | 2h | 2018-11-12 19:00 A | 2018-11-12 21:00 A | 44 |  | 叶柏成; 沈启航; 骆佳俊 |
| 46 | 第七次正式会议 | 1d | 2018-11-13 19:00 A | 2018-11-13 20:00 A | 24 |  | 骆佳俊; 沈启航; 徐哲远; 杨以恒; 叶柏成 [50%] |
| 47 | 《需求工程项目计划》修订v0.3.2 | 1d | 2018-11-12 21:00 A | 2018-11-12 22:00 A | 45, 24 |  | 叶柏成 [50%] |
| 48 | 《需求工程项目计划》修订v0.3.3 | 1h | 2018-11-17 19:00 A | 2018-11-18 18:00 A | 47 |  | 叶柏成; 沈启航 |
| 49 | 《需求工程项目计划》修订v0.3.4 | 1d | 2018-11-18 18:00 A | 2018-11-18 19:00 A | 48 |  | 叶柏成; 沈启航; 骆佳俊 |
| 50 | 《需求工程项目计划》修订v0.3.5 | 1d | 2018-11-25 19:00 A | 2018-11-25 20:00 A | 49 |  | 沈启航; 叶柏成 |
| 51 | 《需求工程项目计划》修订v0.3.6 | 1d | 2018-11-25 20:00 A | 2018-11-25 21:00 A | 50 |  | 沈启航; 叶柏成; 骆佳俊 |
| 52 | 《质量保证计划》发布 | 0h | 2018-11-10 22:00 A | 2018-11-10 22:00 A | 38 |  | 叶柏成; 骆佳俊; 沈启航; 徐哲远; 杨以恒 |
| 53 | 《需求工程计划》v0.3.6 | 0h | 2018-11-25 21:00 A | 2018-11-25 21:00 A | 52, 27, 51 |  | 叶柏成; 骆佳俊; 沈启航; 徐哲远; 杨以恒 |
| 54 | 制作需求工程评审ppt | 3h | 2018-11-25 21:00 A | 2018-11-26 20:00 A | 53 |  | 徐哲远 |
| 57 | 第八次正式会议 | 1d | 2018-11-20 19:00 | 2018-11-20 20:00 | 46, 49 |  | 骆佳俊; 沈启航; 徐哲远; 杨以恒; 叶柏成 |
| 60 | 绘制上下文图 | 1d | 2018-11-23 19:00 | 2018-11-23 20:00 | 59 |  | 沈启航 |
| 62 | 用户访谈 | 1d | 2018-11-20 21:00 | 2018-11-20 22:00 | 59 |  | 骆佳俊; 沈启航; 徐哲远; 杨以恒; 叶柏成 |
| 63 | 第九次正式会议 | 1d | 2018-11-21 18:00 | 2018-11-21 19:00 | 57, 62 |  | 骆佳俊; 沈启航; 徐哲远; 杨以恒; 叶柏成 |
| 76 | 第十次正式会议 | 1d? | 2018-12-04 19:00 | 2018-12-04 20:00 | 63 |  | 骆佳俊; 沈启航; 徐哲远; 杨以恒; 叶柏成 |
| 78 | 第十一次正式会议 | 1d | 2018-12-11 19:00 | 2018-12-11 20:00 | 76 |  | 骆佳俊 [50%]; 徐哲远; 沈启航; 杨以恒; 叶柏成 |
| 81 | 第十二次正式会议 | 1h | 2018-12-18 19:00 | 2018-12-18 20:00 | 78 |  | 骆佳俊; 徐哲远; 沈启航; 杨以恒; 叶柏成 [50%] |
| 84 | 编写《需求规格说明书》 | 1h | 2018-12-22 17:00 | 2018-12-22 18:00 | 83 | start no earlier than 2018-12-12 12:00 | 徐哲远; 骆佳俊; 杨以恒; 叶柏成; 沈启航 |
| 89 | 《需求规格说明书》发布 | 0h | 2018-12-23 19:00 | 2018-12-23 19:00 | 88 |  |  |
| 90 | **项目管理** | 25d | 2018-12-24 20:00 | 2019-01-12 18:00 | 55 |  |  |
| 92 | 第十三次正式会议 | 1d | 2018-12-25 19:00 | 2018-12-25 20:00 | 81 |  | 沈启航; 徐哲远; 叶柏成 [50%]; 骆佳俊 |
| 100 | 第十四次正式会议 | 1d | 2019-01-01 19:00 | 2019-01-01 20:00 | 92 |  | 骆佳俊; 徐哲远; 沈启航; 杨以恒; 叶柏成 [50%] |
| 101 | 《需求规格说明书》评审 | 0h | 2019-01-12 18:00 | 2019-01-12 18:00 | 99 |  | 叶柏成 |
| 104 | 第十五次正式会议 | 1h | 2019-01-08 19:00 | 2019-01-08 20:00 | 100 |  | 沈启航; 徐哲远; 叶柏成; 杨以恒; 骆佳俊 |
| 105 | 《汇总文档》 | 0h | 2019-01-13 18:00 | 2019-01-13 18:00 | 103, 104 |  | 骆佳俊; 沈启航; 徐哲远; 杨以恒; 叶柏成 |
| 106 | 项目总评 | 1h | 2019-01-13 18:00 | 2019-01-13 19:00 | 103, 105 |  | 骆佳俊; 沈启航; 徐哲远; 叶柏成; 杨以恒 |
| 107 | 《项目总结报告》 | 7h | 2019-01-14 20:00 | 2019-01-19 19:00 | 106 | finish no earlier than 2019-01-19 20:00 | 杨以恒; 沈启航; 骆佳俊; 徐哲远; 叶柏成 |
| 108 | 《项目总结报告》评审修改 | 1d? | 2019-01-20 17:00 | 2019-01-20 18:00 | 107 |  | 杨以恒; 沈启航; 骆佳俊; 徐哲远; 叶柏成 |
| 109 | 散伙饭 | 1d? | 2019-01-20 17:00 | 2019-01-20 18:00 | 107 |  | 杨以恒; 沈启航; 骆佳俊; 徐哲远; 叶柏成 |

Removed: 9 需求过程; 22 《可行性分析报告》; 28 《项目章程》; 49 需求阶段收尾; 51 概要设计; 52 详细设计; 53 项目执行; 55 项目收尾; 60 访谈后临时会议; 63 课程作业（除项目文档外）

Changed:

| ID | Task | Start | Finish | Duration | Complete | Total float | Predecessors | Other |
| --- | --- | --- | --- | --- | --- | --- | --- | --- |
| 1 | **软件工程系列课程教学辅助网站系统-项目** | 2018-09-17 → 2018-09-17 19:00 A | 2019-01-10 → 2019-01-20 18:00 (+10d) | 177d → 305d? | 0% → 64% | none → 0d |  |  |
| 2 | **项目启动** | 2018-09-17 → 2018-09-17 19:00 A | 2018-09-22 → 2018-11-03 18:00 A (+42d) | 6h → 112d | 0% → 100% |  |  |  |
| 3 | 人员召集 | 2018-09-17 → 2018-09-17 19:00 A | 2018-09-18 → 2018-09-17 20:00 A (-1d) | 2d → 1h | 0% → 100% |  |  | resources 骆佳俊; 徐哲远; 杨以恒; 叶柏成 → 沈启航 |
| 4 | 课题选定 | 2018-09-19 → 2018-09-18 20:00 A (-1d) | 2018-09-19 → 2018-09-18 21:00 A (-1d) | 1d → 1h | 0% → 100% |  | none → 3 | constraint none → start no earlier than 2018-09-18 19:00; resources 骆佳俊; 沈启航; 徐哲远; 杨以恒; 叶柏成 → 沈启航; 骆佳俊; 徐哲远; 杨以恒; 叶柏成 |
| 6 | 第一次正式会议 | 2018-09-28 → 2018-09-28 19:00 A | 2018-09-28 → 2018-09-28 20:00 A |  | 0% → 100% |  | none → 4 | resources 骆佳俊; 沈启航; 徐哲远; 杨以恒; 叶柏成 → 骆佳俊; 沈启航 [50%]; 徐哲远; 杨以恒; 叶柏成 |
| 9 | AxureRP学习 | 2018-10-10 → 2018-10-01 20:00 A (-9d) | 2018-10-14 → 2018-10-07 19:00 A (-7d) | 11d → 9h | 0% → 100% |  | none → 6 | was named 翻转课堂UML概述PPT; constraint none → finish no earlier than 2018-10-07 20:00; resources 骆佳俊; 沈启航; 徐哲远; 杨以恒; 叶柏成 → 杨以恒; 徐哲远 |
| 10 | 第二次正式会议 | 2018-10-09 → 2018-10-08 20:00 A (-1d) | 2018-10-09 → 2018-10-08 21:00 A (-1d) |  | 0% → 100% |  | none → 6, 7, 8, 9, 21, 23 |  |
| 12 | 翻转课堂UML概述PPT制作 | 2018-09-19 → 2018-10-09 20:00 A (+20d) | 2018-09-19 → 2018-10-17 16:00 A (+28d) | 0d → 11h | 0% → 100% |  | 4 → 10 | was named 小组成员组成; resources 沈启航 → 骆佳俊; 沈启航; 徐哲远; 杨以恒; 叶柏成 |
| 13 | 第三次正式会议 | 2018-10-16 → 2018-10-17 16:00 A (+1d) | 2018-10-16 → 2018-10-17 17:00 A (+1d) |  | 0% → 100% |  | none → 12, 10 |  |
| 15 | 第四次正式会议 | 2018-10-23 → 2018-10-23 19:00 A | 2018-10-23 → 2018-10-23 20:00 A |  | 0% → 100% |  | none → 13, 14 |  |
| 17 | 第五次正式会议 | 2018-10-30 → 2018-10-30 19:00 A | 2018-10-30 → 2018-10-30 20:00 A |  | 0% → 100% |  | none → 15, 16 | resources 骆佳俊; 沈启航; 徐哲远; 杨以恒; 叶柏成 → 骆佳俊; 沈启航 [10%]; 徐哲远; 杨以恒; 叶柏成 |
| 19 | **项目计划** | 2018-09-22 → 2018-09-17 20:00 A (-5d) | 2019-01-06 → 2018-11-26 20:00 A (-41d) | 169d → 204d | 0% → 100% |  |  |  |
| 20 | 资料申请与完善 | 2018-09-20 → 2018-09-17 20:00 A (-3d) | 2018-09-21 → 2018-09-17 21:00 A (-4d) | 2d → 1h | 0% → 100% |  | none → 3 | resources 骆佳俊; 沈启航; 徐哲远; 杨以恒; 叶柏成 → 骆佳俊 |
| 24 | 第六次正式会议 | 2018-10-17 → 2018-11-05 19:00 A (+19d) | 2018-10-21 → 2018-11-05 20:00 A (+15d) | 11d → 1h | 0% → 100% |  | none → 17 | was named 翻转课堂UML工具PPT |
| 28 | **制定需求工程项目计划** | 2018-10-21 → 2018-09-28 20:00 A (-23d) | 2018-10-21 → 2018-11-25 21:00 A (+35d) | 0d → 188d | 0% → 100% |  | 《可行性分析报告》 → 5 | was named 《项目总体计划》; resources 骆佳俊; 沈启航; 徐哲远; 杨以恒; 叶柏成 → none |
| 29 | 《需求工程项目计划》起草 | 2018-10-24 → 2018-09-28 20:00 A (-26d) | 2018-10-28 → 2018-09-28 21:00 A (-30d) | 11d → 1h | 0% → 100% |  | none → 6 | was named 翻转课堂UML的图PPT; constraint none → start no earlier than 2018-09-28 19:00; resources 骆佳俊; 沈启航; 徐哲远; 杨以恒; 叶柏成 → 沈启航 [50%] |
| 36 | 起草《项目进度管理计划》 | 2018-09-25 → 2018-11-10 19:00 A (+46d) | 2018-09-25 → 2018-11-10 22:00 A (+46d) | 0d → 3h | 0% → 100% |  | 20 → 29 | was named 《需求项目工程计划》; resources 骆佳俊; 沈启航; 徐哲远; 杨以恒; 叶柏成 → 骆佳俊 |
| 37 | 起草《项目成本管理计划》 | 2018-09-25 → 2018-11-10 19:00 A (+46d) | 2018-09-25 → 2018-11-10 22:00 A (+46d) | 0d → 3h | 0% → 100% |  | 85 → 29 | was named 《质量保证计划》; resources 骆佳俊; 沈启航; 徐哲远; 杨以恒; 叶柏成 → 骆佳俊 |
| 40 | 起草《沟通管理子计划》 | 2018-09-22 → 2018-11-10 19:00 A (+49d) | 2018-09-22 → 2018-11-10 22:00 A (+49d) | 1h → 2h | 0% → 100% |  | none → 29 | was named 《需求项目工程计划》修改及评审; resources none → 叶柏成 |
| 41 | 起草《风险管理子计划》 | 2018-09-17 → 2018-11-10 19:00 A (+54d) | 2019-01-10 → 2018-11-10 22:00 A (-61d) | 176d → 3h | 0% → 100% |  | none → 29 | was named 小组会议; resources none → 叶柏成 |
| 55 | **项目开发** | 2018-09-17 → 2018-11-20 19:00 A (+64d) | 2018-09-17 → 2018-12-23 19:00 (+97d) | 0d? → 90d? |  | none → 1d | none → 2, 19, 54 | was named 项目监控 |
| 56 | **需求获取** | 2018-09-25 → 2018-11-20 19:00 A (+56d) | 2018-10-21 → 2018-11-27 22:00 (+37d) | 34.5d → 31d |  | 0d → 1d | none → 53 |  |
| 58 | 定义产品愿景和项目范围 | 2018-09-25 → 2018-11-20 19:00 (+56d) | 2018-09-25 → 2018-11-20 20:00 (+56d) |  |  |  | 102 → 57, 49 | constraint none → start no earlier than 2018-11-20 19:00; resources 骆佳俊; 沈启航; 徐哲远; 杨以恒; 叶柏成 → 沈启航 |
| 59 | 《愿景与范围》文档 | 2018-10-21 → 2018-11-20 20:00 (+30d) | 2018-10-21 → 2018-11-20 21:00 (+30d) | 0d → 1h |  |  | 66, 58, 61, 64, 65, 67, 68 → 58 | constraint none → start no earlier than 2018-11-23 19:00; resources 骆佳俊; 沈启航; 徐哲远; 杨以恒; 叶柏成 → 沈启航 |
| 61 | 识别用户类型及其特征 | 2018-09-26 → 2018-11-26 20:00 (+61d) | 2018-09-26 → 2018-11-26 21:00 (+61d) |  |  | none → 0d | 58 → 60 | resources 骆佳俊; 沈启航; 徐哲远; 杨以恒; 叶柏成 → 徐哲远 |
| 64 | 为每类用户选出用户代表 | 2018-09-27 → 2018-11-26 21:00 (+60d) | 2018-09-27 → 2018-11-26 22:00 (+60d) |  |  | none → 0d |  | resources 骆佳俊; 沈启航; 徐哲远; 杨以恒; 叶柏成 → 杨以恒 |
| 65 | 识别系统事件和反应 | 2018-09-28 → 2018-11-27 18:00 (+60d) | 2018-09-28 → 2018-11-27 19:00 (+60d) |  |  | none → 0d |  | resources 骆佳俊; 沈启航; 徐哲远; 杨以恒; 叶柏成 → 叶柏成 |
| 66 | 举办需求访谈 | 2018-09-25 → 2018-11-27 19:00 (+63d) | 2018-09-25 → 2018-11-27 20:00 (+63d) | 0.5h → 1h |  | none → 0d | 102 → 65 | resources 骆佳俊; 沈启航; 徐哲远; 杨以恒; 叶柏成 → 骆佳俊 |
| 67 | 检查现有系统在需求方面的报告 | 2018-09-25 → 2018-11-27 20:00 A (+63d) | 2018-09-26 → 2018-11-27 21:00 (+62d) |  |  | none → 1d |  | resources 骆佳俊; 沈启航; 徐哲远; 杨以恒; 叶柏成 → 徐哲远 |
| 68 | 重用现有需求 | 2018-09-26 → 2018-11-27 21:00 (+62d) | 2018-09-27 → 2018-11-27 22:00 (+61d) | 1d → 1h |  | none → 1d |  | resources 骆佳俊; 沈启航; 徐哲远; 杨以恒; 叶柏成 → 叶柏成 |
| 69 | **需求分析** | 2018-10-01 → 2018-11-28 18:00 (+58d) | 2018-10-14 → 2018-12-09 19:00 (+56d) | 10d? → 41d? |  | 0d → 1d | none → 56 |  |
| 70 | 分析需求可实现性 | 2018-10-01 → 2018-11-28 18:00 (+58d) | 2018-10-13 → 2018-11-28 19:00 (+46d) | 9h → 1h |  | none → 1d | none → 68, 53 | resources 骆佳俊; 沈启航; 徐哲远; 杨以恒; 叶柏成 → 骆佳俊 |
| 71 | 创建用户界面以及技术原型 | 2018-10-01 → 2018-11-28 19:00 (+58d) | 2018-10-01 → 2018-12-09 19:00 (+69d) | 0d? → 40h |  | none → 1d | none → 70 | constraint none → finish no earlier than 2018-11-28 20:00; resources none → 杨以恒 [50%]; 徐哲远 [50%]; 沈启航 [50%] |
| 72 | 需求按优先级排序 | 2018-10-01 → 2018-11-28 19:00 (+58d) | 2018-10-01 → 2018-11-28 20:00 (+58d) | 0d? → 1h |  | none → 46d | none → 70 | resources none → 叶柏成 |
| 73 | 建立数据字典 | 2018-10-01 → 2018-11-28 20:00 (+58d) | 2018-10-01 → 2018-11-28 21:00 (+58d) | 0d? → 1h |  | none → 46d | none → 72 | resources none → 骆佳俊 |
| 74 | 为需求建模 | 2018-10-01 → 2018-11-28 21:00 (+58d) | 2018-10-01 → 2018-11-28 22:00 (+58d) | 0d? → 1h |  | none → 46d | none → 73 | resources none → 徐哲远 |
| 75 | 分析系统与外部世界之间的联系 | 2018-10-01 → 2018-11-29 18:00 (+59d) | 2018-10-01 → 2018-11-29 19:00 (+59d) | 0d? → 1h |  | none → 46d | none → 74 | resources none → 骆佳俊 |
| 77 | **需求规范说明** | 2018-09-22 → 2018-12-11 19:00 (+80d) | 2018-09-22 → 2018-12-22 18:00 (+91d) | 0d? → 14d |  |  | none → 69 |  |
| 79 | 使用需求文档模板 | 2018-09-22 → 2018-12-17 20:00 (+86d) | 2018-09-22 → 2018-12-17 21:00 (+86d) | 0d? → 1h |  | none → 1d | none → 75, 53 | constraint none → start no earlier than 2018-12-16 19:00; resources none → 骆佳俊 |
| 80 | 明确需求来源 | 2018-09-22 → 2018-12-18 20:00 (+87d) | 2018-09-22 → 2018-12-19 21:00 (+88d) | 0d? → 2h |  | none → 1d | none → 79 | resources none → 叶柏成 [50%] |
| 82 | 记录业务规则 | 2018-09-22 → 2018-12-20 20:00 (+89d) | 2018-09-22 → 2018-12-20 21:00 (+89d) | 0d? → 1h |  | none → 1d | none → 80 | resources none → 叶柏成 |
| 83 | 记录非功能需求 | 2018-09-22 → 2018-12-21 20:00 (+90d) | 2018-09-22 → 2018-12-21 21:00 (+90d) | 0d? → 1h |  | none → 1d | none → 82 | resources none → 徐哲远 |
| 85 | **需求验证** | 2018-09-22 → 2018-12-22 18:00 (+91d) | 2018-09-22 → 2018-12-23 19:00 (+92d) | 0d? → 3d |  | 0d → 1d | none → 77 |  |
| 86 | 需求评审 | 2018-09-22 → 2018-12-22 18:00 (+91d) | 2018-09-22 → 2018-12-22 19:00 (+91d) | 0d? → 1h |  | none → 1d | none → 84, 53 | resources none → 杨以恒 |
| 87 | 测试需求 | 2018-09-22 → 2018-12-23 17:00 (+92d) | 2018-09-22 → 2018-12-23 18:00 (+92d) | 0d? → 1h |  | none → 1d | none → 86 | resources none → 杨以恒 |
| 88 | 定义验收标准 | 2018-09-22 → 2018-12-23 18:00 (+92d) | 2018-09-22 → 2018-12-23 19:00 (+92d) | 0d? → 1h |  | none → 1d | none → 87 | resources none → 叶柏成 |
| 91 | **需求管理** | 2018-09-22 → 2018-12-24 20:00 (+93d) | 2018-09-22 → 2019-01-12 18:00 (+112d) | 0d? → 25d |  |  | none → 89 |  |
| 93 | 建立一个需求变更控制流程 | 2018-09-22 → 2018-12-24 20:00 (+93d) | 2018-09-22 → 2018-12-24 21:00 (+93d) | 0d? → 1h |  | none → 13d | none → 89 | resources none → 徐哲远 |
| 94 | 对需求变更进行影响分析 | 2018-09-22 → 2018-12-25 20:00 (+94d) | 2018-09-22 → 2018-12-25 21:00 (+94d) | 0d? → 1h |  | none → 13d | none → 93 | resources none → 杨以恒 |
| 95 | 建立基线并控制需求集合版本 | 2018-09-22 → 2018-12-26 20:00 (+95d) | 2018-09-22 → 2018-12-26 21:00 (+95d) | 0d? → 1h |  | none → 13d | none → 94 | resources none → 叶柏成 |
| 96 | 维护需求变更的历史记录 | 2018-09-22 → 2018-12-27 20:00 (+96d) | 2018-09-22 → 2018-12-27 21:00 (+96d) | 0d? → 1h |  | none → 13d | none → 95 | resources none → 杨以恒 |
| 97 | 跟踪每个需求的状态 | 2018-09-22 → 2018-12-28 20:00 (+97d) | 2018-09-22 → 2018-12-28 21:00 (+97d) | 0d? → 1h |  | none → 13d | none → 96 | resources none → 徐哲远 |
| 98 | 维护一个需求可跟踪矩阵 | 2018-09-22 → 2018-12-29 17:00 (+98d) | 2018-09-22 → 2018-12-29 18:00 (+98d) | 0d? → 1h |  | none → 13d | none → 97 | resources none → 杨以恒 |
| 99 | 使用需求管理工具 | 2018-09-22 → 2018-12-29 18:00 (+98d) | 2018-09-22 → 2019-01-01 21:00 (+101d) | 0d? → 6h |  | none → 13d | none → 98 | resources none → 杨以恒; 骆佳俊; 徐哲远; 沈启航; 叶柏成 |
| 102 | **项目阶段收尾** | 2018-09-22 → 2019-01-08 19:00 (+108d) | 2018-09-22 → 2019-01-20 18:00 (+120d) | 1d → 16d? |  | none → 0d | none → 101, 90 | was named 项目起订; resources 骆佳俊; 沈启航; 徐哲远; 杨以恒; 叶柏成 → none |
| 103 | 汇总文档 | 2018-09-22 → 2019-01-12 18:00 (+112d) | 2018-09-22 → 2019-01-13 18:00 (+113d) | 0d? → 2h |  | none → 0d | none → 101 | resources none → 徐哲远 |

## Version 6 (data date 2019-01-13, saved 2019-01-13)

Note of the change: Update PRD2018-G03-甘特图.mpp

Last finish 2019-01-20 → 2019-01-31 (+11d). Complete tasks 49 → 140.

Added:

| ID | Task | Duration | Start | Finish | Predecessors | Constraint | Resources |
| --- | --- | --- | --- | --- | --- | --- | --- |
| 5 | 《可行性分析》起草 | 1d | 2018-10-02 10:00 A | 2018-10-02 11:00 A |  | start no earlier than 2018-10-01 19:00 | 沈启航 |
| 7 | **工具学习** | 84d | 2018-10-01 19:00 | 2018-10-31 21:00 | 4 |  |  |
| 16 | 启动会议 | 1d | 2018-11-02 16:00 A | 2018-11-02 17:00 A | 6, 15 |  | 骆佳俊; 沈启航; 徐哲远; 杨以恒; 叶柏成 |
| 22 | **可行性分析修订** | 217d | 2018-10-07 19:00 A | 2018-12-06 20:00 A | 5 |  |  |
| 23 | 《可行性报告》v0.1.0 | 1h | 2018-10-07 19:00 A | 2018-10-07 20:00 A | 4 |  | 沈启航 |
| 24 | 《可行性报告》v0.1.1 | 1h | 2018-10-14 19:00 A | 2018-10-14 20:00 A | 23 |  | 沈启航 |
| 25 | 《可行性报告》v0.1.2 | 2h | 2018-11-07 19:00 A | 2018-11-08 20:00 | 24 |  | 沈启航 |
| 26 | 《可行性报告》v0.1.3 | 1d | 2018-11-10 19:00 A | 2018-11-10 20:00 A | 25 |  | 徐哲远 |
| 27 | 《可行性报告》v0.1.4 | 1d | 2018-11-28 19:00 A | 2018-11-28 20:00 A | 26 |  | 叶柏成 |
| 28 | 《可行性报告》v0.1.5 | 1d | 2018-12-06 19:00 A | 2018-12-06 20:00 A | 27 |  | 沈启航 |
| 29 | 《可行性分析》发布 | 0h | 2018-12-06 19:00 A | 2018-12-06 19:00 A | 28 |  | 沈启航; 骆佳俊; 徐哲远; 杨以恒; 叶柏成 |
| 30 | **项目章程修订** | 2.67d | 2018-10-21 17:00 A | 2018-10-21 19:40 A | 6 |  |  |
| 57 | 《需求工程项目计划》修订v0.3.7 | 1h | 2018-11-28 19:00 A | 2018-11-28 20:00 A | 56 |  | 叶柏成 |
| 58 | 《需求工程项目计划》修订v0.3.8 | 1d | 2018-12-02 19:00 A | 2018-12-02 20:00 A | 57 |  | 叶柏成 |
| 59 | 《需求工程项目计划》修订v0.3.9 | 1h | 2018-12-06 19:00 A | 2018-12-06 20:00 A | 58 |  | 沈启航; 叶柏成 |
| 60 | 《需求工程项目计划》修订v0.3.10 | 1h | 2018-12-06 20:00 A | 2018-12-06 21:00 A | 59 |  | 沈启航 |
| 64 | **需求开发** | 268d | 2018-10-01 19:00 A | 2019-01-09 20:30 |  |  |  |
| 68 | 《愿景与范围》文档V0.1.0 | 1h | 2018-10-01 19:00 A | 2018-10-01 20:00 A | 66 |  | 沈启航 |
| 69 | 《愿景与范围》文档V0.1.1 | 1h | 2018-11-12 19:00 A | 2018-11-14 20:00 | 68 |  | 沈启航 |
| 70 | 《愿景与范围》文档V0.1.2 | 1h | 2018-11-23 19:00 A | 2018-11-24 20:00 A | 69 |  | 沈启航 |
| 71 | **《愿景与范围》文档V0.1.3** | 9h | 2018-11-30 19:00 | 2018-12-02 20:00 | 70 |  |  |
| 72 | 绘制特性图 | 1h | 2018-11-20 20:00 A | 2018-11-20 21:00 A | 66 |  | 沈启航 |
| 73 | 《愿景与范围》文档V0.1.4 | 1h | 2018-12-05 19:00 A | 2018-12-05 20:00 A | 71 |  | 沈启航 |
| 74 | **《愿景与范围》文档V1.0.0** | 1h | 2018-12-22 19:00 A | 2018-12-22 20:00 A | 73 |  |  |
| 77 | **为每类用户选出用户代表** | 77d | 2018-11-22 19:00 A | 2018-12-22 19:00 A | 76 |  |  |
| 79 | 《用户群分类》V0.1.0 | 1d | 2018-11-25 19:00 A | 2018-11-25 20:00 A | 76 |  | 叶柏成 |
| 80 | 《用户群分类》V0.1.1 | 1d | 2018-12-19 19:00 A | 2018-12-19 20:00 A | 79 |  | 叶柏成 |
| 81 | 《用户群分类》V1.0.0 | 5d | 2018-12-19 20:00 A | 2018-12-22 19:00 A | 80 |  | 叶柏成 [20%] |
| 82 | 确定用户代表 | 1h | 2018-11-22 19:00 A | 2018-11-22 20:00 A | 76 |  | 徐哲远 |
| 83 | 设定不同的用户级别 | 1h | 2018-11-23 19:00 A | 2018-11-23 20:00 A | 76 |  | 叶柏成 |
| 88 | **需求开发第一轮迭代** | 73.5d | 2018-11-23 19:00 A | 2018-12-23 20:00 A | 65, 87 |  |  |
| 90 | 创建用户界面及技术原型 | 20h | 2018-11-26 19:00 A | 2018-12-20 21:00 A | 89 |  | 骆佳俊; 杨以恒 |
| 91 | **举办需求访谈** | 6d | 2018-11-25 19:00 A | 2018-11-26 21:00 | 90SS |  |  |
| 98 | **建立数据字典** | 1h | 2018-11-25 19:00 | 2018-11-25 20:00 | 91, 97 |  |  |
| 99 | 《数据字典》V0.1.0 | 1d | 2018-11-26 21:00 A | 2018-11-26 22:00 A | 91 |  | 叶柏成 |
| 100 | 《数据字典》V0.2.0 | 6h | 2018-12-20 19:00 A | 2018-12-22 20:00 A | 99 |  | 叶柏成 [13%] |
| 101 | **编写《需求规格说明书》** | 73.5d | 2018-11-23 19:00 A | 2018-12-23 20:00 A | 98SS |  |  |
| 102 | 编写《需求规格说明书》V0.1.0 | 1h | 2018-11-23 19:00 A | 2018-11-23 20:00 A | 99SS |  | 叶柏成 |
| 103 | 编写《需求规格说明书》V0.2.0 | 10.5h | 2018-12-18 19:00 A | 2018-12-23 20:00 A | 102, 100 |  | 叶柏成; 骆佳俊; 沈启航; 徐哲远; 杨以恒 |
| 104 | **编写《测试用例》** | 1h | 2018-12-20 20:00 | 2018-12-20 21:00 | 103 |  |  |
| 105 | App端测试用例 | 1h | 2018-11-26 18:30 A | 2018-11-26 19:30 A | 103 |  | 徐哲远 |
| 106 | Web端测试用例 | 1h | 2018-11-26 18:30 A | 2018-11-26 19:30 A | 103 |  | 徐哲远 |
| 107 | 编写《用户手册》 | 1h | 2018-12-21 20:00 A | 2018-12-21 21:00 A | 104, 105, 106 | start no earlier than 2018-11-25 19:00 | 沈启航 |
| 108 | **需求开发第二轮迭代** | 23d | 2018-12-20 19:00 A | 2019-01-09 20:30 | 88, 107 |  |  |
| 109 | 修改用户界面及技术原型 | 13.5h | 2018-12-24 20:00 A | 2019-01-04 21:00 A | 107, 88 |  | 杨以恒 |
| 110 | **举办需求访谈** | 1h | 2019-01-08 20:30 | 2019-01-09 20:30 | 109 |  |  |
| 111 | 需求评审 | 1h | 2018-12-29 19:00 A | 2018-12-29 20:00 A | 109SS |  | 徐哲远 |
| 112 | JAD会议 | 1d | 2019-01-04 19:00 A | 2019-01-04 20:00 A |  |  | 骆佳俊; 沈启航; 徐哲远; 杨以恒; 叶柏成 |
| 113 | 测试需求 | 1h | 2018-12-30 19:00 A | 2018-12-30 20:00 A | 111 |  | 杨以恒 |
| 114 | 重新定义验收标准 | 1h | 2018-12-31 19:00 A | 2018-12-31 20:00 A | 113 |  | 叶柏成 |
| 115 | 需求打分 | 1h | 2019-01-01 19:00 A | 2019-01-01 20:00 A | 114 |  | 沈启航 |
| 116 | **修改《需求规格说明书》** | 1h | 2018-12-30 19:00 | 2018-12-30 20:00 | 115 |  | 叶柏成 |
| 117 | 编写《需求规格说明书》V0.3.0 | 1h | 2018-12-24 20:00 A | 2018-12-24 21:00 A | 103 |  | 叶柏成 |
| 118 | **修改《用户手册》** | 1h | 2018-12-20 19:00 A | 2018-12-20 20:00 A |  |  |  |
| 119 | 《用户手册》V0.2.0 | 1d | 2018-12-20 19:00 A | 2018-12-23 20:00 A | 107 |  | 叶柏成 |
| 121 | **建立一个需求变更控制流程** | 1h | 2019-01-05 19:00 | 2019-01-07 20:30 | 108, 118, 117 |  |  |
| 122 | 《CCB章程》V0.1.0 | 1h | 2019-01-07 19:00 A | 2019-01-07 20:00 A | 108, 118, 117 |  | 沈启航 |
| 123 | **对需求变更进行影响分析** | 3.5h | 2019-01-06 16:30 | 2019-01-06 20:00 | 121 |  |  |
| 124 | 撰写《需求变更影响分析清单》 | 1h | 2019-01-07 20:00 A | 2019-01-07 21:00 A | 122 |  | 叶柏成 |
| 125 | 《需求变更影响分析清单》V0.1.1 | 1h | 2019-01-07 20:00 A | 2019-01-07 21:00 A | 122 |  | 叶柏成 |
| 126 | **建立基线并控制需求集合版本** | 0h | 2019-01-07 19:00 | 2019-01-07 19:00 | 123 |  |  |
| 127 | 需求基线1.0.0版 | 0.1h | 2019-01-08 20:00 A | 2019-01-08 20:06 A | 124 |  | 叶柏成 |
| 128 | 需求基线1.1.0版 | 0.1h | 2019-01-08 20:06 A | 2019-01-08 20:12 A | 127 |  | 叶柏成 |
| 129 | **维护需求变更的历史记录** | 0h | 2019-01-08 20:00 A | 2019-01-08 20:00 | 126 |  | 杨以恒 |
| 130 | 撰写《需求管理计划》 | 1h | 2019-01-08 20:06 A | 2019-01-09 20:06 A | 127 |  | 叶柏成 |
| 131 | 《需求管理计划》V0.1.1 | 1h | 2019-01-09 20:06 A | 2019-01-10 20:06 A | 130, 128 |  | 叶柏成 |
| 133 | **维护一个需求可跟踪矩阵** | 1h | 2019-01-10 19:00 | 2019-01-10 20:00 | 132 |  |  |
| 134 | 生成《需求跟踪矩阵》 | 1h | 2019-01-09 20:06 A | 2019-01-10 20:06 A | 130 |  | 骆佳俊 |
| 137 | **组内评审** | 163d | 2018-11-04 19:00 A | 2019-01-08 20:30 A | 2, 17 |  |  |
| 138 | 第一次周末评审 | 0.5h | 2018-11-04 19:00 A | 2018-11-04 19:30 A | 154 |  | 骆佳俊; 沈启航; 徐哲远; 杨以恒; 叶柏成 |
| 139 | 第二次周末评审 | 0.5h | 2018-11-11 19:00 A | 2018-11-11 19:30 A | 155 |  | 骆佳俊; 沈启航; 徐哲远; 杨以恒; 叶柏成 |
| 140 | 第三次周末评审 | 0.5h | 2018-11-18 19:00 A | 2018-11-19 18:30 A | 156 |  | 骆佳俊; 沈启航; 徐哲远; 杨以恒; 叶柏成 |
| 141 | 第四次周末评审 | 0.5h | 2018-11-25 19:00 A | 2018-11-25 19:30 A | 157 |  | 骆佳俊; 沈启航; 徐哲远; 杨以恒; 叶柏成 |
| 142 | 第五次周末评审 | 0.5h | 2018-12-02 19:00 A | 2018-12-02 19:30 A | 158 |  | 骆佳俊; 沈启航; 徐哲远; 杨以恒; 叶柏成 |
| 143 | 第六次周末评审 | 0.5h | 2018-12-09 19:00 A | 2018-12-09 19:30 A | 159 |  | 骆佳俊; 沈启航; 徐哲远; 杨以恒; 叶柏成 |
| 144 | 第七次周末评审 | 0.5h | 2018-12-16 19:00 A | 2018-12-16 19:30 A | 160 |  | 骆佳俊; 沈启航; 徐哲远; 杨以恒; 叶柏成 |
| 145 | 第八次周末评审 | 0.5h | 2018-12-23 19:00 A | 2018-12-23 19:30 A | 161 |  | 骆佳俊; 沈启航; 徐哲远; 杨以恒; 叶柏成 |
| 146 | 第九次周末评审 | 0.5h | 2018-12-30 19:00 A | 2018-12-30 19:30 A | 162 |  | 骆佳俊; 沈启航; 徐哲远; 杨以恒; 叶柏成 |
| 147 | 第十次周末评审 | 0.5h | 2019-01-06 19:00 A | 2019-01-06 19:30 A | 163 |  | 骆佳俊; 沈启航; 徐哲远; 杨以恒; 叶柏成 |
| 148 | 第十一次周末评审 | 0.5h | 2019-01-08 20:00 A | 2019-01-08 20:30 A | 164 |  | 骆佳俊; 沈启航; 徐哲远; 杨以恒; 叶柏成 |
| 149 | **小组会议** | 300.21d | 2018-09-28 19:00 A | 2019-01-29 20:12 | 2, 17 |  |  |
| 165 | **客户用户访谈系列** | 1d | 2018-11-20 21:00 | 2018-11-20 22:00 | 67 |  | 骆佳俊; 沈启航; 徐哲远; 杨以恒; 叶柏成 |
| 166 | **客户访谈** | 114d | 2018-10-21 19:00 A | 2018-11-21 20:00 A | 67 |  |  |
| 167 | 需求咨询 | 1d | 2018-10-21 19:00 A | 2018-10-21 20:00 A | 67 |  | 骆佳俊; 沈启航; 徐哲远; 杨以恒; 叶柏成 |
| 168 | 愿景与范围访谈 | 1d | 2018-11-21 19:00 A | 2018-11-21 20:00 A | 167 |  | 骆佳俊; 沈启航; 徐哲远; 杨以恒; 叶柏成 |
| 169 | **用户访谈** | 1d | 2018-12-05 19:00 A | 2018-12-05 20:00 | 67 |  |  |
| 170 | 教师用户功能访谈 | 1h | 2018-12-05 19:00 A | 2018-12-05 20:00 A | 67 |  | 骆佳俊; 沈启航; 徐哲远; 杨以恒; 叶柏成 |
| 171 | 管理员用户功能访谈 | 1h | 2018-12-22 19:00 A | 2018-12-22 20:00 A |  |  | 骆佳俊; 沈启航; 徐哲远; 杨以恒; 叶柏成 |
| 172 | **客户评审** | 163d | 2018-11-04 19:00 | 2019-01-08 20:30 | 33 |  |  |
| 173 | **《需求工程项目计划》评审** | 120d | 2018-11-09 19:00 A | 2018-12-07 20:00 A |  |  |  |
| 174 | 《需求工程计划》第一次评审 | 1d | 2018-11-09 19:00 A | 2018-11-09 20:00 A | 155 |  | 骆佳俊; 沈启航; 徐哲远; 杨以恒; 叶柏成 |
| 175 | 《需求工程计划》第二次评审 | 1d | 2018-11-28 19:00 A | 2018-11-28 20:00 A | 168, 174 |  | 骆佳俊; 沈启航; 徐哲远; 杨以恒; 叶柏成 |
| 176 | 《需求工程计划》第三次评审 | 1d | 2018-12-07 19:00 A | 2018-12-07 20:00 A | 175 |  | 骆佳俊; 沈启航; 徐哲远; 杨以恒; 叶柏成 |
| 177 | 《软件需求规格说明书》评审 | 1d | 2019-01-02 19:00 A | 2019-01-02 20:00 A | 176 |  | 骆佳俊; 沈启航; 徐哲远; 杨以恒; 叶柏成 |
| 178 | 《需求变更管理》评审 | 1h | 2019-01-11 19:00 A | 2019-01-11 20:00 A | 177 |  | 骆佳俊; 沈启航; 徐哲远; 杨以恒; 叶柏成 |
| 179 | 《需求工程项目收尾》评审 | 1d? | 2019-01-16 19:00 | 2019-01-16 20:00 | 178 |  | 骆佳俊; 沈启航; 徐哲远; 杨以恒; 叶柏成 |
| 180 | **团队建设** | 1h | 2018-12-07 20:00 | 2018-12-07 21:00 | 2, 17 |  |  |
| 181 | 第一次地锅鸡团建 | 1d | 2018-12-06 21:00 A | 2018-12-06 22:00 A | 2, 17 |  | 骆佳俊; 沈启航; 徐哲远; 杨以恒; 叶柏成 |
| 186 | 项目相关文档修改 | 1h | 2019-01-15 20:00 | 2019-01-15 21:00 | 185 |  | 骆佳俊; 沈启航; 徐哲远; 杨以恒; 叶柏成 |

Removed: 54 制作需求工程评审ppt; 62 用户访谈; 69 需求分析; 70 分析需求可实现性; 71 创建用户界面以及技术原型; 72 需求按优先级排序; 73 建立数据字典; 74 为需求建模; 75 分析系统与外部世界之间的联系; 77 需求规范说明; 84 编写《需求规格说明书》; 85 需求验证; 89 《需求规格说明书》发布; 93 建立一个需求变更控制流程; 94 对需求变更进行影响分析; 95 建立基线并控制需求集合版本; 96 维护需求变更的历史记录; 98 维护一个需求可跟踪矩阵; 101 《需求规格说明书》评审

Changed:

| ID | Task | Start | Finish | Duration | Complete | Total float | Predecessors | Other |
| --- | --- | --- | --- | --- | --- | --- | --- | --- |
| 1 | **软件工程系列课程教学辅助网站系统-项目** |  | 2019-01-20 18:00 → 2019-01-31 20:12 (+11d) | 305d? → 314.21d? | 64% → 98% |  |  |  |
| 2 | **项目启动** |  | 2018-11-03 18:00 A → 2018-11-03 17:00 | 112d → 116d | 100% → 99% | none → 0d |  |  |
| 8 | Project的学习 | 2018-10-01 20:00 A → 2018-10-01 19:00 A | 2018-10-05 21:00 A → 2018-10-07 12:00 A (+2d) | 5h → 6h |  |  | 150 → 4 |  |
| 9 | Git的学习 | 2018-10-01 20:00 A → 2018-10-02 10:00 A (+1d) | 2018-10-01 21:00 A → 2018-10-02 11:00 A (+1d) |  |  |  | 150 → 4 |  |
| 10 | AxureRP学习 | 2018-10-01 20:00 A → 2018-10-01 19:00 A | 2018-10-07 19:00 A → 2018-10-07 12:00 A | 9h → 14h |  |  | 150 → 4 | constraint finish no earlier than 2018-10-07 20:00 → start no earlier than 2018-10-01 19:00 |
| 11 | **UML学习** | 2018-10-09 20:00 A → 2018-10-10 19:00 (+1d) | 2018-11-03 18:00 A → 2018-11-03 17:00 | 84d → 83d | 100% → 98% |  | 151 → 4 |  |
| 12 | 翻转课堂UML概述PPT制作 | 2018-10-09 20:00 A → 2018-09-19 20:00 A (-20d) | 2018-10-17 16:00 A → 2018-09-24 21:00 A (-23d) | 11h → 8h |  |  | 151 → 4 |  |
| 13 | 翻转课堂UML工具PPT制作以及工具学习 |  | 2018-10-21 20:00 A → 2018-10-19 18:00 A (-2d) | 29h → 13h |  |  | 152 → 12 | was named 翻转课堂UML工具PPT制作 |
| 14 | 翻转课堂UML基础IPPT制作 |  | 2018-10-28 22:00 A → 2018-10-31 19:00 A (+3d) | 15h → 20h |  |  | 153 → 13 |  |
| 15 | 翻转课堂UML基础IIPPT制作 | 2018-10-31 20:00 A → 2018-10-31 19:00 A | 2018-11-03 18:00 A → 2018-11-03 17:00 |  | 100% → 95% |  | 154 → 14 |  |
| 17 | **项目计划** |  | 2018-11-26 20:00 A → 2018-12-06 21:00 A (+10d) | 204d → 250d |  |  |  |  |
| 19 | 软硬件环境落实 | 2018-10-06 17:00 A → 2018-10-03 11:00 A (-3d) | 2018-10-07 19:00 A → 2018-10-06 11:00 A (-1d) | 4d → 6h |  |  |  |  |
| 34 | **制定需求工程项目计划** | 2018-09-28 20:00 A → 2018-09-28 19:00 A | 2018-11-25 21:00 A → 2018-12-06 21:00 A (+11d) | 188d → 237d |  |  |  |  |
| 35 | 《需求工程项目计划》起草 | 2018-09-28 20:00 A → 2018-09-28 19:00 A | 2018-09-28 21:00 A → 2018-09-28 20:00 A |  |  |  | 150 → 33 |  |
| 36 | 《需求工程项目计划》修订v0.1.1 | 2018-09-29 17:00 A → 2018-09-28 19:00 A (-1d) | 2018-09-30 19:00 A → 2018-09-30 18:00 A | 4h → 5h |  |  |  |  |
| 37 | 《需求工程项目计划》修订v0.1.2 |  | 2018-10-19 20:00 A → 2018-10-21 20:00 A (+2d) | 15h → 20h |  |  |  |  |
| 40 | 《需求工程项目计划》修订v0.2.1 |  | 2018-11-04 20:00 A → 2018-11-04 21:00 A | 1h → 2h |  |  |  | resources 沈启航 → 沈启航 [60%] |
| 46 | 起草《沟通管理子计划》 |  | 2018-11-10 22:00 A → 2018-11-10 22:00 |  |  |  |  |  |
| 48 | 起草《采购管理子计划》 |  | 2018-11-10 21:00 A → 2018-11-10 22:00 A | 2h → 3h |  |  |  |  |
| 52 | 《需求工程项目计划》修订v0.3.2 | 2018-11-12 21:00 A → 2018-11-13 19:00 A (+1d) | 2018-11-12 22:00 A → 2018-11-13 20:00 A (+1d) |  |  |  | 51, 155 → 51 |  |
| 55 | 《需求工程项目计划》修订v0.3.5 | 2018-11-25 19:00 A → 2018-11-19 18:00 A (-6d) | 2018-11-25 20:00 A → 2018-11-19 19:00 A (-6d) |  |  |  |  |  |
| 56 | 《需求工程项目计划》修订v0.3.6 | 2018-11-25 20:00 A → 2018-11-19 19:00 A (-6d) | 2018-11-25 21:00 A → 2018-11-19 21:00 A (-6d) | 1d → 2d |  |  |  |  |
| 62 | 《需求工程项目计划》发布 | 2018-11-25 21:00 A → 2018-12-06 20:00 A (+11d) | 2018-11-25 21:00 A → 2018-12-06 20:00 A (+11d) |  |  |  | 61, 33, 56 → 61, 33, 59 | was named 《需求工程计划》v0.3.6; constraint none → finish no earlier than 2018-11-28 20:00 |
| 63 | **项目执行** | 2018-11-20 19:00 A → 2018-10-01 19:00 A (-50d) | 2018-12-23 19:00 → 2019-01-18 21:00 (+26d) | 90d? → 278d | 0% → 99% | 1d → 0d | 2, 17, 制作需求工程评审ppt → 2, 17, 16, 29, 34 | was named 项目开发 |
| 65 | **需求开发第零轮迭代** | 2018-11-20 19:00 A → 2018-10-01 19:00 A (-50d) | 2018-11-27 22:00 → 2018-12-24 21:00 A (+27d) | 31d → 250.5d | 0% → 100% | 1d → none | 62 → 62, 16 | was named 需求获取 |
| 66 | 定义产品愿景和项目范围 | 2018-11-20 19:00 A | 2018-11-20 20:00 A |  | 0% → 100% |  | 157, 54 → 54 |  |
| 67 | **《愿景与范围》文档** | 2018-11-20 20:00 → 2018-10-01 19:00 A (-50d) | 2018-11-20 21:00 → 2018-12-22 20:00 A (+32d) | 1h → 249d | 0% → 100% |  |  | constraint start no earlier than 2018-11-23 19:00 → none; resources 沈启航 → none |
| 75 | 绘制上下文图 | 2018-11-23 19:00 → 2018-12-22 19:00 A (+29d) | 2018-11-23 20:00 → 2018-12-22 20:00 A (+29d) |  | 0% → 100% |  | 67 → 66 |  |
| 76 | 识别用户类型及其特征 | 2018-11-26 20:00 → 2018-12-24 20:00 A (+28d) | 2018-11-26 21:00 → 2018-12-24 21:00 A (+28d) |  | 0% → 100% | 0d → none | 75 → 67, 75, 72 | constraint none → start no earlier than 2018-11-24 19:00 |
| 78 | **用户分类** | 2018-11-26 21:00 → 2018-11-24 20:00 (-2d) | 2018-11-26 22:00 → 2018-11-24 21:00 (-2d) |  | 0% → 100% | 0d → none |  | was named 为每类用户选出用户代表; resources 杨以恒 → none |
| 84 | 识别系统事件和反应 | 2018-11-27 18:00 → 2018-12-23 16:30 A (+26d) | 2018-11-27 19:00 → 2018-12-24 20:30 A (+27d) |  | 0% → 100% | 0d → none | 78 → 77, 82, 83, 81 | resources 叶柏成 → 骆佳俊 |
| 85 | 举办需求访谈 | 2018-11-27 19:00 → 2018-11-24 19:00 A (-3d) | 2018-11-27 20:00 → 2018-11-24 20:00 A (-3d) |  | 0% → 100% | 0d → none |  | resources 骆佳俊 → 沈启航 |
| 86 | 检查现有系统在需求方面的报告 | 2018-11-27 20:00 A → 2018-11-25 19:00 A (-2d) | 2018-11-27 21:00 → 2018-11-25 20:00 A (-2d) |  | 0% → 100% | 1d → none |  | constraint none → start no earlier than 2018-11-25 19:00 |
| 87 | 重用现有需求 | 2018-11-27 21:00 → 2018-11-26 19:00 A (-1d) | 2018-11-27 22:00 → 2018-11-26 20:00 A (-1d) |  | 0% → 100% | 1d → none |  | constraint none → start no earlier than 2018-11-26 19:00; resources 叶柏成 → 杨以恒 |
| 89 | 使用需求文档模板 | 2018-12-17 20:00 → 2018-11-26 19:00 A (-21d) | 2018-12-17 21:00 → 2018-11-26 20:00 A (-21d) |  | 0% → 100% | 1d → none | 分析系统与外部世界之间的联系, 62 → 65 | constraint start no earlier than 2018-12-16 19:00 → none; resources 骆佳俊 → 叶柏成 |
| 92 | 明确需求来源 | 2018-12-18 20:00 → 2018-11-25 19:00 A (-23d) | 2018-12-19 21:00 → 2018-11-25 20:00 A (-24d) | 2h → 1h | 0% → 100% | 1d → none | 89 → 90 | resources 叶柏成 [50%] → 骆佳俊 |
| 93 | 记录业务规则 | 2018-12-20 20:00 → 2018-11-25 19:00 A (-25d) | 2018-12-20 21:00 → 2018-11-25 20:00 A (-25d) |  | 0% → 100% | 1d → none |  | resources 叶柏成 → 沈启航 |
| 94 | 记录非功能需求 | 2018-12-21 20:00 → 2018-11-25 19:00 A (-26d) | 2018-12-21 21:00 → 2018-11-25 20:00 A (-26d) |  | 0% → 100% | 1d → none |  |  |
| 95 | 需求评审 | 2018-12-22 18:00 → 2018-11-25 19:00 A (-27d) | 2018-12-22 19:00 → 2018-11-25 20:00 A (-27d) |  | 0% → 100% | 1d → none | 编写《需求规格说明书》, 62 → 94 | resources 杨以恒 → 叶柏成 |
| 96 | 测试需求 | 2018-12-23 17:00 → 2018-11-25 19:00 A (-28d) | 2018-12-23 18:00 → 2018-11-25 20:00 A (-28d) |  | 0% → 100% | 1d → none |  |  |
| 97 | 定义验收标准 | 2018-12-23 18:00 → 2018-11-25 19:00 A (-28d) | 2018-12-23 19:00 → 2018-11-25 20:00 A (-28d) |  | 0% → 100% | 1d → none |  | constraint none → start no earlier than 2018-11-25 19:00; resources 叶柏成 → 徐哲远 |
| 120 | **需求管理** | 2018-12-24 20:00 → 2019-01-05 19:00 (+12d) | 2019-01-12 18:00 → 2019-01-18 21:00 (+6d) | 25d → 13d | 0% → 100% | 0d → none | 《需求规格说明书》发布 → 64, 118, 119 |  |
| 132 | 跟踪每个需求的状态 | 2018-12-28 20:00 → 2019-01-10 20:06 A (+13d) | 2018-12-28 21:00 → 2019-01-10 20:06 A (+13d) | 1h → 0h | 0% → 100% | 13d → none | 维护需求变更的历史记录 → 129, 131 |  |
| 135 | 使用需求管理工具 | 2018-12-29 18:00 → 2019-01-10 20:06 A (+12d) | 2019-01-01 21:00 → 2019-01-11 20:06 A (+10d) | 6h → 1h | 0% → 100% | 13d → none | 维护一个需求可跟踪矩阵 → 133, 134 | constraint none → start no earlier than 2019-01-11 19:00 |
| 136 | **项目控制** | 2018-12-24 20:00 → 2018-09-28 19:00 A (-87d) | 2019-01-12 18:00 → 2019-01-29 20:12 (+17d) | 25d → 300.21d | 0% → 96% | 0d → none |  | was named 项目管理 |
| 150 | 第一次正式会议 |  | 2018-09-28 20:00 A → 2018-09-28 19:30 A | 1h → 0.5h |  |  |  |  |
| 151 | 第二次正式会议 | 2018-10-08 20:00 A → 2018-10-08 19:00 A | 2018-10-08 21:00 A → 2018-10-08 19:30 A | 1h → 0.5h |  |  |  |  |
| 152 | 第三次正式会议 | 2018-10-17 16:00 A → 2018-10-15 19:00 A (-2d) | 2018-10-17 17:00 A → 2018-10-15 19:30 A (-2d) | 1h → 0.5h |  |  |  | constraint none → start no earlier than 2018-10-15 19:00 |
| 153 | 第四次正式会议 |  | 2018-10-23 20:00 A → 2018-10-23 19:30 A | 1h → 0.5h |  |  | 152, 13 → 13, 152, 167 |  |
| 154 | 第五次正式会议 |  | 2018-10-30 20:00 A → 2018-10-30 19:30 A | 1h → 0.5h |  |  |  |  |
| 155 | 第六次正式会议 |  | 2018-11-05 20:00 A → 2018-11-05 19:30 A | 1h → 0.5h |  |  | 154 → 138 |  |
| 156 | 第七次正式会议 |  | 2018-11-13 20:00 A → 2018-11-13 19:30 A | 1d → 0.5h |  |  | 155 → 139 |  |
| 157 | 第八次正式会议 | 2018-11-20 19:00 A | 2018-11-20 20:00 → 2018-11-20 19:30 A | 1d → 0.5h | 0% → 100% |  | 156, 54 → 156, 54, 140 |  |
| 158 | 第九次正式会议 | 2018-11-21 18:00 → 2018-11-27 19:00 A (+6d) | 2018-11-21 19:00 → 2018-11-27 19:30 A (+6d) | 1d → 0.5h | 0% → 100% |  | 157, 用户访谈 → 157, 165, 141 |  |
| 159 | 第十次正式会议 | 2018-12-04 19:00 A | 2018-12-04 20:00 → 2018-12-04 19:30 A | 1d? → 0.5h | 0% → 100% |  | 158 → 175, 142 |  |
| 160 | 第十一次正式会议 | 2018-12-11 19:00 A | 2018-12-11 20:00 → 2018-12-11 19:30 A | 1d → 0.5h | 0% → 100% |  | 159 → 159, 143 |  |
| 161 | 第十二次正式会议 | 2018-12-18 19:00 A | 2018-12-18 20:00 → 2018-12-18 19:30 A | 1h → 0.5h | 0% → 100% |  | 160 → 160, 144 |  |
| 162 | 第十三次正式会议 | 2018-12-25 19:00 A | 2018-12-25 20:00 → 2018-12-25 19:30 A | 1d → 0.5h | 0% → 100% |  | 161 → 161, 145 |  |
| 163 | 第十四次正式会议 | 2019-01-01 19:00 A | 2019-01-01 20:00 → 2019-01-01 19:30 A | 1d → 0.5h | 0% → 100% |  | 162 → 162, 146 |  |
| 164 | 第十五次正式会议 | 2019-01-08 19:00 → 2019-01-07 19:00 A (-1d) | 2019-01-08 20:00 → 2019-01-07 19:30 A (-1d) | 1h → 0.5h | 0% → 100% |  | 163 → 163, 147 |  |
| 182 | **项目结尾** | 2019-01-08 19:00 → 2019-01-13 18:00 A (+5d) | 2019-01-20 18:00 → 2019-01-31 20:12 (+11d) | 16d? → 24.21d? |  | 0d → none | 《需求规格说明书》评审, 136 → 137, 165, 172, 149, 170, 135, 63, 181, 171, 176, 164 | was named 项目阶段收尾 |
| 183 | **汇总文档** | 2019-01-12 18:00 → 2019-01-14 19:00 (+2d) | 2019-01-13 18:00 → 2019-01-14 19:00 A (+1d) | 2h → 0d | 0% → 100% | 0d → none | 《需求规格说明书》评审 → 135, 63, 148, 179SS |  |
| 184 | 《汇总文档》 | 2019-01-13 18:00 A | 2019-01-13 18:00 A |  | 0% → 100% |  | 183, 164 → 164 |  |
| 185 | 项目总评 | 2019-01-13 18:00 → 2019-01-14 20:00 (+1d) | 2019-01-13 19:00 → 2019-01-14 21:00 (+1d) |  |  |  |  |  |
| 187 | **《项目总结报告》** | 2019-01-14 20:00 → 2019-01-15 19:00 (+1d) | 2019-01-19 19:00 → 2019-01-15 21:00 (-4d) | 7h → 2h |  |  |  | constraint finish no earlier than 2019-01-19 20:00 → none |
| 188 | 《项目总结报告》评审修改 | 2019-01-20 17:00 → 2019-01-16 19:00 (-4d) | 2019-01-20 18:00 → 2019-01-16 20:00 (-4d) | 1d? → 1h |  |  | 187 → 186 |  |
| 189 | 散伙饭 | 2019-01-20 17:00 → 2019-01-27 19:00 (+7d) | 2019-01-20 18:00 → 2019-01-27 20:00 (+7d) | 1d? → 1d |  | 0d → none |  |  |

## Version 7 (data date 2019-01-16, saved 2019-01-15)

Note of the change: Update PRD2018-G03-甘特图.mpp

Last finish stays 2019-01-31. Complete tasks 140 → 146.

Added:

| ID | Task | Duration | Start | Finish | Predecessors | Resources |
| --- | --- | --- | --- | --- | --- | --- |
| 165 | 第十六次正式会议 | 0.5h | 2019-01-07 20:00 A | 2019-01-07 20:30 A | 164 | 沈启航; 徐哲远; 叶柏成; 杨以恒; 骆佳俊 |

Changed:

| ID | Task | Start | Finish | Duration | Complete | Total float | Predecessors |
| --- | --- | --- | --- | --- | --- | --- | --- |
| 1 | **软件工程系列课程教学辅助网站系统-项目** |  |  |  | 98% → 99% |  |  |
| 2 | **项目启动** |  | 2018-11-03 17:00 A |  | 99% → 100% | 0d → none |  |
| 7 | **工具学习** |  |  |  | 99% → 100% |  |  |
| 9 | Git的学习 |  | 2018-10-02 11:00 A → 2018-10-02 12:00 A | 1h → 2h |  |  |  |
| 11 | **UML学习** |  | 2018-11-03 17:00 A |  | 98% → 100% |  |  |
| 12 | 翻转课堂UML概述PPT制作 |  | 2018-09-24 21:00 A → 2018-09-25 21:00 A (+1d) | 8h → 9h |  |  |  |
| 15 | 翻转课堂UML基础IIPPT制作 |  | 2018-11-03 17:00 A |  | 95% → 100% |  |  |
| 25 | 《可行性报告》v0.1.2 |  | 2018-11-08 20:00 → 2018-11-07 21:00 A (-1d) |  |  |  |  |
| 30 | **项目章程修订** |  | 2018-10-21 19:40 A → 2018-10-25 19:00 A (+4d) | 2.67d → 10d |  |  |  |
| 31 | 《项目章程》修改v0.1.1 |  | 2018-10-21 18:40 A → 2018-10-25 19:00 A (+4d) | 1.67h → 10h |  |  |  |
| 37 | 《需求工程项目计划》修订v0.1.2 |  | 2018-10-21 20:00 A → 2018-10-20 18:00 A (-1d) |  |  |  |  |
| 38 | 《需求工程项目计划》修订v0.1.3 |  | 2018-10-28 20:00 A → 2018-10-28 21:20 A | 7d → 8.33d |  |  |  |
| 46 | 起草《沟通管理子计划》 |  | 2018-11-10 22:00 → 2018-11-10 21:00 A |  |  |  |  |
| 51 | 《需求工程项目计划》修订v0.3.1 |  | 2018-11-12 21:00 A → 2018-11-12 22:00 A | 2h → 3h |  |  |  |
| 55 | 《需求工程项目计划》修订v0.3.5 |  | 2018-11-19 19:00 A → 2018-11-19 20:00 A | 1d → 2d |  |  |  |
| 57 | 《需求工程项目计划》修订v0.3.7 |  | 2018-11-28 20:00 A → 2018-11-28 21:00 A | 1h → 2h |  |  |  |
| 61 | 《质量保证计划》发布 |  |  |  |  |  | 44 → 44, 60SS |
| 69 | 《愿景与范围》文档V0.1.1 |  | 2018-11-14 20:00 → 2018-11-12 20:00 A (-2d) |  |  |  |  |
| 70 | 《愿景与范围》文档V0.1.2 |  | 2018-11-24 20:00 A → 2018-11-23 20:00 A (-1d) |  |  |  |  |
| 90 | 创建用户界面及技术原型 |  | 2018-12-20 21:00 A → 2018-12-01 19:00 A (-19d) |  |  |  |  |
| 119 | 《用户手册》V0.2.0 |  | 2018-12-23 20:00 A → 2018-12-20 20:00 A (-3d) |  |  |  |  |
| 128 | 需求基线1.1.0版 |  | 2019-01-08 20:12 A → 2019-01-09 20:06 A (+1d) | 0.1h → 1h |  |  |  |
| 136 | **项目控制** |  |  | 300.21d → 300.21d? | 96% → 99% |  |  |
| 149 | **小组会议** |  |  | 300.21d → 300.21d? |  |  |  |
| 155 | 第六次正式会议 |  | 2018-11-05 19:30 A → 2018-11-05 20:30 A | 0.5h → 1h |  |  |  |
| 173 | **客户评审** |  |  | 163d → 163d? | 83% → 100% |  |  |
| 180 | 《需求工程项目收尾》评审 | 2019-01-16 19:00 A | 2019-01-16 20:00 A | 1d? → 1d | 0% → 100% |  |  |
| 183 | **项目结尾** |  |  |  | 0% → 80% |  |  |
| 186 | 项目总评 | 2019-01-14 20:00 A | 2019-01-14 21:00 → 2019-01-15 21:00 A (+1d) | 1h → 2h | 0% → 100% |  |  |
| 187 | 项目相关文档修改 | 2019-01-15 20:00 A | 2019-01-15 21:00 A |  | 0% → 100% |  |  |
| 188 | **《项目总结报告》** | 2019-01-15 19:00 A | 2019-01-15 21:00 → 2019-01-15 19:00 | 2h → 0h | 0% → 100% |  | 186 → 186, 165 |
| 189 | 《项目总结报告》评审修改 | 2019-01-16 19:00 A | 2019-01-16 20:00 A |  | 0% → 100% |  |  |
