How a schedule from MS Project changed from version to version. A marks actual dates.

## Version 1 (data date 2018-11-10, saved 2018-11-18)

Note of the change: Create PRD2018-G03-甘特图（前半学期）.mpp

| ID | WBS | Task | Duration | Start | Finish | Predecessors | Total float | Constraint |
| --- | --- | --- | --- | --- | --- | --- | --- | --- |
| 1 |  | 软件工程系列课程教学辅助网站系统-项目 | 154d | 2018-09-17 20:00 | 2019-01-15 20:00 |  | 0d | finish no earlier than 2019-01-15 20:00 |
| 2 | 2 | **项目启动** | 61.6d | 2018-09-17 19:00 | 2018-11-04 17:36 | 1SS | 0d |  |
| 3 |  | 人员召集 | 1h | 2018-09-17 19:00 | 2018-09-17 20:00 |  |  |  |
| 4 |  | 课题选定 | 1h | 2018-09-18 20:00 | 2018-09-18 21:00 | 3 | 10d | start no earlier than 2018-09-18 19:00 |
| 5 |  | 《项目章程》起草 | 1h | 2018-10-20 18:00 | 2018-10-20 20:00 | 4 | -30d | finish no earlier than 2018-10-20 20:00 |
| 6 |  | 第一次正式会议 | 0.5h | 2018-09-28 19:00 | 2018-09-28 19:30 | 4 |  |  |
| 7 |  | Project的学习 | 8h | 2018-10-01 20:00 | 2018-10-07 18:00 | 6 | 1d | start no earlier than 2018-10-01 19:00 |
| 8 |  | Git的学习 | 9h | 2018-10-01 20:00 | 2018-10-07 19:00 | 6 | 0d | start no earlier than 2018-10-01 19:00 |
| 9 |  | AxureRP学习 | 9d | 2018-10-01 20:00 | 2018-10-07 20:00 | 6 | 45d | finish no earlier than 2018-10-07 20:00 |
| 10 |  | 第二次正式会议 | 1h | 2018-10-08 20:00 | 2018-10-08 21:00 | 6, 7, 8 |  |  |
| 11 | 2.9 | **UML学习** | 33.6d | 2018-10-09 20:00 | 2018-11-04 17:36 | 10 | 0d |  |
| 12 |  | 翻转课堂UML概述PPT制作 | 7h | 2018-10-09 20:00 | 2018-10-14 18:00 | 10 |  |  |
| 13 |  | 第三次正式会议 | 1h | 2018-10-16 19:00 | 2018-10-16 20:00 | 12, 10 |  |  |
| 14 |  | 翻转课堂UML工具PPT制作 | 7h | 2018-10-17 20:00 | 2018-10-21 19:00 | 13 |  | finish no earlier than 2018-10-21 20:00 |
| 15 |  | 第四次正式会议 | 1h | 2018-10-23 19:00 | 2018-10-23 20:00 | 13, 14 |  |  |
| 16 |  | 翻转课堂UML基础IPPT制作 | 7h | 2018-10-24 20:00 | 2018-10-28 19:00 | 15 |  | finish no earlier than 2018-10-28 20:00 |
| 17 |  | 第五次正式会议 | 1h | 2018-10-30 19:00 | 2018-10-30 20:00 | 15, 16 |  |  |
| 18 |  | 翻转课堂UML基础IIPPT制作 | 5.6h | 2018-10-31 20:00 | 2018-11-04 17:36 | 17 |  | start no earlier than 2018-10-31 19:00 |
| 19 | 3 | **项目计划** | 72d | 2018-09-17 20:00 | 2018-11-11 20:00 | 1SS | 0d |  |
| 20 |  | 资料申请与完善 | 1h | 2018-09-17 20:00 | 2018-09-17 21:00 | 3 | 62d |  |
| 21 |  | 软硬件环境落实 | 9d | 2018-10-01 20:00 | 2018-10-07 20:00 | 20 | 45d | finish no earlier than 2018-10-07 20:00 |
| 22 |  | 识别项目干系人 | 1h | 2018-09-19 20:00 | 2018-09-19 21:00 | 4 | 68d |  |
| 23 |  | 找ISO&GB模板和PPT模板 | 1h | 2018-09-20 20:00 | 2018-09-20 21:00 | 22 | 68d |  |
| 24 |  | 第六次正式会议 | 1h | 2018-11-05 19:00 | 2018-11-05 20:00 | 17 |  |  |
| 25 |  | 《项目章程》修改v0.1.1 | 1.67h | 2018-10-21 17:00 | 2018-10-21 18:40 | 5 |  |  |
| 26 |  | 《项目章程》修改v0.1.2 | 1h | 2018-10-21 18:40 | 2018-10-22 20:40 | 25 |  |  |
| 27 |  | 《项目章程》发布 | 0h | 2018-10-22 20:40 | 2018-10-22 20:40 | 26 |  |  |
| 28 | 3.9 | **制定需求工程项目计划** | 59d | 2018-09-28 20:00 | 2018-11-11 20:00 | 5 | 0d |  |
| 29 |  | 《需求工程项目计划》起草 | 1h | 2018-09-28 20:00 | 2018-09-28 21:00 | 6 |  | start no earlier than 2018-09-28 19:00 |
| 30 |  | 《需求工程项目计划》修订v0.1.1 | 4h | 2018-09-29 17:00 | 2018-09-30 19:00 | 29 |  |  |
| 31 |  | 《需求工程项目计划》修订v0.1.2 | 9d | 2018-10-17 19:00 | 2018-10-21 20:00 | 30 |  |  |
| 32 |  | 《需求工程项目计划》修订v0.1.3 | 7d | 2018-10-26 19:00 | 2018-10-28 20:00 | 31 |  |  |
| 33 |  | 《需求工程项目计划》修订v0.2.0 | 1h | 2018-10-30 19:00 | 2018-10-30 20:00 | 32 |  |  |
| 34 |  | 《需求工程项目计划》修订v0.2.1 | 1h | 2018-11-04 19:00 | 2018-11-04 20:00 | 33 |  |  |
| 35 |  | 起草《项目范围管理计划》 | 1h | 2018-11-10 19:00 | 2018-11-10 20:00 | 29 |  |  |
| 36 |  | 起草《项目进度管理计划》 | 1h | 2018-11-10 19:00 | 2018-11-10 20:00 | 29 |  |  |
| 37 |  | 起草《项目成本管理计划》 | 1d | 2018-11-10 19:00 | 2018-11-10 20:00 | 29 |  |  |
| 38 |  | 起草《项目质量管理计划》 | 1h | 2018-11-10 19:00 | 2018-11-11 18:00 | 29 |  |  |
| 39 |  | 起草《人力资源管理计划》 | 1h | 2018-11-10 19:00 | 2018-11-10 20:00 | 29 |  |  |
| 40 |  | 起草《沟通管理子计划》 | 1h | 2018-11-10 19:00 | 2018-11-10 20:00 | 29 |  |  |
| 41 |  | 起草《风险管理子计划》 | 1h | 2018-11-10 19:00 | 2018-11-10 20:00 | 29 |  |  |
| 42 |  | 起草《采购管理子计划》 | 1h | 2018-11-10 19:00 | 2018-11-10 20:00 | 29 |  |  |
| 43 |  | 起草《配置管理子计划》 | 1h | 2018-11-10 19:00 | 2018-11-10 20:00 | 29 |  | start no earlier than 2018-11-10 19:00 |
| 44 |  | 《需求工程项目计划》修订v0.3.0 | 2d | 2018-11-11 18:00 | 2018-11-11 20:00 | 34, 35, 36, 37, 38, 39, 40, 41, 42, 43 |  |  |
| 45 |  | 《质量保证计划》发布 | 0h | 2018-11-11 18:00 | 2018-11-11 18:00 | 38 | 1d |  |
| 46 |  | 《需求工程计划》发布 | 0h | 2018-11-11 20:00 | 2018-11-11 20:00 | 44, 45 | 0d |  |
| 47 | 4 | **需求开发** | 62d | 2018-11-12 20:00 | 2018-12-30 18:00 | 2, 19 | 0d |  |
| 48 | 4.1 | **需求获取** | 9d | 2018-11-12 20:00 | 2018-11-18 19:00 | 46 | 0d |  |
| 49 |  | 定义产品愿景和项目范围 | 1h | 2018-11-12 20:00 | 2018-11-12 21:00 | 46 | 0d |  |
| 50 |  | 访谈后临时会议 | 1h | 2018-11-13 20:00 | 2018-11-13 21:00 | 49 | 0d |  |
| 51 |  | 《愿景与范围》文档 | 1h | 2018-11-14 20:00 | 2018-11-14 21:00 | 50 | 0d |  |
| 52 |  | 识别用户类型及其特征 | 1h | 2018-11-15 20:00 | 2018-11-15 21:00 | 51 | 0d |  |
| 53 |  | 为每类用户选出用户代表 | 1h | 2018-11-16 20:00 | 2018-11-16 21:00 | 52 | 0d |  |
| 54 |  | 识别系统事件和反应 | 1h | 2018-11-17 17:00 | 2018-11-17 18:00 | 53 | 0d |  |
| 55 |  | 举办需求访谈 | 1h | 2018-11-17 18:00 | 2018-11-17 19:00 | 54 | 0d |  |
| 56 |  | 检查现有系统在需求方面的报告 | 1h | 2018-11-18 17:00 | 2018-11-18 18:00 | 55 | 0d |  |
| 57 |  | 重用现有需求 | 1h | 2018-11-18 18:00 | 2018-11-18 19:00 | 56 | 0d |  |
| 58 | 4.2 | **需求分析** | 25d | 2018-11-19 20:00 | 2018-12-08 19:00 | 48 | 0d |  |
| 59 |  | 分析需求可实现性 | 1h | 2018-11-19 20:00 | 2018-11-19 21:00 | 57, 46 | 0d |  |
| 60 |  | 创建用户界面以及技术原型 | 20h | 2018-11-20 20:00 | 2018-12-05 21:00 | 59 | 0d |  |
| 61 |  | 需求按优先级排序 | 1h | 2018-12-06 20:00 | 2018-12-06 21:00 | 60 | 0d |  |
| 62 |  | 建立数据字典 | 1h | 2018-12-07 20:00 | 2018-12-07 21:00 | 61 | 0d |  |
| 63 |  | 为需求建模 | 1h | 2018-12-08 17:00 | 2018-12-08 18:00 | 62 | 0d |  |
| 64 |  | 分析系统与外部世界之间的联系 | 1h | 2018-12-08 18:00 | 2018-12-08 19:00 | 63 | 0d |  |
| 65 | 4.3 | **需求规范说明** | 25d | 2018-12-09 17:00 | 2018-12-28 21:00 | 58 | 0d |  |
| 66 |  | 使用需求文档模板 | 1h | 2018-12-09 17:00 | 2018-12-09 18:00 | 64, 46 | 0d |  |
| 67 |  | 明确需求来源 | 1h | 2018-12-09 18:00 | 2018-12-09 19:00 | 66 | 0d |  |
| 68 |  | 记录业务规则 | 1h | 2018-12-10 20:00 | 2018-12-10 21:00 | 67 | 0d |  |
| 69 |  | 记录非功能需求 | 1h | 2018-12-11 20:00 | 2018-12-11 21:00 | 68 | 0d |  |
| 70 |  | 编写《需求规格说明书》 | 21h | 2018-12-12 20:00 | 2018-12-28 21:00 | 69 | 0d |  |

| ID | WBS | Task | Duration | Start | Finish | Predecessors | Total float |
| --- | --- | --- | --- | --- | --- | --- | --- |
| 71 | 4.4 | **需求验证** | 3d | 2018-12-29 17:00 | 2018-12-30 18:00 | 65 | 0d |
| 72 |  | 需求评审 | 1h | 2018-12-29 17:00 | 2018-12-29 18:00 | 70, 46 | 0d |
| 73 |  | 测试需求 | 1h | 2018-12-29 18:00 | 2018-12-29 19:00 | 72 | 0d |
| 74 |  | 定义验收标准 | 1h | 2018-12-30 17:00 | 2018-12-30 18:00 | 73 | 0d |
| 75 |  | 《需求规格说明书》发布 | 0h | 2018-12-30 18:00 | 2018-12-30 18:00 | 74 | 0d |
| 76 | 5 | **需求管理** | 16d | 2018-12-30 18:00 | 2019-01-12 18:00 | 75 | 0d |
| 77 |  | 建立一个需求变更控制流程 | 1h | 2018-12-30 18:00 | 2018-12-30 19:00 | 75 | 0d |
| 78 |  | 对需求变更进行影响分析 | 1h | 2018-12-31 20:00 | 2018-12-31 21:00 | 77 | 0d |
| 79 |  | 建立基线并控制需求集合版本 | 1h | 2019-01-01 20:00 | 2019-01-01 21:00 | 78 | 0d |
| 80 |  | 维护需求变更的历史记录 | 1h | 2019-01-02 20:00 | 2019-01-02 21:00 | 79 | 0d |
| 81 |  | 跟踪每个需求的状态 | 1h | 2019-01-03 20:00 | 2019-01-03 21:00 | 80 | 0d |
| 82 |  | 维护一个需求可跟踪矩阵 | 1h | 2019-01-04 20:00 | 2019-01-04 21:00 | 81 | 0d |
| 83 |  | 使用需求管理工具 | 10h | 2019-01-05 17:00 | 2019-01-12 18:00 | 82 | 0d |
| 84 |  | 《需求规格说明书》评审 | 0h | 2019-01-12 18:00 | 2019-01-12 18:00 | 83 |  |
| 85 | 6 | **需求阶段收尾** | 3d | 2019-01-12 18:00 | 2019-01-13 19:00 | 84 | 0d |
| 86 |  | 汇总文档 | 2h | 2019-01-12 18:00 | 2019-01-13 18:00 | 84 | 0d |
| 87 |  | 项目总评 | 1h | 2019-01-13 18:00 | 2019-01-13 19:00 | 86 |  |
| 88 |  | 《项目总结报告》 | 0h | 2019-01-13 19:00 | 2019-01-13 19:00 | 87 | 0d |

## Version 2 (data date 2018-11-11, saved 2018-11-18)

Note of the change: Update PRD2018-G03-甘特图（前半学期）.mpp

Last finish 2019-01-15 → 2019-01-14 (-1d).

Added:

| ID | Task | Duration | Start | Finish | Predecessors | Resources |
| --- | --- | --- | --- | --- | --- | --- |
| 75 | **项目管理** | 17d | 2018-12-30 17:00 | 2019-01-12 18:00 | 74 |  |
| 89 | 散伙饭 | 1d? | 2019-01-14 20:00 | 2019-01-14 21:00 | 88 | 杨以恒; 沈启航; 骆佳俊; 徐哲远; 叶柏成 |

Removed: 50 访谈后临时会议

Changed:

| ID | Task | Start | Finish | Duration | Total float | Predecessors | Other |
| --- | --- | --- | --- | --- | --- | --- | --- |
| 1 | **软件工程系列课程教学辅助网站系统-项目** | 2018-09-17 20:00 → 2018-09-17 19:00 | 2019-01-15 20:00 → 2019-01-14 21:00 (-1d) | 154d → 154d? |  |  | constraint finish no earlier than 2019-01-15 20:00 → none |
| 2 | **项目启动** |  |  |  |  | 1SS → none |  |
| 19 | **项目计划** |  |  |  | 0d → 1d | 1SS → none |  |
| 45 | 《质量保证计划》发布 |  |  |  | 1d → 2d |  | resources none → 叶柏成; 骆佳俊; 沈启航; 徐哲远; 杨以恒 |
| 46 | 《需求工程计划》发布 |  |  |  | 0d → 1d |  | resources none → 叶柏成; 骆佳俊; 沈启航; 徐哲远; 杨以恒 |
| 47 | **项目开发** |  | 2018-12-30 18:00 → 2018-12-29 19:00 (-1d) | 62d → 61d | 0d → 1d |  | was named 需求开发 |
| 48 | **需求获取** |  | 2018-11-18 19:00 → 2018-11-18 18:00 | 9d → 8d | 0d → 1d |  |  |
| 49 | 定义产品愿景和项目范围 |  |  |  | 0d → 1d |  | resources none → 沈启航 |
| 50 | 《愿景与范围》文档 | 2018-11-14 20:00 → 2018-11-13 20:00 (-1d) | 2018-11-14 21:00 → 2018-11-13 21:00 (-1d) |  | 0d → 1d | 访谈后临时会议 → 49 | resources none → 沈启航 |
| 51 | 识别用户类型及其特征 | 2018-11-15 20:00 → 2018-11-14 20:00 (-1d) | 2018-11-15 21:00 → 2018-11-14 21:00 (-1d) |  | 0d → 1d |  | resources none → 徐哲远 |
| 52 | 为每类用户选出用户代表 | 2018-11-16 20:00 → 2018-11-15 20:00 (-1d) | 2018-11-16 21:00 → 2018-11-15 21:00 (-1d) |  | 0d → 1d |  | resources none → 杨以恒 |
| 53 | 识别系统事件和反应 | 2018-11-17 17:00 → 2018-11-16 20:00 (-1d) | 2018-11-17 18:00 → 2018-11-16 21:00 (-1d) |  | 0d → 1d |  | resources none → 叶柏成 |
| 54 | 举办需求访谈 | 2018-11-17 18:00 → 2018-11-17 17:00 | 2018-11-17 19:00 → 2018-11-17 18:00 |  | 0d → 1d |  | resources none → 骆佳俊 |
| 55 | 检查现有系统在需求方面的报告 | 2018-11-18 17:00 → 2018-11-17 18:00 (-1d) | 2018-11-18 18:00 → 2018-11-17 19:00 (-1d) |  | 0d → 1d |  | resources none → 徐哲远 |
| 56 | 重用现有需求 | 2018-11-18 18:00 → 2018-11-18 17:00 | 2018-11-18 19:00 → 2018-11-18 18:00 |  | 0d → 1d |  | resources none → 叶柏成 |
| 57 | **需求分析** | 2018-11-19 20:00 → 2018-11-18 18:00 (-1d) | 2018-12-08 19:00 → 2018-12-08 18:00 |  | 0d → 1d |  |  |
| 58 | 分析需求可实现性 | 2018-11-19 20:00 → 2018-11-18 18:00 (-1d) | 2018-11-19 21:00 → 2018-11-18 19:00 (-1d) |  | 0d → 1d |  | resources none → 骆佳俊 |
| 59 | 创建用户界面以及技术原型 | 2018-11-20 20:00 → 2018-11-19 20:00 (-1d) | 2018-12-05 21:00 → 2018-12-04 21:00 (-1d) |  | 0d → 1d |  | resources none → 杨以恒 |
| 60 | 需求按优先级排序 | 2018-12-06 20:00 → 2018-12-05 20:00 (-1d) | 2018-12-06 21:00 → 2018-12-05 21:00 (-1d) |  | 0d → 1d |  | resources none → 叶柏成 |
| 61 | 建立数据字典 | 2018-12-07 20:00 → 2018-12-06 20:00 (-1d) | 2018-12-07 21:00 → 2018-12-06 21:00 (-1d) |  | 0d → 1d |  | resources none → 沈启航 |
| 62 | 为需求建模 | 2018-12-08 17:00 → 2018-12-07 20:00 (-1d) | 2018-12-08 18:00 → 2018-12-07 21:00 (-1d) |  | 0d → 1d |  | resources none → 徐哲远 |
| 63 | 分析系统与外部世界之间的联系 | 2018-12-08 18:00 → 2018-12-08 17:00 | 2018-12-08 19:00 → 2018-12-08 18:00 |  | 0d → 1d |  | resources none → 沈启航 |
| 64 | **需求规范说明** | 2018-12-09 17:00 → 2018-12-08 18:00 (-1d) | 2018-12-28 21:00 → 2018-12-27 21:00 (-1d) |  | 0d → 1d |  |  |
| 65 | 使用需求文档模板 | 2018-12-09 17:00 → 2018-12-08 18:00 (-1d) | 2018-12-09 18:00 → 2018-12-08 19:00 (-1d) |  | 0d → 1d |  | resources none → 骆佳俊 |
| 66 | 明确需求来源 | 2018-12-09 18:00 → 2018-12-09 17:00 | 2018-12-09 19:00 → 2018-12-09 18:00 |  | 0d → 1d |  | resources none → 杨以恒 |
| 67 | 记录业务规则 | 2018-12-10 20:00 → 2018-12-09 18:00 (-1d) | 2018-12-10 21:00 → 2018-12-09 19:00 (-1d) |  | 0d → 1d |  | resources none → 叶柏成 |
| 68 | 记录非功能需求 | 2018-12-11 20:00 → 2018-12-10 20:00 (-1d) | 2018-12-11 21:00 → 2018-12-10 21:00 (-1d) |  | 0d → 1d |  | resources none → 沈启航 |
| 69 | 编写《需求规格说明书》 | 2018-12-12 20:00 → 2018-12-11 20:00 (-1d) | 2018-12-28 21:00 → 2018-12-27 21:00 (-1d) |  | 0d → 1d |  | resources none → 徐哲远 |
| 70 | **需求验证** | 2018-12-29 17:00 → 2018-12-28 20:00 (-1d) | 2018-12-30 18:00 → 2018-12-29 19:00 (-1d) |  | 0d → 1d |  |  |
| 71 | 需求评审 | 2018-12-29 17:00 → 2018-12-28 20:00 (-1d) | 2018-12-29 18:00 → 2018-12-28 21:00 (-1d) |  | 0d → 1d |  | resources none → 骆佳俊 |
| 72 | 测试需求 | 2018-12-29 18:00 → 2018-12-29 17:00 | 2018-12-29 19:00 → 2018-12-29 18:00 |  | 0d → 1d |  | resources none → 杨以恒 |
| 73 | 定义验收标准 | 2018-12-30 17:00 → 2018-12-29 18:00 (-1d) | 2018-12-30 18:00 → 2018-12-29 19:00 (-1d) |  | 0d → 1d |  | resources none → 叶柏成 |
| 74 | 《需求规格说明书》发布 | 2018-12-30 18:00 → 2018-12-29 19:00 (-1d) | 2018-12-30 18:00 → 2018-12-29 19:00 (-1d) |  | 0d → 1d |  |  |
| 76 | **需求管理** | 2018-12-30 18:00 → 2018-12-30 17:00 |  | 16d → 17d |  |  |  |
| 77 | 建立一个需求变更控制流程 | 2018-12-30 18:00 → 2018-12-30 17:00 | 2018-12-30 19:00 → 2018-12-30 18:00 |  | 0d → 1d |  | resources none → 骆佳俊 |
| 78 | 对需求变更进行影响分析 | 2018-12-31 20:00 → 2018-12-30 18:00 (-1d) | 2018-12-31 21:00 → 2018-12-30 19:00 (-1d) |  | 0d → 1d |  | resources none → 杨以恒 |
| 79 | 建立基线并控制需求集合版本 | 2019-01-01 20:00 → 2018-12-31 20:00 (-1d) | 2019-01-01 21:00 → 2018-12-31 21:00 (-1d) |  | 0d → 1d |  | resources none → 叶柏成 |
| 80 | 维护需求变更的历史记录 | 2019-01-02 20:00 → 2019-01-01 20:00 (-1d) | 2019-01-02 21:00 → 2019-01-01 21:00 (-1d) |  | 0d → 1d |  | resources none → 沈启航 |
| 81 | 跟踪每个需求的状态 | 2019-01-03 20:00 → 2019-01-02 20:00 (-1d) | 2019-01-03 21:00 → 2019-01-02 21:00 (-1d) |  | 0d → 1d |  | resources none → 徐哲远 |
| 82 | 维护一个需求可跟踪矩阵 | 2019-01-04 20:00 → 2019-01-03 20:00 (-1d) | 2019-01-04 21:00 → 2019-01-03 21:00 (-1d) |  | 0d → 1d |  | resources none → 骆佳俊 |
| 83 | 使用需求管理工具 | 2019-01-05 17:00 → 2019-01-04 20:00 (-1d) | 2019-01-12 18:00 → 2019-01-11 21:00 (-1d) |  | 0d → 1d |  | resources none → 杨以恒 |
| 84 | 《需求规格说明书》评审 |  |  |  |  |  | resources none → 叶柏成 |
| 85 | **项目阶段收尾** |  | 2019-01-13 19:00 → 2019-01-14 21:00 (+1d) | 3d → 4d? |  |  | was named 需求阶段收尾 |
| 86 | 汇总文档 |  |  |  |  |  | resources none → 徐哲远 |
| 87 | 项目总评 |  |  |  |  |  | resources none → 骆佳俊; 沈启航; 徐哲远; 叶柏成; 杨以恒 |
| 88 | 《项目总结报告》 |  |  |  |  |  | resources none → 杨以恒; 沈启航; 骆佳俊; 徐哲远; 叶柏成 |
