How a schedule from MS Project changed from version to version. A marks actual dates.

## Version 1 (data date 2019-01-04, saved 2019-01-12)

| ID | WBS | Task | Duration | Start | Finish | Predecessors | Complete | Total float | Constraint |
| --- | --- | --- | --- | --- | --- | --- | --- | --- | --- |
| 1 | 1 | **软件工程系列课程教学辅助网站系统-项目** | 314.21d? | 2018-09-17 19:00 A | 2019-01-31 20:12 |  | 94% | 0d |  |
| 2 | 1.1 | **项目启动** | 116d | 2018-09-17 19:00 A | 2018-11-03 17:00 A |  | 100% |  |  |
| 3 |  | 人员召集 | 1h | 2018-09-17 19:00 A | 2018-09-17 20:00 A |  | 100% |  |  |
| 4 |  | 课题选定 | 1h | 2018-09-18 20:00 A | 2018-09-18 21:00 A | 3 | 100% |  | start no earlier than 2018-09-18 19:00 |
| 5 |  | 《可行性分析》起草 | 1d | 2018-10-02 10:00 A | 2018-10-02 11:00 A |  | 100% |  | start no earlier than 2018-10-01 19:00 |
| 6 |  | 《项目章程》起草 | 1h | 2018-10-20 19:00 A | 2018-10-20 20:00 A | 4 | 100% |  | finish no earlier than 2018-10-20 20:00 |
| 7 | 1.1.5 | **工具学习** | 84d | 2018-10-01 19:00 | 2018-10-31 21:00 | 4 | 100% |  |  |
| 8 |  | Project的学习 | 6h | 2018-10-01 19:00 A | 2018-10-07 12:00 A | 4 | 100% |  | start no earlier than 2018-10-01 19:00 |
| 9 |  | Git的学习 | 1h | 2018-10-02 10:00 A | 2018-10-02 11:00 A | 4 | 100% |  | start no earlier than 2018-10-01 19:00 |
| 10 |  | AxureRP学习 | 14h | 2018-10-01 19:00 A | 2018-10-07 12:00 A | 4 | 100% |  | start no earlier than 2018-10-01 19:00 |
| 11 | 1.1.5.4 | **UML学习** | 83d | 2018-10-10 19:00 | 2018-11-03 17:00 A | 4 | 100% |  |  |
| 12 |  | 翻转课堂UML概述PPT制作 | 8h | 2018-09-19 20:00 A | 2018-09-24 21:00 A | 4 | 100% |  |  |
| 13 |  | 翻转课堂UML工具PPT制作以及工具学习 | 13h | 2018-10-17 19:00 A | 2018-10-19 18:00 A | 12 | 100% |  |  |
| 14 |  | 翻转课堂UML基础IPPT制作 | 20h | 2018-10-24 19:00 A | 2018-10-31 19:00 A | 13 | 100% |  | start no earlier than 2018-10-24 19:00 |
| 15 |  | 翻转课堂UML基础IIPPT制作 | 16h | 2018-10-31 19:00 A | 2018-11-03 17:00 A | 14 | 100% |  | start no earlier than 2018-10-31 19:00 |
| 16 |  | 启动会议 | 1d | 2018-11-02 16:00 A | 2018-11-02 17:00 A | 6, 15 | 100% |  |  |
| 17 | 1.2 | **项目计划** | 250d | 2018-09-17 20:00 A | 2018-12-06 21:00 A |  | 100% |  |  |
| 18 |  | 资料申请与完善 | 1h | 2018-09-17 20:00 A | 2018-09-17 21:00 A | 3 | 100% |  |  |
| 19 |  | 软硬件环境落实 | 9h | 2018-10-03 11:00 A | 2018-10-07 12:00 A | 18 | 100% |  | finish no earlier than 2018-10-07 20:00 |
| 20 |  | 识别项目干系人 | 1h | 2018-09-19 20:00 A | 2018-09-19 21:00 A | 4 | 100% |  |  |
| 21 |  | 找ISO&GB模板和PPT模板 | 3h | 2018-09-20 20:00 A | 2018-09-22 18:00 A | 20 | 100% |  |  |
| 22 | 1.2.5 | **可行性分析修订** | 217d | 2018-10-07 19:00 A | 2018-12-06 20:00 A | 5 | 100% |  |  |
| 23 |  | 《可行性报告》v0.1.0 | 1h | 2018-10-07 19:00 A | 2018-10-07 20:00 A | 4 | 100% |  |  |
| 24 |  | 《可行性报告》v0.1.1 | 1h | 2018-10-14 19:00 A | 2018-10-14 20:00 A | 23 | 100% |  |  |
| 25 |  | 《可行性报告》v0.1.2 | 2h | 2018-11-07 19:00 A | 2018-11-08 20:00 | 24 | 100% |  |  |
| 26 |  | 《可行性报告》v0.1.3 | 1d | 2018-11-10 19:00 A | 2018-11-10 20:00 A | 25 | 100% |  |  |
| 27 |  | 《可行性报告》v0.1.4 | 1d | 2018-11-28 19:00 A | 2018-11-28 20:00 A | 26 | 100% |  |  |
| 28 |  | 《可行性报告》v0.1.5 | 1d | 2018-12-06 19:00 A | 2018-12-06 20:00 A | 27 | 100% |  |  |
| 29 |  | 《可行性分析》发布 | 0h | 2018-12-06 19:00 A | 2018-12-06 19:00 A | 28 | 100% |  |  |
| 30 | 1.2.7 | **项目章程修订** | 2.67d | 2018-10-21 17:00 A | 2018-10-21 19:40 A | 6 | 100% |  |  |
| 31 |  | 《项目章程》修改v0.1.1 | 1.67h | 2018-10-21 17:00 A | 2018-10-21 18:40 A | 6 | 100% |  |  |
| 32 |  | 《项目章程》修改v0.1.2 | 1h | 2018-10-21 18:40 A | 2018-10-21 19:40 A | 31 | 100% |  |  |
| 33 |  | 《项目章程》发布 | 0h | 2018-10-21 19:40 A | 2018-10-21 19:40 A | 32 | 100% |  |  |
| 34 | 1.2.9 | **制定需求工程项目计划** | 237d | 2018-09-28 19:00 A | 2018-12-06 21:00 A | 6 | 100% |  |  |
| 35 |  | 《需求工程项目计划》起草 | 1h | 2018-09-28 19:00 A | 2018-09-28 20:00 A | 33 | 100% |  | start no earlier than 2018-09-28 19:00 |
| 36 |  | 《需求工程项目计划》修订v0.1.1 | 5h | 2018-09-28 19:00 A | 2018-09-30 18:00 A | 35 | 100% |  |  |
| 37 |  | 《需求工程项目计划》修订v0.1.2 | 20h | 2018-10-17 19:00 A | 2018-10-21 20:00 A | 36 | 100% |  |  |
| 38 |  | 《需求工程项目计划》修订v0.1.3 | 7d | 2018-10-26 19:00 A | 2018-10-28 20:00 A | 37 | 100% |  |  |
| 39 |  | 《需求工程项目计划》修订v0.2.0 | 1h | 2018-10-30 19:00 A | 2018-10-30 20:00 A | 38 | 100% |  |  |
| 40 |  | 《需求工程项目计划》修订v0.2.1 | 2h | 2018-11-04 19:00 A | 2018-11-04 21:00 A | 39 | 100% |  |  |
| 41 |  | 起草《项目范围管理计划》 | 3h | 2018-11-10 19:00 A | 2018-11-10 22:00 A | 35 | 100% |  |  |
| 42 |  | 起草《项目进度管理计划》 | 3h | 2018-11-10 19:00 A | 2018-11-10 22:00 A | 35 | 100% |  |  |
| 43 |  | 起草《项目成本管理计划》 | 3h | 2018-11-10 19:00 A | 2018-11-10 22:00 A | 35 | 100% |  |  |
| 44 |  | 起草《项目质量管理计划》 | 3h | 2018-11-10 19:00 A | 2018-11-10 22:00 A | 35 | 100% |  |  |
| 45 |  | 起草《人力资源管理计划》 | 3h | 2018-11-10 19:00 A | 2018-11-10 22:00 A | 35 | 100% |  |  |
| 46 |  | 起草《沟通管理子计划》 | 2h | 2018-11-10 19:00 A | 2018-11-10 22:00 | 35 | 100% |  |  |
| 47 |  | 起草《风险管理子计划》 | 3h | 2018-11-10 19:00 A | 2018-11-10 22:00 A | 35 | 100% |  |  |
| 48 |  | 起草《采购管理子计划》 | 3h | 2018-11-10 19:00 A | 2018-11-10 22:00 A | 35 | 100% |  |  |
| 49 |  | 起草《配置管理子计划》 | 2h | 2018-11-10 19:00 A | 2018-11-10 21:00 A | 35 | 100% |  | start no earlier than 2018-11-10 19:00 |
| 50 |  | 《需求工程项目计划》修订v0.3.0 | 2h | 2018-11-11 19:00 A | 2018-11-11 21:00 A | 40, 41, 42, 43, 44, 45, 46, 47, 48, 49 | 100% |  |  |
| 51 |  | 《需求工程项目计划》修订v0.3.1 | 2h | 2018-11-12 19:00 A | 2018-11-12 21:00 A | 50 | 100% |  |  |
| 52 |  | 《需求工程项目计划》修订v0.3.2 | 1d | 2018-11-13 19:00 A | 2018-11-13 20:00 A | 51 | 100% |  |  |
| 53 |  | 《需求工程项目计划》修订v0.3.3 | 1h | 2018-11-17 19:00 A | 2018-11-18 18:00 A | 52 | 100% |  |  |
| 54 |  | 《需求工程项目计划》修订v0.3.4 | 1d | 2018-11-18 18:00 A | 2018-11-18 19:00 A | 53 | 100% |  |  |
| 55 |  | 《需求工程项目计划》修订v0.3.5 | 1d | 2018-11-19 18:00 A | 2018-11-19 19:00 A | 54 | 100% |  |  |
| 56 |  | 《需求工程项目计划》修订v0.3.6 | 2d | 2018-11-19 19:00 A | 2018-11-19 21:00 A | 55 | 100% |  |  |
| 57 |  | 《需求工程项目计划》修订v0.3.7 | 1h | 2018-11-28 19:00 A | 2018-11-28 20:00 A | 56 | 100% |  |  |
| 58 |  | 《需求工程项目计划》修订v0.3.8 | 1d | 2018-12-02 19:00 A | 2018-12-02 20:00 A | 57 | 100% |  |  |
| 59 |  | 《需求工程项目计划》修订v0.3.9 | 1h | 2018-12-06 19:00 A | 2018-12-06 20:00 A | 58 | 100% |  |  |
| 60 |  | 《需求工程项目计划》修订v0.3.10 | 1h | 2018-12-06 20:00 A | 2018-12-06 21:00 A | 59 | 100% |  |  |
| 61 |  | 《质量保证计划》发布 | 0h | 2018-11-10 22:00 A | 2018-11-10 22:00 A | 44 | 100% |  |  |
| 62 |  | 《需求工程项目计划》发布 | 0h | 2018-12-06 20:00 A | 2018-12-06 20:00 A | 61, 33, 59 | 100% |  | finish no earlier than 2018-11-28 20:00 |
| 63 | 1.3 | **项目执行** | 278d | 2018-10-01 19:00 A | 2019-01-18 21:00 | 2, 17, 16, 29, 34 | 92% | 0d |  |
| 64 | 1.3.1 | **需求开发** | 268d | 2018-10-01 19:00 A | 2019-01-09 20:30 |  | 99% | 0d |  |
| 65 | 1.3.1.1 | **需求开发第零轮迭代** | 250.5d | 2018-10-01 19:00 A | 2018-12-24 21:00 A | 62, 16 | 100% |  |  |
| 66 |  | 定义产品愿景和项目范围 | 1h | 2018-11-20 19:00 A | 2018-11-20 20:00 A | 54 | 100% |  | start no earlier than 2018-11-20 19:00 |
| 67 | 1.3.1.1.2 | **《愿景与范围》文档** | 249d | 2018-10-01 19:00 A | 2018-12-22 20:00 A | 66 | 100% |  |  |
| 68 |  | 《愿景与范围》文档V0.1.0 | 1h | 2018-10-01 19:00 A | 2018-10-01 20:00 A | 66 | 100% |  |  |
| 69 |  | 《愿景与范围》文档V0.1.1 | 1h | 2018-11-12 19:00 A | 2018-11-14 20:00 | 68 | 100% |  |  |
| 70 |  | 《愿景与范围》文档V0.1.2 | 1h | 2018-11-23 19:00 A | 2018-11-24 20:00 A | 69 | 100% |  |  |

| ID | WBS | Task | Duration | Start | Finish | Predecessors | Complete | Total float | Constraint |
| --- | --- | --- | --- | --- | --- | --- | --- | --- | --- |
| 71 | 1.3.1.1.2.4 | **《愿景与范围》文档V0.1.3** | 9h | 2018-11-30 19:00 | 2018-12-02 20:00 | 70 | 100% |  |  |
| 72 |  | 绘制特性图 | 1h | 2018-11-20 20:00 A | 2018-11-20 21:00 A | 66 | 100% |  |  |
| 73 |  | 《愿景与范围》文档V0.1.4 | 1h | 2018-12-05 19:00 A | 2018-12-05 20:00 A | 71 | 100% |  |  |
| 74 | 1.3.1.1.2.6 | **《愿景与范围》文档V1.0.0** | 1h | 2018-12-22 19:00 A | 2018-12-22 20:00 A | 73 | 100% |  |  |
| 75 |  | 绘制上下文图 | 1d | 2018-12-22 19:00 A | 2018-12-22 20:00 A | 66 | 100% |  |  |
| 76 |  | 识别用户类型及其特征 | 1h | 2018-12-24 20:00 A | 2018-12-24 21:00 A | 67, 75, 72 | 100% |  | start no earlier than 2018-11-24 19:00 |
| 77 | 1.3.1.1.4 | **为每类用户选出用户代表** | 77d | 2018-11-22 19:00 A | 2018-12-22 19:00 A | 76 | 100% |  |  |
| 78 | 1.3.1.1.4.1 | **用户分类** | 1h | 2018-11-24 20:00 | 2018-11-24 21:00 | 76 | 100% |  |  |
| 79 |  | 《用户群分类》V0.1.0 | 1d | 2018-11-25 19:00 A | 2018-11-25 20:00 A | 76 | 100% |  |  |
| 80 |  | 《用户群分类》V0.1.1 | 1d | 2018-12-19 19:00 A | 2018-12-19 20:00 A | 79 | 100% |  |  |
| 81 |  | 《用户群分类》V1.0.0 | 5d | 2018-12-19 20:00 A | 2018-12-22 19:00 A | 80 | 100% |  |  |
| 82 |  | 确定用户代表 | 1h | 2018-11-22 19:00 A | 2018-11-22 20:00 A | 76 | 100% |  |  |
| 83 |  | 设定不同的用户级别 | 1h | 2018-11-23 19:00 A | 2018-11-23 20:00 A | 76 | 100% |  |  |
| 84 |  | 识别系统事件和反应 | 1h | 2018-12-23 16:30 A | 2018-12-24 20:30 A | 77, 82, 83, 81 | 100% |  |  |
| 85 |  | 举办需求访谈 | 1h | 2018-11-24 19:00 A | 2018-11-24 20:00 A | 84 | 100% |  |  |
| 86 |  | 检查现有系统在需求方面的报告 | 1h | 2018-11-25 19:00 A | 2018-11-25 20:00 A | 85 | 100% |  | start no earlier than 2018-11-25 19:00 |
| 87 |  | 重用现有需求 | 1h | 2018-11-26 19:00 A | 2018-11-26 20:00 A | 86 | 100% |  | start no earlier than 2018-11-26 19:00 |
| 88 | 1.3.1.2 | **需求开发第一轮迭代** | 73.5d | 2018-11-23 19:00 A | 2018-12-23 20:00 A | 65, 87 | 100% |  |  |
| 89 |  | 使用需求文档模板 | 1h | 2018-11-26 19:00 A | 2018-11-26 20:00 A | 65 | 100% |  |  |
| 90 |  | 创建用户界面及技术原型 | 20h | 2018-11-26 19:00 A | 2018-12-20 21:00 A | 89 | 100% |  |  |
| 91 | 1.3.1.2.3 | **举办需求访谈** | 6d | 2018-11-25 19:00 A | 2018-11-26 21:00 | 90SS | 100% |  |  |
| 92 |  | 明确需求来源 | 1h | 2018-11-25 19:00 A | 2018-11-25 20:00 A | 90 | 100% |  |  |
| 93 |  | 记录业务规则 | 1h | 2018-11-25 19:00 A | 2018-11-25 20:00 A | 92 | 100% |  |  |
| 94 |  | 记录非功能需求 | 1h | 2018-11-25 19:00 A | 2018-11-25 20:00 A | 93 | 100% |  |  |
| 95 |  | 需求评审 | 1h | 2018-11-25 19:00 A | 2018-11-25 20:00 A | 94 | 100% |  |  |
| 96 |  | 测试需求 | 1h | 2018-11-25 19:00 A | 2018-11-25 20:00 A | 95 | 100% |  |  |
| 97 |  | 定义验收标准 | 1h | 2018-11-25 19:00 A | 2018-11-25 20:00 A | 96 | 100% |  | start no earlier than 2018-11-25 19:00 |
| 98 | 1.3.1.2.4 | **建立数据字典** | 1h | 2018-11-25 19:00 | 2018-11-25 20:00 | 91, 97 | 100% |  |  |
| 99 |  | 《数据字典》V0.1.0 | 1d | 2018-11-26 21:00 A | 2018-11-26 22:00 A | 91 | 100% |  |  |
| 100 |  | 《数据字典》V0.2.0 | 6h | 2018-12-20 19:00 A | 2018-12-22 20:00 A | 99 | 100% |  |  |
| 101 | 1.3.1.2.5 | **编写《需求规格说明书》** | 73.5d | 2018-11-23 19:00 A | 2018-12-23 20:00 A | 98SS | 100% |  |  |
| 102 |  | 编写《需求规格说明书》V0.1.0 | 1h | 2018-11-23 19:00 A | 2018-11-23 20:00 A | 99SS | 100% |  |  |
| 103 |  | 编写《需求规格说明书》V0.2.0 | 10.5h | 2018-12-18 19:00 A | 2018-12-23 20:00 A | 102 | 100% |  |  |
| 104 | 1.3.1.2.6 | **编写《测试用例》** | 1h | 2018-12-20 20:00 | 2018-12-20 21:00 | 103 | 100% |  |  |
| 105 |  | App端测试用例 | 1h | 2018-11-26 18:30 A | 2018-11-26 19:30 A | 103 | 100% |  |  |
| 106 |  | Web端测试用例 | 1h | 2018-11-26 18:30 A | 2018-11-26 19:30 A | 103 | 100% |  |  |
| 107 |  | 编写《用户手册》 | 1h | 2018-12-21 20:00 A | 2018-12-21 21:00 A | 104 | 100% |  | start no earlier than 2018-11-25 19:00 |
| 108 | 1.3.1.3 | **需求开发第二轮迭代** | 23d | 2018-12-20 19:00 A | 2019-01-09 20:30 | 88, 107 | 95% | 0d |  |
| 109 |  | 修改用户界面及技术原型 | 13.5h | 2018-12-24 20:00 A | 2019-01-04 21:00 | 107, 88 | 93% |  |  |
| 110 | 1.3.1.3.2 | **举办需求访谈** | 1h | 2019-01-08 20:30 | 2019-01-09 20:30 | 109 | 100% |  |  |
| 111 |  | 需求评审 | 1h | 2018-12-29 19:00 A | 2018-12-29 20:00 A | 109SS | 100% |  |  |
| 112 |  | JAD会议 | 1d | 2019-01-04 19:00 A | 2019-01-04 20:00 A |  | 100% |  |  |
| 113 |  | 测试需求 | 1h | 2018-12-30 19:00 A | 2018-12-30 20:00 A | 111 | 100% |  |  |
| 114 |  | 重新定义验收标准 | 1h | 2018-12-31 19:00 A | 2018-12-31 20:00 A | 113 | 100% |  |  |
| 115 |  | 需求打分 | 1h | 2019-01-01 19:00 A | 2019-01-01 20:00 A | 114 | 100% |  |  |
| 116 | 1.3.1.3.3 | **修改《需求规格说明书》** | 1h | 2018-12-30 19:00 | 2018-12-30 20:00 | 115 | 99% |  |  |
| 117 |  | 编写《需求规格说明书》V0.3.0 | 1h | 2018-12-24 20:00 A | 2018-12-24 21:00 A | 103 | 100% |  |  |
| 118 | 1.3.1.3.4 | **修改《用户手册》** | 1h | 2018-12-20 19:00 A | 2018-12-20 20:00 A |  | 100% |  |  |
| 119 |  | 《用户手册》V0.2.0 | 1d | 2018-12-20 19:00 A | 2018-12-23 20:00 A | 107 | 100% |  |  |
| 120 | 1.3.2 | **需求管理** | 13d | 2019-01-05 19:00 | 2019-01-18 21:00 | 64, 118 |  |  |  |
| 121 | 1.3.2.1 | **建立一个需求变更控制流程** | 1h | 2019-01-05 19:00 | 2019-01-07 20:30 | 108, 118, 117 |  |  |  |
| 122 |  | 《CCB章程》V0.1.0 | 1h | 2019-01-07 19:00 | 2019-01-07 20:00 | 108, 118, 117 |  |  |  |
| 123 | 1.3.2.2 | **对需求变更进行影响分析** | 3.5h | 2019-01-06 16:30 | 2019-01-06 20:00 | 121 |  |  |  |
| 124 |  | 撰写《需求变更影响分析清单》 | 1h? | 2019-01-07 20:00 | 2019-01-07 21:00 | 122 |  |  |  |
| 125 |  | 《需求变更影响分析清单》V0.1.1 | 1h? | 2019-01-08 19:00 | 2019-01-08 20:00 | 122 |  |  |  |
| 126 | 1.3.2.3 | **建立基线并控制需求集合版本** | 0h | 2019-01-07 19:00 | 2019-01-07 19:00 | 123 |  |  |  |
| 127 |  | 需求基线1.0.0版 | 0.1h | 2019-01-07 19:00 | 2019-01-07 19:06 |  |  |  |  |
| 128 |  | 需求基线1.1.0版 | 0.1h | 2019-01-07 19:00 | 2019-01-07 19:06 |  |  |  |  |
| 129 | 1.3.2.4 | **维护需求变更的历史记录** | 0h | 2019-01-08 20:00 | 2019-01-08 20:00 | 126 |  |  |  |
| 130 |  | 撰写《需求管理计划》 | 1h | 2019-01-07 19:00 | 2019-01-07 20:00 | 124 |  |  |  |
| 131 |  | 《需求管理计划》V0.1.1 | 1h | 2019-01-08 20:00 | 2019-01-08 21:00 | 125 |  |  |  |
| 132 |  | 跟踪每个需求的状态 | 0h | 2019-01-09 20:00 | 2019-01-09 20:00 | 129 |  |  |  |
| 133 | 1.3.2.6 | **维护一个需求可跟踪矩阵** | 1h | 2019-01-10 19:00 | 2019-01-10 20:00 | 132 |  |  |  |
| 134 |  | 生成《需求跟踪矩阵》 | 1h | 2019-01-07 19:00 | 2019-01-07 20:00 |  |  |  |  |
| 135 |  | 使用需求管理工具 | 1h | 2019-01-11 19:00 | 2019-01-11 20:00 | 133 |  |  | start no earlier than 2019-01-11 19:00 |
| 136 | 1.4 | **项目控制** | 300.21d | 2018-09-28 19:00 A | 2019-01-29 20:12 | 63 | 84% |  |  |
| 137 | 1.4.1 | **组内评审** | 163d | 2018-11-04 19:00 A | 2019-01-08 20:30 | 2, 17 | 82% |  |  |
| 138 |  | 第一次周末评审 | 0.5h | 2018-11-04 19:00 A | 2018-11-04 19:30 A | 154 | 100% |  |  |
| 139 |  | 第二次周末评审 | 0.5h | 2018-11-11 19:00 A | 2018-11-11 19:30 A | 155 | 100% |  |  |
| 140 |  | 第三次周末评审 | 0.5h | 2018-11-18 19:00 A | 2018-11-19 18:30 A | 156 | 100% |  |  |

| ID | WBS | Task | Duration | Start | Finish | Predecessors | Complete | Constraint |
| --- | --- | --- | --- | --- | --- | --- | --- | --- |
| 141 |  | 第四次周末评审 | 0.5h | 2018-11-25 19:00 A | 2018-11-25 19:30 A | 157 | 100% |  |
| 142 |  | 第五次周末评审 | 0.5h | 2018-12-02 19:00 A | 2018-12-02 19:30 A | 158 | 100% |  |
| 143 |  | 第六次周末评审 | 0.5h | 2018-12-09 19:00 A | 2018-12-09 19:30 A | 159 | 100% |  |
| 144 |  | 第七次周末评审 | 0.5h | 2018-12-16 19:00 A | 2018-12-16 19:30 A | 160 | 100% |  |
| 145 |  | 第八次周末评审 | 0.5h | 2018-12-23 19:00 A | 2018-12-23 19:30 A | 161 | 100% |  |
| 146 |  | 第九次周末评审 | 0.5h | 2018-12-30 19:00 A | 2018-12-30 19:30 A | 162 | 100% |  |
| 147 |  | 第十次周末评审 | 0.5h | 2019-01-06 19:00 | 2019-01-06 19:30 | 163 |  |  |
| 148 |  | 第十一次周末评审 | 0.5h | 2019-01-08 20:00 | 2019-01-08 20:30 | 164 |  |  |
| 149 | 1.4.2 | **小组会议** | 300.21d | 2018-09-28 19:00 A | 2019-01-29 20:12 | 2, 17 | 88% |  |
| 150 |  | 第一次正式会议 | 0.5h | 2018-09-28 19:00 A | 2018-09-28 19:30 A | 4 | 100% |  |
| 151 |  | 第二次正式会议 | 0.5h | 2018-10-08 19:00 A | 2018-10-08 19:30 A | 8, 9, 10, 19, 21, 150 | 100% |  |
| 152 |  | 第三次正式会议 | 0.5h | 2018-10-15 19:00 A | 2018-10-15 19:30 A | 12, 151 | 100% | start no earlier than 2018-10-15 19:00 |
| 153 |  | 第四次正式会议 | 0.5h | 2018-10-23 19:00 A | 2018-10-23 19:30 A | 13, 152, 168 | 100% |  |
| 154 |  | 第五次正式会议 | 0.5h | 2018-10-30 19:00 A | 2018-10-30 19:30 A | 14, 153 | 100% |  |
| 155 |  | 第六次正式会议 | 0.5h | 2018-11-05 19:00 A | 2018-11-05 19:30 A | 138 | 100% |  |
| 156 |  | 第七次正式会议 | 0.5h | 2018-11-13 19:00 A | 2018-11-13 19:30 A | 139 | 100% |  |
| 157 |  | 第八次正式会议 | 0.5h | 2018-11-20 19:00 A | 2018-11-20 19:30 A | 156, 54, 140 | 100% |  |
| 158 |  | 第九次正式会议 | 0.5h | 2018-11-27 19:00 A | 2018-11-27 19:30 A | 157, 166, 141 | 100% |  |
| 159 |  | 第十次正式会议 | 0.5h | 2018-12-04 19:00 A | 2018-12-04 19:30 A | 176, 142 | 100% |  |
| 160 |  | 第十一次正式会议 | 0.5h | 2018-12-11 19:00 A | 2018-12-11 19:30 A | 159, 143 | 100% |  |
| 161 |  | 第十二次正式会议 | 0.5h | 2018-12-18 19:00 A | 2018-12-18 19:30 A | 160, 144 | 100% |  |
| 162 |  | 第十三次正式会议 | 0.5h | 2018-12-25 19:00 A | 2018-12-25 19:30 A | 161, 145 | 100% |  |
| 163 |  | 第十四次正式会议 | 0.5h | 2019-01-01 19:00 A | 2019-01-01 19:30 A | 162, 146 | 100% |  |
| 164 |  | 第十五次正式会议 | 0.5h | 2019-01-08 19:00 | 2019-01-08 19:30 | 163, 147 |  |  |
| 165 |  | 第十六次正式会议 | 0.5h | 2019-01-15 19:00 | 2019-01-15 19:30 |  |  |  |
| 166 | 1.4.3 | **客户用户访谈系列** | 1d | 2018-11-20 21:00 | 2018-11-20 22:00 | 67 | 99% |  |
| 167 | 1.4.3.1 | **客户访谈** | 114d | 2018-10-21 19:00 A | 2018-11-21 20:00 A | 67 | 100% |  |
| 168 |  | 需求咨询 | 1d | 2018-10-21 19:00 A | 2018-10-21 20:00 A | 67 | 100% |  |
| 169 |  | 愿景与范围访谈 | 1d | 2018-11-21 19:00 A | 2018-11-21 20:00 A | 168 | 100% |  |
| 170 | 1.4.3.2 | **用户访谈** | 1d | 2018-12-05 19:00 A | 2018-12-05 20:00 | 67 | 100% |  |
| 171 |  | 教师用户功能访谈 | 1h | 2018-12-05 19:00 A | 2018-12-05 20:00 A | 67 | 100% |  |
| 172 |  | 管理员用户功能访谈 | 1h | 2018-12-22 19:00 A | 2018-12-22 20:00 A |  | 100% |  |
| 173 | 1.4.4 | **客户评审** | 163d | 2018-11-04 19:00 | 2019-01-08 20:30 | 33 | 67% |  |
| 174 | 1.4.4.1 | **《需求工程项目计划》评审** | 120d | 2018-11-09 19:00 A | 2018-12-07 20:00 A |  | 100% |  |
| 175 |  | 《需求工程计划》第一次评审 | 1d | 2018-11-09 19:00 A | 2018-11-09 20:00 A | 155 | 100% |  |
| 176 |  | 《需求工程计划》第二次评审 | 1d | 2018-11-28 19:00 A | 2018-11-28 20:00 A | 169, 175 | 100% |  |
| 177 |  | 《需求工程计划》第三次评审 | 1d | 2018-12-07 19:00 A | 2018-12-07 20:00 A | 176 | 100% |  |
| 178 |  | 《软件需求规格说明书》评审 | 1d | 2019-01-02 19:00 A | 2019-01-02 20:00 A | 177 | 100% |  |
| 179 |  | 《需求变更管理》评审 | 1h | 2019-01-11 19:00 | 2019-01-11 20:00 | 178 |  |  |
| 180 |  | 《需求工程项目收尾》评审 | 1d? | 2019-01-16 19:00 | 2019-01-16 20:00 | 179 |  |  |
| 181 | 1.4.5 | **团队建设** | 1h | 2018-12-07 20:00 | 2018-12-07 21:00 | 2, 17 | 100% |  |
| 182 |  | 第一次地锅鸡团建 | 1d | 2018-12-06 21:00 A | 2018-12-06 22:00 A | 2, 17 | 100% |  |
| 183 | 1.5 | **项目结尾** | 24.21d? | 2019-01-13 18:00 | 2019-01-31 20:12 | 137, 166, 173, 149, 171, 135, 63, 182, 172, 177, 164 |  |  |
| 184 | 1.5.1 | **汇总文档** | 0d | 2019-01-14 19:00 | 2019-01-14 19:00 | 135, 63, 148, 180SS |  |  |
| 185 |  | 《汇总文档》 | 0h | 2019-01-13 18:00 | 2019-01-13 18:00 | 164 |  |  |
| 186 |  | 项目总评 | 1h | 2019-01-14 20:00 | 2019-01-14 21:00 | 184, 185 |  |  |
| 187 |  | 项目相关文档修改 | 1h | 2019-01-15 20:00 | 2019-01-15 21:00 | 186 |  |  |
| 188 | 1.5.4 | **《项目总结报告》** | 2h | 2019-01-14 20:00 | 2019-01-15 21:00 | 186 |  |  |
| 189 |  | 《项目总结报告》评审修改 | 1h | 2019-01-14 20:00 | 2019-01-14 21:00 | 187 |  |  |
| 190 |  | 散伙饭 | 2d? | 2019-01-29 20:12 | 2019-01-31 20:12 | 188 |  |  |

## Version 2 (data date 2019-01-04, saved 2019-01-13)

Note of the change: 1更新了甘特图

Last finish stays 2019-01-31.

Removed: 165 第十六次正式会议

Changed:

| ID | Task | Start | Finish | Complete | Predecessors | Other |
| --- | --- | --- | --- | --- | --- | --- |
| 1 | **软件工程系列课程教学辅助网站系统-项目** |  |  | 94% → 95% |  |  |
| 103 | 编写《需求规格说明书》V0.2.0 |  |  |  | 102 → 102, 100 |  |
| 107 | 编写《用户手册》 |  |  |  | 104 → 104, 105, 106 |  |
| 120 | **需求管理** |  |  |  | 64, 118 → 64, 118, 119 |  |
| 123 | **对需求变更进行影响分析** |  |  |  |  | resources 叶柏成 → none |
| 125 | 《需求变更影响分析清单》V0.1.1 | 2019-01-08 19:00 → 2019-01-07 20:00 (-1d) | 2019-01-08 20:00 → 2019-01-07 21:00 (-1d) |  |  |  |
| 126 | **建立基线并控制需求集合版本** |  |  |  |  | resources 杨以恒 → none |
| 127 | 需求基线1.0.0版 | 2019-01-07 19:00 → 2019-01-08 20:00 (+1d) | 2019-01-07 19:06 → 2019-01-08 20:06 (+1d) |  | none → 124 |  |
| 128 | 需求基线1.1.0版 | 2019-01-07 19:00 → 2019-01-08 20:06 (+1d) | 2019-01-07 19:06 → 2019-01-08 20:12 (+1d) |  | none → 127 |  |
| 130 | 撰写《需求管理计划》 | 2019-01-07 19:00 → 2019-01-08 20:06 (+1d) | 2019-01-07 20:00 → 2019-01-09 20:06 (+2d) |  | 124 → 127 |  |
| 131 | 《需求管理计划》V0.1.1 | 2019-01-08 20:00 → 2019-01-09 20:06 (+1d) | 2019-01-08 21:00 → 2019-01-10 20:06 (+2d) |  | 125 → 130, 128 |  |
| 132 | 跟踪每个需求的状态 | 2019-01-09 20:00 → 2019-01-10 20:06 (+1d) | 2019-01-09 20:00 → 2019-01-10 20:06 (+1d) |  | 129 → 129, 131 |  |
| 134 | 生成《需求跟踪矩阵》 | 2019-01-07 19:00 → 2019-01-09 20:06 (+2d) | 2019-01-07 20:00 → 2019-01-10 20:06 (+3d) |  | none → 130 |  |
| 135 | 使用需求管理工具 | 2019-01-11 19:00 → 2019-01-10 20:06 (-1d) | 2019-01-11 20:00 → 2019-01-11 20:06 |  | 133 → 133, 134 |  |
| 136 | **项目控制** |  |  | 84% → 85% |  |  |
| 149 | **小组会议** |  |  | 88% → 93% |  |  |
| 164 | 第十五次正式会议 | 2019-01-08 19:00 → 2019-01-07 19:00 (-1d) | 2019-01-08 19:30 → 2019-01-07 19:30 (-1d) |  |  |  |

## Version 3 (data date 2019-01-04, saved 2019-01-13)

Note of the change: 更新了甘特图

Last finish stays 2019-01-31.

Changed:

| ID | Task | Finish | Duration | Other |
| --- | --- | --- | --- | --- |
| 19 | 软硬件环境落实 | 2018-10-07 12:00 A → 2018-10-06 11:00 A (-1d) | 9h → 6h |  |
| 40 | 《需求工程项目计划》修订v0.2.1 |  |  | resources 沈启航 → 沈启航 [60%] |

## Version 4 (data date 2019-01-13, saved 2019-01-13)

Note of the change: 更新了甘特图

Last finish stays 2019-01-31. Complete tasks 125 → 140.

Changed:

| ID | Task | Start | Finish | Duration | Complete | Total float |
| --- | --- | --- | --- | --- | --- | --- |
| 1 | **软件工程系列课程教学辅助网站系统-项目** |  |  |  | 95% → 98% |  |
| 2 | **项目启动** |  | 2018-11-03 17:00 A → 2018-11-03 17:00 |  | 100% → 99% | none → 0d |
| 7 | **工具学习** |  |  |  | 100% → 99% |  |
| 11 | **UML学习** |  | 2018-11-03 17:00 A → 2018-11-03 17:00 |  | 100% → 98% |  |
| 15 | 翻转课堂UML基础IIPPT制作 |  | 2018-11-03 17:00 A → 2018-11-03 17:00 |  | 100% → 95% |  |
| 63 | **项目执行** |  |  |  | 92% → 99% |  |
| 108 | **需求开发第二轮迭代** |  |  |  | 95% → 99% |  |
| 109 | 修改用户界面及技术原型 |  | 2019-01-04 21:00 A |  | 93% → 100% |  |
| 120 | **需求管理** |  |  |  | 0% → 100% |  |
| 121 | **建立一个需求变更控制流程** |  |  |  | 0% → 100% |  |
| 122 | 《CCB章程》V0.1.0 | 2019-01-07 19:00 A | 2019-01-07 20:00 A |  | 0% → 100% |  |
| 123 | **对需求变更进行影响分析** |  |  |  | 0% → 100% |  |
| 124 | 撰写《需求变更影响分析清单》 | 2019-01-07 20:00 A | 2019-01-07 21:00 A | 1h? → 1h | 0% → 100% |  |
| 125 | 《需求变更影响分析清单》V0.1.1 | 2019-01-07 20:00 A | 2019-01-07 21:00 A | 1h? → 1h | 0% → 100% |  |
| 126 | **建立基线并控制需求集合版本** |  |  |  | 0% → 100% |  |
| 127 | 需求基线1.0.0版 | 2019-01-08 20:00 A | 2019-01-08 20:06 A |  | 0% → 100% |  |
| 128 | 需求基线1.1.0版 | 2019-01-08 20:06 A | 2019-01-08 20:12 A |  | 0% → 100% |  |
| 129 | **维护需求变更的历史记录** | 2019-01-08 20:00 A |  |  | 0% → 100% |  |
| 130 | 撰写《需求管理计划》 | 2019-01-08 20:06 A | 2019-01-09 20:06 A |  | 0% → 100% |  |
| 131 | 《需求管理计划》V0.1.1 | 2019-01-09 20:06 A | 2019-01-10 20:06 A |  | 0% → 100% |  |
| 132 | 跟踪每个需求的状态 | 2019-01-10 20:06 A | 2019-01-10 20:06 A |  | 0% → 100% |  |
| 133 | **维护一个需求可跟踪矩阵** |  |  |  | 0% → 100% |  |
| 134 | 生成《需求跟踪矩阵》 | 2019-01-09 20:06 A | 2019-01-10 20:06 A |  | 0% → 100% |  |
| 135 | 使用需求管理工具 | 2019-01-10 20:06 A | 2019-01-11 20:06 A |  | 0% → 100% |  |
| 136 | **项目控制** |  |  |  | 85% → 96% |  |
| 137 | **组内评审** |  | 2019-01-08 20:30 A |  | 82% → 100% |  |
| 147 | 第十次周末评审 | 2019-01-06 19:00 A | 2019-01-06 19:30 A |  | 0% → 100% |  |
| 148 | 第十一次周末评审 | 2019-01-08 20:00 A | 2019-01-08 20:30 A |  | 0% → 100% |  |
| 149 | **小组会议** |  |  |  | 93% → 100% |  |
| 164 | 第十五次正式会议 | 2019-01-07 19:00 A | 2019-01-07 19:30 A |  | 0% → 100% |  |
| 172 | **客户评审** |  |  |  | 67% → 83% |  |
| 178 | 《需求变更管理》评审 | 2019-01-11 19:00 A | 2019-01-11 20:00 A |  | 0% → 100% |  |
| 182 | **项目结尾** | 2019-01-13 18:00 A |  |  |  |  |
| 183 | **汇总文档** |  | 2019-01-14 19:00 A |  | 0% → 100% |  |
| 184 | 《汇总文档》 | 2019-01-13 18:00 A | 2019-01-13 18:00 A |  | 0% → 100% |  |
| 187 | **《项目总结报告》** | 2019-01-14 20:00 → 2019-01-15 19:00 (+1d) |  |  |  |  |
| 188 | 《项目总结报告》评审修改 | 2019-01-14 20:00 → 2019-01-16 19:00 (+2d) | 2019-01-14 21:00 → 2019-01-16 20:00 (+2d) |  |  |  |
| 189 | 散伙饭 | 2019-01-29 20:12 → 2019-01-27 19:00 (-2d) | 2019-01-31 20:12 → 2019-01-27 20:00 (-4d) | 2d? → 1d |  |  |
