How a schedule from MS Project changed from version to version. A marks actual dates.

## Version 1 (data date 2018-12-12, saved 2018-12-23)

Note of the change: Create PRD2018-G03-甘特图.mpp

| ID | WBS | Task | Duration | Start | Finish | Predecessors | Complete | Total float | Constraint |
| --- | --- | --- | --- | --- | --- | --- | --- | --- | --- |
| 1 | 1 | **软件工程系列课程教学辅助网站系统-项目** | 314.21d? | 2018-09-17 19:00 A | 2019-01-31 20:12 |  | 75% | 0d |  |
| 2 | 1.1 | **项目启动** | 116d | 2018-09-17 19:00 A | 2018-11-03 17:00 A |  | 100% |  |  |
| 3 |  | 人员召集 | 1h | 2018-09-17 19:00 A | 2018-09-17 20:00 A |  | 100% |  |  |
| 4 |  | 课题选定 | 1h | 2018-09-18 20:00 A | 2018-09-18 21:00 A | 3 | 100% |  | start no earlier than 2018-09-18 19:00 |
| 5 |  | 《可行性分析》起草 | 1d | 2018-10-02 10:00 A | 2018-10-02 11:00 A |  | 100% |  | start no earlier than 2018-10-01 19:00 |
| 6 |  | 《项目章程》起草 | 1h | 2018-10-20 19:00 A | 2018-10-20 20:00 A | 4 | 100% |  | finish no earlier than 2018-10-20 20:00 |
| 7 | 1.1.5 | **工具学习** | 84d | 2018-10-01 19:00 | 2018-10-31 21:00 | 4 | 100% |  |  |
| 8 |  | Project的学习 | 6h | 2018-10-01 19:00 A | 2018-10-07 12:00 A | 4 | 100% |  | start no earlier than 2018-10-01 19:00 |
| 9 |  | Git的学习 | 1h | 2018-10-02 10:00 A | 2018-10-02 11:00 A | 4 | 100% |  | start no earlier than 2018-10-01 19:00 |
| 10 |  | AxureRP学习 | 14h | 2018-10-01 19:00 A | 2018-10-07 12:00 A | 4 | 100% |  | start no earlier than 2018-10-01 19:00 |
| 11 | 1.1.5.4 | **UML学习** | 83d | 2018-10-10 19:00 | 2018-11-03 17:00 A | 4 | 100% |  |  |
| 12 |  | 翻转课堂UML概述PPT制作 | 8h | 2018-09-19 20:00 A | 2018-09-24 21:00 A | 4 | 100% |  |  |
| 13 |  | 翻转课堂UML工具PPT制作以及工具学习 | 13h | 2018-10-17 19:00 A | 2018-10-19 18:00 A | 12 | 100% |  |  |
| 14 |  | 翻转课堂UML基础IPPT制作 | 20h | 2018-10-24 19:00 A | 2018-10-31 19:00 A | 13 | 100% |  | start no earlier than 2018-10-24 19:00 |
| 15 |  | 翻转课堂UML基础IIPPT制作 | 16h | 2018-10-31 19:00 A | 2018-11-03 17:00 A | 14 | 100% |  | start no earlier than 2018-10-31 19:00 |
| 16 |  | 启动会议 | 1d | 2018-11-02 16:00 A | 2018-11-02 17:00 A | 6, 15 | 100% |  |  |
| 17 | 1.2 | **项目计划** | 250d | 2018-09-17 20:00 A | 2018-12-06 21:00 A |  | 100% |  |  |
| 18 |  | 资料申请与完善 | 1h | 2018-09-17 20:00 A | 2018-09-17 21:00 A | 3 | 100% |  |  |
| 19 |  | 软硬件环境落实 | 9h | 2018-10-03 11:00 A | 2018-10-07 12:00 A | 18 | 100% |  | finish no earlier than 2018-10-07 20:00 |
| 20 |  | 识别项目干系人 | 1h | 2018-09-19 20:00 A | 2018-09-19 21:00 A | 4 | 100% |  |  |
| 21 |  | 找ISO&GB模板和PPT模板 | 3h | 2018-09-20 20:00 A | 2018-09-22 18:00 A | 20 | 100% |  |  |
| 22 | 1.2.5 | **可行性分析修订** | 229d | 2018-10-01 19:00 A | 2018-12-06 20:00 A | 5 | 100% |  |  |
| 23 |  | 《可行性报告》v0.1.0 | 1h | 2018-10-01 19:00 A | 2018-10-01 20:00 A | 4 | 100% |  |  |
| 24 |  | 《可行性报告》v0.1.1 | 1h | 2018-10-07 19:00 A | 2018-10-07 20:00 A | 23 | 100% |  |  |
| 25 |  | 《可行性报告》v0.1.2 | 1h | 2018-11-07 19:00 A | 2018-11-07 20:00 A | 24 | 100% |  |  |
| 26 |  | 《可行性报告》v0.1.3 | 1d | 2018-11-10 19:00 A | 2018-11-10 20:00 A | 25 | 100% |  |  |
| 27 |  | 《可行性报告》v0.1.4 | 1d | 2018-11-10 20:00 A | 2018-11-10 21:00 A | 26 | 100% |  |  |
| 28 |  | 《可行性报告》v0.1.5 | 1d | 2018-12-06 19:00 A | 2018-12-06 20:00 A | 27 | 100% |  |  |
| 29 |  | 《可行性分析》发布 | 0h | 2018-12-06 19:00 A | 2018-12-06 19:00 A | 28 | 100% |  |  |
| 30 | 1.2.7 | **项目章程修订** | 2.67d | 2018-10-21 17:00 A | 2018-10-21 19:40 A | 6 | 100% |  |  |
| 31 |  | 《项目章程》修改v0.1.1 | 1.67h | 2018-10-21 17:00 A | 2018-10-21 18:40 A | 6 | 100% |  |  |
| 32 |  | 《项目章程》修改v0.1.2 | 1h | 2018-10-21 18:40 A | 2018-10-21 19:40 A | 31 | 100% |  |  |
| 33 |  | 《项目章程》发布 | 0h | 2018-10-21 19:40 A | 2018-10-21 19:40 A | 32 | 100% |  |  |
| 34 | 1.2.9 | **制定需求工程项目计划** | 236d | 2018-09-28 19:00 A | 2018-12-06 20:00 A | 6 | 100% |  |  |
| 35 |  | 《需求工程项目计划》起草 | 1h | 2018-09-28 19:00 A | 2018-09-28 20:00 A | 33 | 100% |  | start no earlier than 2018-09-28 19:00 |
| 36 |  | 《需求工程项目计划》修订v0.1.1 | 5h | 2018-09-29 17:00 A | 2018-10-01 11:00 A | 35 | 100% |  |  |
| 37 |  | 《需求工程项目计划》修订v0.1.2 | 14h | 2018-10-17 19:00 A | 2018-10-19 19:00 A | 36 | 100% |  |  |
| 38 |  | 《需求工程项目计划》修订v0.1.3 | 7d | 2018-10-26 19:00 A | 2018-10-28 20:00 A | 37 | 100% |  |  |
| 39 |  | 《需求工程项目计划》修订v0.2.0 | 1h | 2018-10-30 19:00 A | 2018-10-30 20:00 A | 38 | 100% |  |  |
| 40 |  | 《需求工程项目计划》修订v0.2.1 | 2h | 2018-11-04 19:00 A | 2018-11-04 21:00 A | 39 | 100% |  |  |
| 41 |  | 起草《项目范围管理计划》 | 3h | 2018-11-10 19:00 A | 2018-11-10 22:00 A | 35 | 100% |  |  |
| 42 |  | 起草《项目进度管理计划》 | 3h | 2018-11-10 19:00 A | 2018-11-10 22:00 A | 35 | 100% |  |  |
| 43 |  | 起草《项目成本管理计划》 | 3h | 2018-11-10 19:00 A | 2018-11-10 22:00 A | 35 | 100% |  |  |
| 44 |  | 起草《项目质量管理计划》 | 3h | 2018-11-10 19:00 A | 2018-11-10 22:00 A | 35 | 100% |  |  |
| 45 |  | 起草《人力资源管理计划》 | 3h | 2018-11-10 19:00 A | 2018-11-10 22:00 A | 35 | 100% |  |  |
| 46 |  | 起草《沟通管理子计划》 | 2h | 2018-11-10 19:00 A | 2018-11-10 22:00 | 35 | 100% |  |  |
| 47 |  | 起草《风险管理子计划》 | 3h | 2018-11-10 19:00 A | 2018-11-10 22:00 A | 35 | 100% |  |  |
| 48 |  | 起草《采购管理子计划》 | 3h | 2018-11-10 19:00 A | 2018-11-10 22:00 A | 35 | 100% |  |  |
| 49 |  | 起草《配置管理子计划》 | 2h | 2018-11-10 19:00 A | 2018-11-10 21:00 A | 35 | 100% |  | start no earlier than 2018-11-10 19:00 |
| 50 |  | 《需求工程项目计划》修订v0.3.0 | 2h | 2018-11-11 19:00 A | 2018-11-11 21:00 A | 40, 41, 42, 43, 44, 45, 46, 47, 48, 49 | 100% |  |  |
| 51 |  | 《需求工程项目计划》修订v0.3.1 | 2h | 2018-11-12 19:00 A | 2018-11-12 21:00 A | 50 | 100% |  |  |
| 52 |  | 《需求工程项目计划》修订v0.3.2 | 1d | 2018-11-12 21:00 A | 2018-11-12 22:00 A | 51 | 100% |  |  |
| 53 |  | 《需求工程项目计划》修订v0.3.3 | 1h | 2018-11-17 19:00 A | 2018-11-18 18:00 A | 52 | 100% |  |  |
| 54 |  | 《需求工程项目计划》修订v0.3.4 | 1d | 2018-11-18 18:00 A | 2018-11-18 19:00 A | 53 | 100% |  |  |
| 55 |  | 《需求工程项目计划》修订v0.3.5 | 1d | 2018-11-25 19:00 A | 2018-11-25 20:00 A | 54 | 100% |  |  |
| 56 |  | 《需求工程项目计划》修订v0.3.6 | 2d | 2018-11-25 20:00 A | 2018-11-25 22:00 A | 55 | 100% |  |  |
| 57 |  | 《需求工程项目计划》修订v0.3.7 | 1h | 2018-11-28 19:00 A | 2018-11-28 20:00 A | 56 | 100% |  |  |
| 58 |  | 《需求工程项目计划》修订v0.3.8 | 1d | 2018-12-02 19:00 A | 2018-12-02 20:00 A | 57 | 100% |  |  |
| 59 |  | 《需求工程项目计划》修订v0.3.9 | 1h | 2018-12-06 19:00 A | 2018-12-06 20:00 A | 58 | 100% |  |  |
| 60 |  | 《质量保证计划》发布 | 0h | 2018-11-10 22:00 A | 2018-11-10 22:00 A | 44 | 100% |  |  |
| 61 |  | 《需求工程项目计划》发布 | 1h | 2018-12-06 20:00 A | 2018-12-06 21:00 A | 60, 33, 59 | 100% |  | finish no earlier than 2018-11-28 20:00 |
| 62 | 1.3 | **项目执行** | 123d | 2018-11-20 19:00 A | 2019-01-25 21:00 | 2, 17, 16, 29, 34 | 5% | 0d |  |
| 63 | 1.3.1 | **需求开发** | 111d | 2018-11-20 19:00 A | 2019-01-15 21:00 |  | 6% | 0d |  |
| 64 | 1.3.1.1 | **需求开发第零轮迭代** | 37d | 2018-11-20 19:00 A | 2018-11-29 20:00 | 61, 16 | 45% | 0d |  |
| 65 |  | 定义产品愿景和项目范围 | 1h | 2018-11-20 19:00 A | 2018-11-20 20:00 A | 54 | 100% |  | start no earlier than 2018-11-20 19:00 |
| 66 | 1.3.1.1.2 | **《愿景与范围》文档** | 1d | 2018-11-20 20:00 | 2018-11-20 21:00 | 65 |  | 0d |  |
| 67 |  | 绘制上下文图 | 1d | 2018-11-20 20:00 | 2018-11-20 21:00 | 65 |  |  |  |
| 68 |  | 绘制特性图 | 1h | 2018-11-20 20:00 | 2018-11-20 21:00 | 65 |  |  |  |
| 69 |  | 识别用户类型及其特征 | 1h | 2018-11-24 19:00 A | 2018-11-24 20:00 A | 66, 67, 68 | 100% |  | start no earlier than 2018-11-24 19:00 |
| 70 | 1.3.1.1.4 | **为每类用户选出用户代表** | 1d | 2018-11-24 20:00 | 2018-11-24 21:00 | 69 |  | 0d |  |

| ID | WBS | Task | Duration | Start | Finish | Predecessors | Complete | Total float | Constraint |
| --- | --- | --- | --- | --- | --- | --- | --- | --- | --- |
| 71 |  | 用户分类 | 1h | 2018-11-24 20:00 | 2018-11-24 21:00 | 69 |  |  | start no earlier than 2018-11-25 19:00 |
| 72 |  | 确定用户代表 | 1h | 2018-11-24 20:00 | 2018-11-24 21:00 | 69 |  |  |  |
| 73 |  | 设定不同的用户级别 | 1h | 2018-11-24 20:00 | 2018-11-24 21:00 | 69 |  |  |  |
| 74 |  | 识别系统事件和反应 | 1h | 2018-11-26 19:00 A | 2018-11-26 20:00 A | 70, 71, 72, 73 | 100% |  |  |
| 75 |  | 举办需求访谈 | 1h | 2018-11-27 19:00 | 2018-11-27 20:00 | 74 |  |  |  |
| 76 |  | 检查现有系统在需求方面的报告 | 1h | 2018-11-28 19:00 A | 2018-11-28 20:00 A | 75 | 100% |  | start no earlier than 2018-11-28 19:00 |
| 77 |  | 重用现有需求 | 1h | 2018-11-29 19:00 A | 2018-11-29 20:00 A | 76 | 100% |  | start no earlier than 2018-11-29 19:00 |
| 78 | 1.3.1.2 | **需求开发第一轮迭代** | 46d | 2018-11-29 20:00 | 2018-12-21 21:00 | 64, 77 |  | 0d |  |
| 79 |  | 使用需求文档模板 | 1h | 2018-11-29 20:00 | 2018-11-29 21:00 | 64 |  |  |  |
| 80 |  | 创建用户界面及技术原型 | 40h | 2018-11-29 21:00 | 2018-12-16 17:00 | 79 |  |  |  |
| 81 | 1.3.1.2.3 | **举办需求访谈** | 1d | 2018-12-17 20:00 | 2018-12-17 21:00 | 80 |  | 0d |  |
| 82 |  | 明确需求来源 | 1h | 2018-12-17 20:00 | 2018-12-17 21:00 | 80 |  |  |  |
| 83 |  | 记录业务规则 | 1h | 2018-12-17 20:00 | 2018-12-17 21:00 | 80 |  |  |  |
| 84 |  | 记录非功能需求 | 1h | 2018-12-17 20:00 | 2018-12-17 21:00 | 80 |  |  |  |
| 85 |  | 需求评审 | 1h | 2018-12-17 20:00 | 2018-12-17 21:00 | 80 |  |  |  |
| 86 |  | 测试需求 | 1h | 2018-12-17 20:00 | 2018-12-17 21:00 | 80 |  |  |  |
| 87 |  | 定义验收标准 | 1h | 2018-12-17 20:00 | 2018-12-17 21:00 | 80 |  |  |  |
| 88 |  | 建立数据字典 | 1h | 2018-12-18 20:00 | 2018-12-18 21:00 | 81, 82, 83, 84, 85, 86, 87 |  |  |  |
| 89 |  | 编写《需求规格说明书》 | 1h | 2018-12-19 20:00 | 2018-12-19 21:00 | 88 |  |  |  |
| 90 |  | 编写《测试用例》 | 1h | 2018-12-20 20:00 | 2018-12-20 21:00 | 89 |  |  |  |
| 91 |  | 编写《用户手册》 | 1h | 2018-12-21 20:00 | 2018-12-21 21:00 | 90 |  |  |  |
| 92 | 1.3.1.3 | **需求开发第二轮迭代** | 28d | 2018-12-22 17:00 | 2019-01-15 21:00 |  |  | 0d |  |
| 93 |  | 修改用户界面及技术原型 | 20h | 2018-12-22 17:00 | 2019-01-08 20:30 | 91, 78 |  |  |  |
| 94 |  | 举办需求访谈 | 1h | 2019-01-08 20:30 | 2019-01-09 20:30 | 93 |  |  |  |
| 95 |  | 需求评审 | 1h | 2019-01-09 20:30 | 2019-01-10 20:30 | 94 |  |  |  |
| 96 |  | 测试需求 | 1h | 2019-01-10 20:30 | 2019-01-11 20:30 | 95 |  |  |  |
| 97 |  | 重新定义验收标准 | 1h | 2019-01-11 20:30 | 2019-01-12 17:30 | 96 |  |  |  |
| 98 |  | 需求打分 | 1h | 2019-01-12 17:30 | 2019-01-12 18:30 | 97 |  |  |  |
| 99 |  | 修改《需求规格说明书》 | 1h | 2019-01-12 18:30 | 2019-01-13 17:00 | 98 |  |  |  |
| 100 |  | 修改《测试用例》 | 1h | 2019-01-14 20:00 | 2019-01-14 21:00 | 99 |  |  |  |
| 101 |  | 修改《用户手册》 | 1h | 2019-01-15 20:00 | 2019-01-15 21:00 | 100 |  |  |  |
| 102 | 1.3.2 | **需求管理** | 13d | 2019-01-01 19:00 | 2019-01-12 17:30 | 63, 101 |  |  |  |
| 103 |  | 建立一个需求变更控制流程 | 1h | 2019-01-16 20:00 | 2019-01-16 21:00 | 92, 101 |  | 0d |  |
| 104 |  | 对需求变更进行影响分析 | 1h | 2019-01-17 20:00 | 2019-01-17 21:00 | 103 |  |  |  |
| 105 |  | 建立基线并控制需求集合版本 | 1h | 2019-01-18 20:00 | 2019-01-18 21:00 | 104 |  | -14d |  |
| 106 |  | 维护需求变更的历史记录 | 1h | 2019-01-19 17:00 | 2019-01-19 18:00 | 105 |  | -14d |  |
| 107 |  | 跟踪每个需求的状态 | 1h | 2019-01-19 18:00 | 2019-01-19 19:00 | 106 |  | -14d |  |
| 108 |  | 维护一个需求可跟踪矩阵 | 1h | 2019-01-20 17:00 | 2019-01-20 18:00 | 107 |  | -14d |  |
| 109 |  | 使用需求管理工具 | 6h | 2019-01-20 18:00 | 2019-01-25 21:00 | 108 |  | -14d |  |
| 110 | 1.4 | **项目控制** | 300.21d | 2018-09-28 19:00 A | 2019-01-29 20:12 | 62 | 96% |  |  |
| 111 | 1.4.1 | **组内周末评审** | 163d | 2018-11-04 19:00 A | 2019-01-08 20:30 | 2, 17 | 73% |  |  |
| 112 |  | 第一次周末评审 | 0.5h | 2018-11-04 19:00 A | 2018-11-04 19:30 A | 128 | 100% |  |  |
| 113 |  | 第二次周末评审 | 0.5h | 2018-11-11 19:00 A | 2018-11-11 19:30 A | 129 | 100% |  |  |
| 114 |  | 第三次周末评审 | 0.5h | 2018-11-18 19:00 A | 2018-11-19 18:30 A | 130 | 100% |  |  |
| 115 |  | 第四次周末评审 | 0.5h | 2018-11-25 19:00 A | 2018-11-25 19:30 A | 131 | 100% |  |  |
| 116 |  | 第五次周末评审 | 0.5h | 2018-12-02 19:00 A | 2018-12-02 19:30 A | 132 | 100% |  |  |
| 117 |  | 第六次周末评审 | 0.5h | 2018-12-09 19:00 A | 2018-12-09 19:30 A | 133 | 100% |  |  |
| 118 |  | 第七次周末评审 | 0.5h | 2018-12-16 19:00 A | 2018-12-16 19:30 A | 134 | 100% |  |  |
| 119 |  | 第八次周末评审 | 0.5h | 2018-12-23 19:00 A | 2018-12-23 19:30 A | 135 | 100% |  |  |
| 120 |  | 第九次周末评审 | 0.5h | 2018-12-30 19:00 | 2018-12-30 19:30 | 136 |  |  |  |
| 121 |  | 第十次周末评审 | 0.5h | 2019-01-06 19:00 | 2019-01-06 19:30 | 137 |  |  |  |
| 122 |  | 第十一次周末评审 | 0.5h | 2019-01-08 20:00 | 2019-01-08 20:30 | 138 |  |  |  |
| 123 | 1.4.2 | **小组会议** | 300.21d | 2018-09-28 19:00 A | 2019-01-29 20:12 | 2, 17 | 80% |  |  |
| 124 |  | 第一次正式会议 | 0.5h | 2018-09-28 19:00 A | 2018-09-28 19:30 A | 4 | 100% |  |  |
| 125 |  | 第二次正式会议 | 0.5h | 2018-10-08 19:00 A | 2018-10-08 19:30 A | 8, 9, 10, 19, 21, 124 | 100% |  |  |
| 126 |  | 第三次正式会议 | 0.5h | 2018-10-15 19:00 A | 2018-10-15 19:30 A | 12, 125 | 100% |  | start no earlier than 2018-10-15 19:00 |
| 127 |  | 第四次正式会议 | 0.5h | 2018-10-23 19:00 A | 2018-10-23 19:30 A | 13, 126, 141 | 100% |  |  |
| 128 |  | 第五次正式会议 | 0.5h | 2018-10-30 19:00 A | 2018-10-30 19:30 A | 14, 127 | 100% |  |  |
| 129 |  | 第六次正式会议 | 0.5h | 2018-11-05 19:00 A | 2018-11-05 19:30 A | 112 | 100% |  |  |
| 130 |  | 第七次正式会议 | 0.5h | 2018-11-13 19:00 A | 2018-11-13 19:30 A | 113 | 100% |  |  |
| 131 |  | 第八次正式会议 | 0.5h | 2018-11-20 19:00 A | 2018-11-20 19:30 A | 130, 54, 114 | 100% |  |  |
| 132 |  | 第九次正式会议 | 0.5h | 2018-11-27 19:00 A | 2018-11-27 19:30 A | 131, 139, 115 | 100% |  |  |
| 133 |  | 第十次正式会议 | 0.5h | 2018-12-04 19:00 A | 2018-12-04 19:30 A | 149, 116 | 100% |  |  |
| 134 |  | 第十一次正式会议 | 0.5h | 2018-12-11 19:00 A | 2018-12-11 19:30 A | 133, 117 | 100% |  |  |
| 135 |  | 第十二次正式会议 | 0.5h | 2018-12-18 19:00 A | 2018-12-18 19:30 A | 134, 118 | 100% |  |  |
| 136 |  | 第十三次正式会议 | 0.5h | 2018-12-25 19:00 | 2018-12-25 19:30 | 135, 119 |  |  |  |
| 137 |  | 第十四次正式会议 | 0.5h | 2019-01-01 19:00 | 2019-01-01 19:30 | 136, 120 |  |  |  |
| 138 |  | 第十五次正式会议 | 0.5h | 2019-01-07 20:00 | 2019-01-07 20:30 | 137, 121 |  |  |  |
| 139 | 1.4.3 | **客户用户访谈系列** | 1d | 2018-11-20 21:00 | 2018-11-20 22:00 | 66 | 75% |  |  |
| 140 | 1.4.3.1 | **客户访谈** | 114d | 2018-10-21 19:00 A | 2018-11-21 20:00 A | 66 | 100% |  |  |

| ID | WBS | Task | Duration | Start | Finish | Predecessors | Complete | Total float |
| --- | --- | --- | --- | --- | --- | --- | --- | --- |
| 141 |  | 需求咨询 | 1d | 2018-10-21 19:00 A | 2018-10-21 20:00 A | 66 | 100% |  |
| 142 |  | 愿景与范围访谈 | 1d | 2018-11-21 19:00 A | 2018-11-21 20:00 A | 141 | 100% |  |
| 143 | 1.4.3.2 | **用户访谈** | 1d | 2018-12-05 19:00 A | 2018-12-05 20:00 | 66 | 50% |  |
| 144 |  | 教师用户功能访谈 | 1h | 2018-12-05 19:00 A | 2018-12-05 20:00 A | 66 | 100% |  |
| 145 |  | 管理员用户功能访谈 | 1h | 2018-12-22 19:00 | 2018-12-22 20:00 |  |  |  |
| 146 | 1.4.4 | **客户评审** | 163d | 2018-11-04 19:00 A | 2019-01-08 20:30 | 33 | 99% |  |
| 147 | 1.4.4.1 | **《需求工程项目计划》评审** | 120d | 2018-11-09 19:00 | 2018-12-07 20:00 |  | 99% | 0d |
| 148 |  | 《需求工程计划》第一次评审 | 1d | 2018-11-09 19:00 | 2018-11-09 20:00 | 129 |  |  |
| 149 |  | 《需求工程计划》第二次评审 | 1d | 2018-11-28 19:00 A | 2018-11-28 20:00 A | 142 | 100% |  |
| 150 |  | 《需求工程计划》第三次评审 | 128d | 2018-12-07 19:00 | 2018-12-07 20:00 A | 149 | 100% |  |
| 151 | 1.4.5 | **团队建设** | 1h | 2018-12-07 20:00 | 2018-12-07 21:00 | 2, 17 |  |  |
| 152 |  | 第一次地锅鸡团建 | 1d | 2018-12-06 21:00 | 2018-12-06 22:00 | 2, 17 |  |  |
| 153 | 1.5 | **项目结尾** | 24.21d? | 2019-01-13 18:00 | 2019-01-31 20:12 | 111, 139, 146, 123, 144, 109, 62, 152, 145, 150, 138 |  |  |
| 154 | 1.5.1 | **汇总文档** | 0d | 2019-01-14 20:00 | 2019-01-14 20:00 | 109, 62 |  |  |
| 155 |  | 《汇总文档》 | 0h | 2019-01-13 18:00 | 2019-01-13 18:00 | 138 |  |  |
| 156 |  | 项目总评 | 1h | 2019-01-14 20:00 | 2019-01-14 21:00 | 154, 155 |  |  |
| 157 |  | 项目相关文档修改 | 1h | 2019-01-15 20:00 | 2019-01-15 21:00 | 156 |  |  |
| 158 | 1.5.4 | **《项目总结报告》** | 2h | 2019-01-14 20:00 | 2019-01-15 21:00 | 156 |  |  |
| 159 |  | 《项目总结报告》评审修改 | 1h | 2019-01-14 20:00 | 2019-01-14 21:00 | 157 |  |  |
| 160 |  | 散伙饭 | 2d? | 2019-01-29 20:12 | 2019-01-31 20:12 | 158 |  |  |

## Version 2 (data date 2019-01-04, saved 2019-01-04)

Note of the change: Update PRD2018-G03-甘特图.mpp

Last finish stays 2019-01-31. Complete tasks 83 → 125.

Added:

| ID | Task | Duration | Start | Finish | Predecessors | Resources |
| --- | --- | --- | --- | --- | --- | --- |
| 60 | 《需求工程项目计划》修订v0.3.10 | 1h | 2018-12-06 20:00 A | 2018-12-06 21:00 A | 59 | 沈启航 |
| 68 | 《愿景与范围》文档V0.1.0 | 1h | 2018-10-01 19:00 A | 2018-10-01 20:00 A | 66 | 沈启航 |
| 69 | 《愿景与范围》文档V0.1.1 | 1h | 2018-11-12 19:00 A | 2018-11-14 20:00 | 68 | 沈启航 |
| 70 | 《愿景与范围》文档V0.1.2 | 1h | 2018-11-23 19:00 A | 2018-11-24 20:00 A | 69 | 沈启航 |
| 71 | **《愿景与范围》文档V0.1.3** | 9h | 2018-11-30 19:00 | 2018-12-02 20:00 | 70 |  |
| 73 | 《愿景与范围》文档V0.1.4 | 1h | 2018-12-05 19:00 A | 2018-12-05 20:00 A | 71 | 沈启航 |
| 74 | **《愿景与范围》文档V1.0.0** | 1h | 2018-12-22 19:00 A | 2018-12-22 20:00 A | 73 |  |
| 79 | 《用户群分类》V0.1.0 | 1d | 2018-11-25 19:00 A | 2018-11-25 20:00 A | 76 | 叶柏成 |
| 80 | 《用户群分类》V0.1.1 | 1d | 2018-12-19 19:00 A | 2018-12-19 20:00 A | 79 | 叶柏成 |
| 81 | 《用户群分类》V1.0.0 | 5d | 2018-12-19 20:00 A | 2018-12-22 19:00 A | 80 | 叶柏成 [20%] |
| 99 | 《数据字典》V0.1.0 | 1d | 2018-11-26 21:00 A | 2018-11-26 22:00 A | 91 | 叶柏成 |
| 100 | 《数据字典》V0.2.0 | 6h | 2018-12-20 19:00 A | 2018-12-22 20:00 A | 99 | 叶柏成 [13%] |
| 101 | **编写《需求规格说明书》** | 73.5d | 2018-11-23 19:00 A | 2018-12-23 20:00 A | 98SS |  |
| 103 | 编写《需求规格说明书》V0.2.0 | 10.5h | 2018-12-18 19:00 A | 2018-12-23 20:00 A | 102 | 叶柏成; 骆佳俊; 沈启航; 徐哲远; 杨以恒 |
| 105 | App端测试用例 | 1h | 2018-11-26 18:30 A | 2018-11-26 19:30 A | 103 | 徐哲远 |
| 106 | Web端测试用例 | 1h | 2018-11-26 18:30 A | 2018-11-26 19:30 A | 103 | 徐哲远 |
| 116 | 编写《需求规格说明书》V0.3.0 | 1h | 2018-12-24 20:00 A | 2018-12-24 21:00 A | 103 | 叶柏成 |
| 118 | 《用户手册》V0.2.0 | 1d | 2018-12-20 19:00 A | 2018-12-23 20:00 A | 107 | 叶柏成 |
| 156 | 第十六次正式会议 | 0.5h | 2019-01-15 19:00 | 2019-01-15 19:30 |  | 沈启航; 徐哲远; 叶柏成; 杨以恒; 骆佳俊 |
| 164 | JAD会议 | 1d | 2019-01-04 19:00 A | 2019-01-04 20:00 A |  | 骆佳俊; 沈启航; 徐哲远; 杨以恒; 叶柏成 |
| 170 | 《软件需求规格说明书》评审 | 1d | 2019-01-02 19:00 A | 2019-01-02 20:00 A | 169 | 骆佳俊; 沈启航; 徐哲远; 杨以恒; 叶柏成 |
| 171 | 《需求变更管理》评审 | 1h | 2019-01-09 19:00 | 2019-01-09 20:00 | 170 | 骆佳俊; 沈启航; 徐哲远; 杨以恒; 叶柏成 |
| 172 | 《需求工程项目收尾》评审 | 1d? | 2019-01-09 20:00 | 2019-01-09 21:00 | 171 | 骆佳俊; 沈启航; 徐哲远; 杨以恒; 叶柏成 |

Removed: 100 修改《测试用例》

Changed:

| ID | Task | Start | Finish | Duration | Complete | Total float | Predecessors | Other |
| --- | --- | --- | --- | --- | --- | --- | --- | --- |
| 1 | **软件工程系列课程教学辅助网站系统-项目** |  |  |  | 75% → 95% |  |  |  |
| 22 | **可行性分析修订** | 2018-10-01 19:00 A → 2018-10-07 19:00 A (+6d) |  | 229d → 217d |  |  |  |  |
| 23 | 《可行性报告》v0.1.0 | 2018-10-01 19:00 A → 2018-10-07 19:00 A (+6d) | 2018-10-01 20:00 A → 2018-10-07 20:00 A (+6d) |  |  |  |  |  |
| 24 | 《可行性报告》v0.1.1 | 2018-10-07 19:00 A → 2018-10-14 19:00 A (+7d) | 2018-10-07 20:00 A → 2018-10-14 20:00 A (+7d) |  |  |  |  |  |
| 25 | 《可行性报告》v0.1.2 |  | 2018-11-07 20:00 A → 2018-11-08 20:00 (+1d) | 1h → 2h |  |  |  |  |
| 27 | 《可行性报告》v0.1.4 | 2018-11-10 20:00 A → 2018-11-28 19:00 A (+18d) | 2018-11-10 21:00 A → 2018-11-28 20:00 A (+18d) |  |  |  |  |  |
| 34 | **制定需求工程项目计划** |  | 2018-12-06 20:00 A → 2018-12-06 21:00 A | 236d → 237d |  |  |  |  |
| 36 | 《需求工程项目计划》修订v0.1.1 | 2018-09-29 17:00 A → 2018-09-28 19:00 A (-1d) | 2018-10-01 11:00 A → 2018-09-30 18:00 A (-1d) |  |  |  |  |  |
| 37 | 《需求工程项目计划》修订v0.1.2 |  | 2018-10-19 19:00 A → 2018-10-21 20:00 A (+2d) | 14h → 20h |  |  |  |  |
| 52 | 《需求工程项目计划》修订v0.3.2 | 2018-11-12 21:00 A → 2018-11-13 19:00 A (+1d) | 2018-11-12 22:00 A → 2018-11-13 20:00 A (+1d) |  |  |  |  |  |
| 55 | 《需求工程项目计划》修订v0.3.5 | 2018-11-25 19:00 A → 2018-11-19 18:00 A (-6d) | 2018-11-25 20:00 A → 2018-11-19 19:00 A (-6d) |  |  |  |  |  |
| 56 | 《需求工程项目计划》修订v0.3.6 | 2018-11-25 20:00 A → 2018-11-19 19:00 A (-6d) | 2018-11-25 22:00 A → 2018-11-19 21:00 A (-6d) |  |  |  |  |  |
| 62 | 《需求工程项目计划》发布 |  | 2018-12-06 21:00 A → 2018-12-06 20:00 A | 1h → 0h |  |  |  |  |
| 63 | **项目执行** | 2018-11-20 19:00 A → 2018-10-01 19:00 A (-50d) | 2019-01-25 21:00 → 2019-01-18 21:00 (-7d) | 123d → 278d | 5% → 92% |  |  |  |
| 64 | **需求开发** | 2018-11-20 19:00 A → 2018-10-01 19:00 A (-50d) | 2019-01-15 21:00 → 2019-01-09 20:30 (-6d) | 111d → 268d | 6% → 99% |  |  |  |
| 65 | **需求开发第零轮迭代** | 2018-11-20 19:00 A → 2018-10-01 19:00 A (-50d) | 2018-11-29 20:00 → 2018-12-24 21:00 A (+25d) | 37d → 250.5d | 45% → 100% | 0d → none |  |  |
| 67 | **《愿景与范围》文档** | 2018-11-20 20:00 → 2018-10-01 19:00 A (-50d) | 2018-11-20 21:00 → 2018-12-22 20:00 A (+32d) | 1d → 249d | 0% → 100% | 0d → none |  |  |
| 72 | 绘制特性图 | 2018-11-20 20:00 A | 2018-11-20 21:00 A |  | 0% → 100% |  |  |  |
| 75 | 绘制上下文图 | 2018-11-20 20:00 → 2018-12-22 19:00 A (+32d) | 2018-11-20 21:00 → 2018-12-22 20:00 A (+32d) |  | 0% → 100% |  |  |  |
| 76 | 识别用户类型及其特征 | 2018-11-24 19:00 A → 2018-12-24 20:00 A (+30d) | 2018-11-24 20:00 A → 2018-12-24 21:00 A (+30d) |  |  |  |  |  |
| 77 | **为每类用户选出用户代表** | 2018-11-24 20:00 → 2018-11-22 19:00 A (-2d) | 2018-11-24 21:00 → 2018-12-22 19:00 A (+28d) | 1d → 77d | 0% → 100% | 0d → none |  |  |
| 78 | **用户分类** |  |  |  | 0% → 100% |  |  | constraint start no earlier than 2018-11-25 19:00 → none; resources 杨以恒 → none |
| 82 | 确定用户代表 | 2018-11-24 20:00 → 2018-11-22 19:00 A (-2d) | 2018-11-24 21:00 → 2018-11-22 20:00 A (-2d) |  | 0% → 100% |  |  |  |
| 83 | 设定不同的用户级别 | 2018-11-24 20:00 → 2018-11-23 19:00 A (-1d) | 2018-11-24 21:00 → 2018-11-23 20:00 A (-1d) |  | 0% → 100% |  |  |  |
| 84 | 识别系统事件和反应 | 2018-11-26 19:00 A → 2018-12-23 16:30 A (+27d) | 2018-11-26 20:00 A → 2018-12-24 20:30 A (+28d) |  |  |  | 77, 78, 82, 83 → 77, 82, 83, 81 |  |
| 85 | 举办需求访谈 | 2018-11-27 19:00 → 2018-11-24 19:00 A (-3d) | 2018-11-27 20:00 → 2018-11-24 20:00 A (-3d) |  | 0% → 100% |  |  |  |
| 86 | 检查现有系统在需求方面的报告 | 2018-11-28 19:00 A → 2018-11-25 19:00 A (-3d) | 2018-11-28 20:00 A → 2018-11-25 20:00 A (-3d) |  |  |  |  | constraint start no earlier than 2018-11-28 19:00 → start no earlier than 2018-11-25 19:00 |
| 87 | 重用现有需求 | 2018-11-29 19:00 A → 2018-11-26 19:00 A (-3d) | 2018-11-29 20:00 A → 2018-11-26 20:00 A (-3d) |  |  |  |  | constraint start no earlier than 2018-11-29 19:00 → start no earlier than 2018-11-26 19:00 |
| 88 | **需求开发第一轮迭代** | 2018-11-29 20:00 → 2018-11-23 19:00 A (-6d) | 2018-12-21 21:00 → 2018-12-23 20:00 A (+2d) | 46d → 73.5d | 0% → 100% | 0d → none |  |  |
| 89 | 使用需求文档模板 | 2018-11-29 20:00 → 2018-11-26 19:00 A (-3d) | 2018-11-29 21:00 → 2018-11-26 20:00 A (-3d) |  | 0% → 100% |  |  |  |
| 90 | 创建用户界面及技术原型 | 2018-11-29 21:00 → 2018-11-26 19:00 A (-3d) | 2018-12-16 17:00 → 2018-12-20 21:00 A (+4d) | 40h → 20h | 0% → 100% |  |  |  |
| 91 | **举办需求访谈** | 2018-12-17 20:00 → 2018-11-25 19:00 A (-22d) | 2018-12-17 21:00 → 2018-11-26 21:00 (-21d) | 1d → 6d | 0% → 100% | 0d → none | 90 → 90SS |  |
| 92 | 明确需求来源 | 2018-12-17 20:00 → 2018-11-25 19:00 A (-22d) | 2018-12-17 21:00 → 2018-11-25 20:00 A (-22d) |  | 0% → 100% |  |  |  |
| 93 | 记录业务规则 | 2018-12-17 20:00 → 2018-11-25 19:00 A (-22d) | 2018-12-17 21:00 → 2018-11-25 20:00 A (-22d) |  | 0% → 100% |  | 90 → 92 |  |
| 94 | 记录非功能需求 | 2018-12-17 20:00 → 2018-11-25 19:00 A (-22d) | 2018-12-17 21:00 → 2018-11-25 20:00 A (-22d) |  | 0% → 100% |  | 90 → 93 |  |
| 95 | 需求评审 | 2018-12-17 20:00 → 2018-11-25 19:00 A (-22d) | 2018-12-17 21:00 → 2018-11-25 20:00 A (-22d) |  | 0% → 100% |  | 90 → 94 |  |
| 96 | 测试需求 | 2018-12-17 20:00 → 2018-11-25 19:00 A (-22d) | 2018-12-17 21:00 → 2018-11-25 20:00 A (-22d) |  | 0% → 100% |  | 90 → 95 |  |
| 97 | 定义验收标准 | 2018-12-17 20:00 → 2018-11-25 19:00 A (-22d) | 2018-12-17 21:00 → 2018-11-25 20:00 A (-22d) |  | 0% → 100% |  | 90 → 96 | constraint none → start no earlier than 2018-11-25 19:00 |
| 98 | **建立数据字典** | 2018-12-18 20:00 → 2018-11-25 19:00 (-23d) | 2018-12-18 21:00 → 2018-11-25 20:00 (-23d) |  | 0% → 100% |  | 91, 92, 93, 94, 95, 96, 97 → 91, 97 | resources 叶柏成 → none |
| 102 | 编写《需求规格说明书》V0.1.0 | 2018-12-19 20:00 → 2018-11-23 19:00 A (-26d) | 2018-12-19 21:00 → 2018-11-23 20:00 A (-26d) |  | 0% → 100% |  | 98 → 99SS | was named 编写《需求规格说明书》 |
| 104 | **编写《测试用例》** |  |  |  | 0% → 100% |  | 102 → 103 | resources 徐哲远 → none |
| 107 | 编写《用户手册》 | 2018-12-21 20:00 A | 2018-12-21 21:00 A |  | 0% → 100% |  |  | constraint none → start no earlier than 2018-11-25 19:00 |
| 108 | **需求开发第二轮迭代** | 2018-12-22 17:00 → 2018-12-20 19:00 A (-2d) | 2019-01-15 21:00 → 2019-01-09 20:30 (-6d) | 28d → 23d | 0% → 95% |  | none → 88, 107 |  |
| 109 | 修改用户界面及技术原型 | 2018-12-22 17:00 → 2018-12-24 20:00 A (+2d) | 2019-01-08 20:30 → 2019-01-04 21:00 (-4d) | 20h → 13.5h | 0% → 93% |  |  |  |
| 110 | **举办需求访谈** |  |  |  | 0% → 100% |  |  | resources 沈启航 → none |
| 111 | 需求评审 | 2019-01-09 20:30 → 2018-12-29 19:00 A (-11d) | 2019-01-10 20:30 → 2018-12-29 20:00 A (-12d) |  | 0% → 100% |  | 110 → 109SS |  |
| 112 | 测试需求 | 2019-01-10 20:30 → 2018-12-30 19:00 A (-11d) | 2019-01-11 20:30 → 2018-12-30 20:00 A (-12d) |  | 0% → 100% |  |  |  |
| 113 | 重新定义验收标准 | 2019-01-11 20:30 → 2018-12-31 19:00 A (-11d) | 2019-01-12 17:30 → 2018-12-31 20:00 A (-12d) |  | 0% → 100% |  |  |  |
| 114 | 需求打分 | 2019-01-12 17:30 → 2019-01-01 19:00 A (-11d) | 2019-01-12 18:30 → 2019-01-01 20:00 A (-11d) |  | 0% → 100% |  |  |  |
| 115 | **修改《需求规格说明书》** | 2019-01-12 18:30 → 2018-12-30 19:00 (-13d) | 2019-01-13 17:00 → 2018-12-30 20:00 (-14d) |  | 0% → 99% |  |  |  |
| 117 | **修改《用户手册》** | 2019-01-15 20:00 → 2018-12-20 19:00 A (-26d) | 2019-01-15 21:00 → 2018-12-20 20:00 (-26d) |  | 0% → 100% |  | 修改《测试用例》 → none | resources 沈启航 → none |
| 119 | **需求管理** | 2019-01-01 19:00 → 2019-01-05 19:00 (+4d) | 2019-01-12 17:30 → 2019-01-18 21:00 (+6d) |  |  |  |  |  |
| 120 | 建立一个需求变更控制流程 | 2019-01-16 20:00 → 2019-01-05 19:00 (-11d) | 2019-01-16 21:00 → 2019-01-07 20:30 (-9d) |  |  | 0d → none | 108, 117 → 108, 117, 116 | constraint none → start no earlier than 2019-01-05 19:00 |
| 121 | 对需求变更进行影响分析 | 2019-01-17 20:00 → 2019-01-06 16:30 (-11d) | 2019-01-17 21:00 → 2019-01-06 20:00 (-11d) | 1h → 3.5h |  |  |  |  |
| 122 | 建立基线并控制需求集合版本 | 2019-01-18 20:00 → 2019-01-07 20:00 (-11d) | 2019-01-18 21:00 → 2019-01-07 20:00 (-11d) | 1h → 0h |  | -14d → none |  | constraint none → start no earlier than 2019-01-07 19:00 |
| 123 | 维护需求变更的历史记录 | 2019-01-19 17:00 → 2019-01-08 20:00 (-11d) | 2019-01-19 18:00 → 2019-01-08 20:00 (-11d) | 1h → 0h |  | -14d → none |  | constraint none → start no earlier than 2019-01-08 19:00 |
| 124 | 跟踪每个需求的状态 | 2019-01-19 18:00 → 2019-01-09 20:00 (-10d) | 2019-01-19 19:00 → 2019-01-09 20:00 (-10d) | 1h → 0h |  | -14d → none |  |  |
| 125 | 维护一个需求可跟踪矩阵 | 2019-01-20 17:00 → 2019-01-10 19:00 (-10d) | 2019-01-20 18:00 → 2019-01-10 20:00 (-10d) |  |  | -14d → none |  | constraint none → start no earlier than 2019-01-10 19:00 |
| 126 | 使用需求管理工具 | 2019-01-20 18:00 → 2019-01-11 19:00 (-9d) | 2019-01-25 21:00 → 2019-01-11 20:00 (-14d) | 6h → 1h |  | -14d → none |  | constraint none → start no earlier than 2019-01-11 19:00 |
| 127 | **项目控制** |  |  |  | 96% → 84% |  |  |  |
| 128 | **组内评审** |  |  |  | 73% → 82% |  |  | was named 组内周末评审 |
| 137 | 第九次周末评审 | 2018-12-30 19:00 A | 2018-12-30 19:30 A |  | 0% → 100% |  |  |  |
| 140 | **小组会议** |  |  |  | 80% → 88% |  |  |  |
| 153 | 第十三次正式会议 | 2018-12-25 19:00 A | 2018-12-25 19:30 A |  | 0% → 100% |  |  |  |
| 154 | 第十四次正式会议 | 2019-01-01 19:00 A | 2019-01-01 19:30 A |  | 0% → 100% |  |  |  |
| 155 | 第十五次正式会议 | 2019-01-07 20:00 → 2019-01-08 19:00 (+1d) | 2019-01-07 20:30 → 2019-01-08 19:30 (+1d) |  |  |  |  |  |
| 157 | **客户用户访谈系列** |  |  |  | 75% → 99% |  |  |  |
| 161 | **用户访谈** |  |  |  | 50% → 100% |  |  |  |
| 163 | 管理员用户功能访谈 | 2018-12-22 19:00 A | 2018-12-22 20:00 A |  | 0% → 100% |  |  |  |
| 165 | **客户评审** | 2018-11-04 19:00 A → 2018-11-04 19:00 |  |  | 99% → 67% |  |  |  |

| ID | Task | Start | Finish | Complete | Total float | Predecessors |
| --- | --- | --- | --- | --- | --- | --- |
| 166 | **《需求工程项目计划》评审** | 2018-11-09 19:00 A | 2018-12-07 20:00 A | 99% → 100% | 0d → none |  |
| 167 | 《需求工程计划》第一次评审 | 2018-11-09 19:00 A | 2018-11-09 20:00 A | 0% → 100% |  |  |
| 168 | 《需求工程计划》第二次评审 |  |  |  |  | 160 → 160, 167 |
| 169 | 《需求工程计划》第三次评审 | 2018-12-07 19:00 A |  |  |  |  |
| 173 | **团队建设** |  |  | 0% → 100% |  |  |
| 174 | 第一次地锅鸡团建 | 2018-12-06 21:00 A | 2018-12-06 22:00 A | 0% → 100% |  |  |
| 176 | **汇总文档** | 2019-01-14 20:00 → 2019-01-14 19:00 | 2019-01-14 20:00 → 2019-01-14 19:00 |  |  | 126, 63 → 126, 63, 139, 172SS |
